# Alex West underground pipe works

Schedule from Primavera P6, 2026-12-01 to 2027-09-11, data date 2026-12-01.

## Calendars

- AW 6-day Sat-Thu 8h: Mon-Thu 08:00-12:00, 13:00-17:00; Fri off; Sat-Sun 08:00-12:00, 13:00-17:00.

## Schedule

| ID | WBS | Activity | Type | Duration | Start | Finish | Predecessors | Free float | Constraint | Text1 | Text2 | Text3 | Text4 | Number1 |
| --- | --- | --- | --- | --- | --- | --- | --- | --- | --- | --- | --- | --- | --- | --- |
|  | F1 | **F1 Headworks & primary (GRT-PST-IPS)** |  |  | 2026-12-01 | 2027-06-23 |  |  |  |  |  |  |  |  |
|  | UG-01 | **UG-01** |  |  | 2026-12-01 | 2027-03-01 |  |  |  |  |  |  |  |  |
|  | UG-01-S02 | **UG-01-S02 / GRP-UG01-S02-EL019-EL295-(-5.44/-6.52)-276m / Run / Sheet piles** |  |  | 2026-12-01 | 2027-02-27 |  |  |  |  |  |  |  |  |
| UG-01-S02-A010 |  | Release: drawings, holds, access and gates | milestone | 0d | 2026-12-01 | 2026-12-01 |  | 0d | start on or after 2026-12-01 | F1 | UG-01 | UG-01-S02 | A010 |  |
| UG-01-S02-A020 |  | Set-out, crossing survey and working platform |  | 4d | 2026-12-01 | 2026-12-05 | UG-01-S02-A010 | 0d |  | F1 | UG-01 | UG-01-S02 | A020 | 276.06057 |
| UG-01-S02-A030 |  | Pipe-support piling from platform (incl. integrity tests) |  | 38d | 2026-12-03 | 2027-01-16 | UG-01-S02-A020 SS+2d, UG-01-S02-A020 FF+2d | 0d |  | F1 | UG-01 | UG-01-S02 | A030 | 188 |
| UG-01-S02-A040 |  | Install sheet piles (shored lengths) |  | 23d | 2026-12-17 | 2027-01-12 | UG-01-S02-A030 SS+12d, UG-01-S02-A030 FF+2d | 0d |  | F1 | UG-01 | UG-01-S02 | A040 | 552.12114 |
| UG-01-S02-A050 |  | Install dewatering and draw down |  | 14d | 2026-12-26 | 2027-01-10 | UG-01-S02-A040 SS+8d, UG-01-S02-A040 FF+2d | 1d |  | F1 | UG-01 | UG-01-S02 | A050 | 276.06057 |
| UG-01-S02-A060 |  | Excavate and strut to formation |  | 29d | 2027-01-07 | 2027-02-09 | UG-01-S02-A050 SS+10d, UG-01-S02-A050 FF+2d | 0d |  | F1 | UG-01 | UG-01-S02 | A060 | 7037.047845 |
| UG-01-S02-A070 |  | Trim piles, blinding and piled slab (incl. cure) |  | 27d | 2027-01-18 | 2027-02-17 | UG-01-S02-A060 SS+9d, UG-01-S02-A060 FF+2d | 0d |  | F1 | UG-01 | UG-01-S02 | A070 | 276.06057 |
| UG-01-S02-A080 |  | Lay and joint pipe (incl. fittings, tie-in) |  | 21d | 2027-01-28 | 2027-02-21 | UG-01-S02-A070 SS+9d, UG-01-S02-A070 FF+2d | 0d |  | F1 | UG-01 | UG-01-S02 | A080 | 276.06057 |
| UG-01-S02-A090 |  | Surround, joint test and line test |  | 4d | 2027-02-06 | 2027-02-09 | UG-01-S02-A080 SS+7d, UG-01-S02-A080 FF+2d | 0d |  | F1 | UG-01 | UG-01-S02 | A090 | 276.06057 |
| UG-01-S02-A100 |  | Backfill to NG and remove struts |  | 15d | 2027-02-07 | 2027-02-23 | UG-01-S02-A090 SS+2d, UG-01-S02-A090 FF+2d | 0d |  | F1 | UG-01 | UG-01-S02 | A100 | 5134.767369 |
| UG-01-S02-A110 |  | Dewatering off, extract sheets, reinstate |  | 13d | 2027-02-13 | 2027-02-27 | UG-01-S02-A100 SS+5d, UG-01-S02-A100 FF+2d |  |  | F1 | UG-01 | UG-01-S02 | A110 | 552.12114 |
|  | UG-01-S03 | **UG-01-S03 / GRP-UG01-S03-EL295-PST-(-6.52/-6.52)-29m / Tie-in / Sheet piles** |  |  | 2026-12-01 | 2027-03-01 |  |  |  |  |  |  |  |  |
| UG-01-S03-A010 |  | Release: drawings, holds, access and gates | milestone | 0d | 2026-12-01 | 2026-12-01 |  | 2d | start on or after 2026-12-01 | F1 | UG-01 | UG-01-S03 | A010 |  |
| UG-01-S03-A020 |  | Set-out, crossing survey and working platform |  | 1d | 2026-12-03 | 2026-12-03 | UG-01-S03-A010, UG-01-S02-A030 SS | 0d |  | F1 | UG-01 | UG-01-S03 | A020 | 29.41017 |
| UG-01-S03-A030 |  | Pipe-support piling from platform (incl. integrity tests) |  | 3d | 2026-12-05 | 2026-12-07 | UG-01-S03-A020 SS+1d, UG-01-S03-A020 FF+2d | 0d |  | F1 | UG-01 | UG-01-S03 | A030 | 11 |
| UG-01-S03-A040 |  | Install sheet piles (shored lengths) |  | 3d | 2026-12-06 | 2026-12-08 | UG-01-S03-A030 SS+2d, UG-01-S03-A030 FF+2d | 0d |  | F1 | UG-01 | UG-01-S03 | A040 | 58.82034 |
| UG-01-S03-A050 |  | Install dewatering and draw down |  | 8d | 2026-12-08 | 2026-12-16 | UG-01-S03-A040 SS+2d, UG-01-S03-A040 FF+2d | 0d |  | F1 | UG-01 | UG-01-S03 | A050 | 29.41017 |
| UG-01-S03-A060 |  | Excavate and strut to formation |  | 2d | 2026-12-19 | 2026-12-20 | UG-01-S03-A050 SS+9d, UG-01-S03-A050 FF+2d | 0d |  | F1 | UG-01 | UG-01-S03 | A060 | 447.004438 |
| UG-01-S03-A070 |  | Trim piles, blinding and piled slab (incl. cure) |  | 6d | 2026-12-19 | 2026-12-24 | UG-01-S03-A060 SS+1d, UG-01-S03-A060 FF+2d | 52d |  | F1 | UG-01 | UG-01-S03 | A070 | 29.41017 |
| UG-01-S03-A080 |  | Lay and joint pipe (incl. fittings, tie-in) |  | 4d | 2027-02-22 | 2027-02-25 | UG-01-S03-A070 SS+3d, UG-01-S03-A070 FF+2d, UG-01-S02-A080 | 0d |  | F1 | UG-01 | UG-01-S03 | A080 | 29.41017 |
| UG-01-S03-A090 |  | Surround, joint test and line test |  | 3d | 2027-02-24 | 2027-02-27 | UG-01-S03-A080 SS+2d, UG-01-S03-A080 FF+2d | 0d |  | F1 | UG-01 | UG-01-S03 | A090 | 29.41017 |
| UG-01-S03-A100 |  | Backfill to NG and remove struts |  | 2d | 2027-02-27 | 2027-02-28 | UG-01-S03-A090 SS+2d, UG-01-S03-A090 FF+2d | 0d |  | F1 | UG-01 | UG-01-S03 | A100 | 414.602581 |
| UG-01-S03-A110 |  | Dewatering off, extract sheets, reinstate |  | 3d | 2027-02-27 | 2027-03-01 | UG-01-S03-A100 SS+1d, UG-01-S03-A100 FF+2d |  |  | F1 | UG-01 | UG-01-S03 | A110 | 58.82034 |

Notes:
- UG-01-S02-A010: Notes: Front F1 / Line UG-01 / Package UG-01-S02 / Workbook logic: gates: START, D_DLU
- UG-01-S02-A020: Notes: Front F1 / Line UG-01 / Package UG-01-S02 / Quantity 276 m / Workbook logic: FS from A010
- UG-01-S02-A030: Notes: Front F1 / Line UG-01 / Package UG-01-S02 / Quantity 188 piles / Workbook logic: gate: D_PILEDES
- UG-01-S02-A040: Notes: Front F1 / Line UG-01 / Package UG-01-S02 / Quantity 552 m wall
- UG-01-S02-A050: Notes: Front F1 / Line UG-01 / Package UG-01-S02 / Quantity 276 m
- UG-01-S02-A060: Notes: Front F1 / Line UG-01 / Package UG-01-S02 / Quantity 7,037 m3 / Workbook logic: gate: D_XING
- UG-01-S02-A070: Notes: Front F1 / Line UG-01 / Package UG-01-S02 / Quantity 276 m
- UG-01-S02-A080: Notes: Front F1 / Line UG-01 / Package UG-01-S02 / Quantity 276 m
- UG-01-S02-A090: Notes: Front F1 / Line UG-01 / Package UG-01-S02 / Quantity 276 m
- UG-01-S02-A100: Notes: Front F1 / Line UG-01 / Package UG-01-S02 / Quantity 5,135 m3
- UG-01-S02-A110: Notes: Front F1 / Line UG-01 / Package UG-01-S02 / Quantity 552 m wall
- UG-01-S03-A010: Notes: Front F1 / Line UG-01 / Package UG-01-S03 / Workbook logic: gates: START, D_DLU, structure ready
- UG-01-S03-A020: Notes: Front F1 / Line UG-01 / Package UG-01-S03 / Quantity 29 m / Workbook logic: FS from A010; UG-01-S02-A030 (SS, tie-in team follows the adjacent run)
- UG-01-S03-A030: Notes: Front F1 / Line UG-01 / Package UG-01-S03 / Quantity 11 piles / Workbook logic: gate: D_PILEDES
- UG-01-S03-A040: Notes: Front F1 / Line UG-01 / Package UG-01-S03 / Quantity 59 m wall
- UG-01-S03-A050: Notes: Front F1 / Line UG-01 / Package UG-01-S03 / Quantity 29 m
- UG-01-S03-A060: Notes: Front F1 / Line UG-01 / Package UG-01-S03 / Quantity 447 m3
- UG-01-S03-A070: Notes: Front F1 / Line UG-01 / Package UG-01-S03 / Quantity 29 m
- UG-01-S03-A080: Notes: Front F1 / Line UG-01 / Package UG-01-S03 / Quantity 29 m / Workbook logic: UG-01-S02-A080 (FS, closure)
- UG-01-S03-A090: Notes: Front F1 / Line UG-01 / Package UG-01-S03 / Quantity 29 m
- UG-01-S03-A100: Notes: Front F1 / Line UG-01 / Package UG-01-S03 / Quantity 415 m3
- UG-01-S03-A110: Notes: Front F1 / Line UG-01 / Package UG-01-S03 / Quantity 59 m wall

| ID | WBS | Activity | Type | Duration | Start | Finish | Predecessors | Free float | Constraint | Text1 | Text2 | Text3 | Text4 | Number1 |
| --- | --- | --- | --- | --- | --- | --- | --- | --- | --- | --- | --- | --- | --- | --- |
|  | UG-01-S01 | **UG-01-S01 / GRP-UG01-S01-GRT-EL019-(-5.39/-5.44)-19m / Tie-in / Sheet piles** |  |  | 2026-12-01 | 2027-02-28 |  |  |  |  |  |  |  |  |
| UG-01-S01-A010 |  | Release: drawings, holds, access and gates | milestone | 0d | 2026-12-01 | 2026-12-01 |  | 2d | start on or after 2026-12-01 | F1 | UG-01 | UG-01-S01 | A010 |  |
| UG-01-S01-A020 |  | Set-out, crossing survey and working platform |  | 1d | 2026-12-03 | 2026-12-03 | UG-01-S01-A010, UG-01-S02-A030 SS | 0d |  | F1 | UG-01 | UG-01-S01 | A020 | 18.805163 |
| UG-01-S01-A030 |  | Pipe-support piling from platform (incl. integrity tests) |  | 4d | 2026-12-05 | 2026-12-08 | UG-01-S01-A020 SS+1d, UG-01-S01-A020 FF+2d | 0d |  | F1 | UG-01 | UG-01-S01 | A030 | 16 |
| UG-01-S01-A040 |  | Install sheet piles (shored lengths) |  | 2d | 2026-12-06 | 2026-12-07 | UG-01-S01-A030 SS+2d, UG-01-S01-A030 FF+2d | 0d |  | F1 | UG-01 | UG-01-S01 | A040 | 37.610326 |
| UG-01-S01-A050 |  | Install dewatering and draw down |  | 8d | 2026-12-07 | 2026-12-15 | UG-01-S01-A040 SS+1d, UG-01-S01-A040 FF+2d | 0d |  | F1 | UG-01 | UG-01-S01 | A050 | 18.805163 |
| UG-01-S01-A060 |  | Excavate and strut to formation |  | 2d | 2026-12-17 | 2026-12-19 | UG-01-S01-A050 SS+9d, UG-01-S01-A050 FF+2d | 0d |  | F1 | UG-01 | UG-01-S01 | A060 | 405.532146 |
| UG-01-S01-A070 |  | Trim piles, blinding and piled slab (incl. cure) |  | 5d | 2026-12-19 | 2026-12-23 | UG-01-S01-A060 SS+1d, UG-01-S01-A060 FF+2d | 54d |  | F1 | UG-01 | UG-01-S01 | A070 | 18.805163 |
| UG-01-S01-A080 |  | Lay and joint pipe (incl. fittings, tie-in) |  | 5d | 2027-02-22 | 2027-02-27 | UG-01-S01-A070 SS+2d, UG-01-S01-A070 FF+2d, UG-01-S02-A080 | 0d |  | F1 | UG-01 | UG-01-S01 | A080 | 18.805163 |
| UG-01-S01-A090 |  | Surround, joint test and line test |  | 3d | 2027-02-24 | 2027-02-27 | UG-01-S01-A080 SS+2d, UG-01-S01-A080 FF+2d | 0d |  | F1 | UG-01 | UG-01-S01 | A090 | 18.805163 |
| UG-01-S01-A100 |  | Backfill to NG and remove struts |  | 1d | 2027-02-27 | 2027-02-27 | UG-01-S01-A090 SS+2d, UG-01-S01-A090 FF+2d | 0d |  | F1 | UG-01 | UG-01-S01 | A100 | 273.54943 |
| UG-01-S01-A110 |  | Dewatering off, extract sheets, reinstate |  | 2d | 2027-02-27 | 2027-02-28 | UG-01-S01-A100 SS+1d, UG-01-S01-A100 FF+2d |  |  | F1 | UG-01 | UG-01-S01 | A110 | 37.610326 |
|  | UG-02 | **UG-02** |  |  | 2026-12-01 | 2027-06-08 |  |  |  |  |  |  |  |  |
|  | UG-02-S03 | **UG-02-S03 / GRP-UG02-S03-CH091-CH156-(-5.81/-6.17)-65m / Run / Sheet piles** |  |  | 2026-12-01 | 2027-05-12 |  |  |  |  |  |  |  |  |
| UG-02-S03-A010 |  | Release: drawings, holds, access and gates | milestone | 0d | 2026-12-01 | 2026-12-01 |  | 2d | start on or after 2026-12-01 | F1 | UG-02 | UG-02-S03 | A010 |  |
| UG-02-S03-A020 |  | Set-out, crossing survey and working platform |  | 1d | 2026-12-03 | 2026-12-03 | UG-02-S03-A010, UG-01-S02-A030 SS | 37d |  | F1 | UG-02 | UG-02-S03 | A020 | 65.1 |
| UG-02-S03-A030 |  | Pipe-support piling from platform (incl. integrity tests) |  | 10d | 2027-01-17 | 2027-01-27 | UG-02-S03-A020 SS+1d, UG-02-S03-A020 FF+2d, UG-01-S02-A030 | 0d |  | F1 | UG-02 | UG-02-S03 | A030 | 46 |
| UG-02-S03-A040 |  | Install sheet piles (shored lengths) |  | 6d | 2027-01-21 | 2027-01-27 | UG-02-S03-A030 SS+3d, UG-02-S03-A030 FF+2d, UG-01-S02-A040 | 4d |  | F1 | UG-02 | UG-02-S03 | A040 | 130.2 |
| UG-02-S03-A050 |  | Install dewatering and draw down |  | 9d | 2027-01-30 | 2027-02-08 | UG-02-S03-A040 SS+3d, UG-02-S03-A040 FF+2d, UG-01-S02-A060 FS-9d | 1d |  | F1 | UG-02 | UG-02-S03 | A050 | 65.1 |
| UG-02-S03-A060 |  | Excavate and strut to formation |  | 6d | 2027-02-10 | 2027-02-16 | UG-02-S03-A050 SS+9d, UG-02-S03-A050 FF+2d, UG-01-S02-A060 | 0d |  | F1 | UG-02 | UG-02-S03 | A060 | 1400.939815 |
| UG-02-S03-A070 |  | Trim piles, blinding and piled slab (incl. cure) |  | 9d | 2027-02-20 | 2027-03-01 | UG-02-S03-A060 SS+3d, UG-02-S03-A060 FF+2d, UG-01-S02-A070 | 0d |  | F1 | UG-02 | UG-02-S03 | A070 | 65.1 |
| UG-02-S03-A080 |  | Lay and joint pipe (incl. fittings, tie-in) |  | 4d | 2027-02-23 | 2027-02-27 | UG-02-S03-A070 SS+3d, UG-02-S03-A070 FF+2d, UG-01-S02-A080 | 0d |  | F1 | UG-02 | UG-02-S03 | A080 | 65.1 |
| UG-02-S03-A090 |  | Surround, joint test and line test |  | 3d | 2027-02-25 | 2027-02-28 | UG-02-S03-A080 SS+2d, UG-02-S03-A080 FF+2d | 59d |  | F1 | UG-02 | UG-02-S03 | A090 | 65.1 |
| UG-02-S03-A100 |  | Backfill to NG and remove struts |  | 4d | 2027-05-08 | 2027-05-11 | UG-02-S03-A090 SS+2d, UG-02-S03-A090 FF+2d, UG-03-S01-A080, UG-03-S02-A080, UG-01-S02-A100 | 0d |  | F1 | UG-02 | UG-02-S03 | A100 | 1082.02223 |
| UG-02-S03-A110 |  | Dewatering off, extract sheets, reinstate |  | 4d | 2027-05-09 | 2027-05-12 | UG-02-S03-A100 SS+2d, UG-02-S03-A100 FF+2d |  |  | F1 | UG-02 | UG-02-S03 | A110 | 130.2 |

Notes:
- UG-01-S01-A010: Notes: Front F1 / Line UG-01 / Package UG-01-S01 / Workbook logic: gates: START, D_DLU, structure ready
- UG-01-S01-A020: Notes: Front F1 / Line UG-01 / Package UG-01-S01 / Quantity 19 m / Workbook logic: FS from A010; UG-01-S02-A030 (SS, tie-in team follows the adjacent run)
- UG-01-S01-A030: Notes: Front F1 / Line UG-01 / Package UG-01-S01 / Quantity 16 piles / Workbook logic: gate: D_PILEDES
- UG-01-S01-A040: Notes: Front F1 / Line UG-01 / Package UG-01-S01 / Quantity 38 m wall
- UG-01-S01-A050: Notes: Front F1 / Line UG-01 / Package UG-01-S01 / Quantity 19 m
- UG-01-S01-A060: Notes: Front F1 / Line UG-01 / Package UG-01-S01 / Quantity 406 m3
- UG-01-S01-A070: Notes: Front F1 / Line UG-01 / Package UG-01-S01 / Quantity 19 m
- UG-01-S01-A080: Notes: Front F1 / Line UG-01 / Package UG-01-S01 / Quantity 19 m / Workbook logic: UG-01-S02-A080 (FS, closure)
- UG-01-S01-A090: Notes: Front F1 / Line UG-01 / Package UG-01-S01 / Quantity 19 m
- UG-01-S01-A100: Notes: Front F1 / Line UG-01 / Package UG-01-S01 / Quantity 274 m3
- UG-01-S01-A110: Notes: Front F1 / Line UG-01 / Package UG-01-S01 / Quantity 38 m wall
- UG-02-S03-A010: Notes: Front F1 / Line UG-02 / Package UG-02-S03 / Workbook logic: gates: START, D_DLU, aeration zone piling
- UG-02-S03-A020: Notes: Front F1 / Line UG-02 / Package UG-02-S03 / Quantity 65 m / Workbook logic: FS from A010; UG-01-S02-A030 (SS, set-out one package ahead of piling)
- UG-02-S03-A030: Notes: Front F1 / Line UG-02 / Package UG-02-S03 / Quantity 46 piles / Workbook logic: gate: D_PILEDES
- UG-02-S03-A040: Notes: Front F1 / Line UG-02 / Package UG-02-S03 / Quantity 130 m wall
- UG-02-S03-A050: Notes: Front F1 / Line UG-02 / Package UG-02-S03 / Quantity 65 m / Workbook logic: UG-01-S02-A060 (FS, negative lag = own duration: drawdown complete when the excavation crew is free)
- UG-02-S03-A060: Notes: Front F1 / Line UG-02 / Package UG-02-S03 / Quantity 1,401 m3
- UG-02-S03-A070: Notes: Front F1 / Line UG-02 / Package UG-02-S03 / Quantity 65 m
- UG-02-S03-A080: Notes: Front F1 / Line UG-02 / Package UG-02-S03 / Quantity 65 m
- UG-02-S03-A090: Notes: Front F1 / Line UG-02 / Package UG-02-S03 / Quantity 65 m
- UG-02-S03-A100: Notes: Front F1 / Line UG-02 / Package UG-02-S03 / Quantity 1,082 m3 / Workbook logic: UG-03-S01-A080 (FS, shared trench laid); UG-03-S02-A080 (FS, shared trench laid)
- UG-02-S03-A110: Notes: Front F1 / Line UG-02 / Package UG-02-S03 / Quantity 130 m wall

| ID | WBS | Activity | Type | Duration | Start | Finish | Predecessors | Free float | Constraint | Text1 | Text2 | Text3 | Text4 | Number1 |
| --- | --- | --- | --- | --- | --- | --- | --- | --- | --- | --- | --- | --- | --- | --- |
|  | UG-02-S02 | **UG-02-S02 / GRP-UG02-S02-EL013-CH091-(-5.38/-5.81)-78m / Run / Sheet piles** |  |  | 2026-12-01 | 2027-05-19 |  |  |  |  |  |  |  |  |
| UG-02-S02-A010 |  | Release: drawings, holds, access and gates | milestone | 0d | 2026-12-01 | 2026-12-01 |  | 40d | start on or after 2026-12-01 | F1 | UG-02 | UG-02-S02 | A010 |  |
| UG-02-S02-A020 |  | Set-out, crossing survey and working platform |  | 1d | 2027-01-17 | 2027-01-17 | UG-02-S02-A010, UG-02-S03-A030 SS | 10d |  | F1 | UG-02 | UG-02-S02 | A020 | 78.047505 |
| UG-02-S02-A030 |  | Pipe-support piling from platform (incl. integrity tests) |  | 12d | 2027-01-30 | 2027-02-11 | UG-02-S02-A020 SS+1d, UG-02-S02-A020 FF+2d, UG-02-S03-A030 | 0d |  | F1 | UG-02 | UG-02-S02 | A030 | 56 |
| UG-02-S02-A040 |  | Install sheet piles (shored lengths) |  | 7d | 2027-02-03 | 2027-02-10 | UG-02-S02-A030 SS+4d, UG-02-S02-A030 FF+2d, UG-02-S03-A040 | 0d |  | F1 | UG-02 | UG-02-S02 | A040 | 156.09501 |
| UG-02-S02-A050 |  | Install dewatering and draw down |  | 9d | 2027-02-06 | 2027-02-15 | UG-02-S02-A040 SS+3d, UG-02-S02-A040 FF+2d, UG-02-S03-A060 FS-9d | 1d |  | F1 | UG-02 | UG-02-S02 | A050 | 78.047505 |
| UG-02-S02-A060 |  | Excavate and strut to formation |  | 7d | 2027-02-17 | 2027-02-24 | UG-02-S02-A050 SS+9d, UG-02-S02-A050 FF+2d, UG-02-S03-A060 | 7d |  | F1 | UG-02 | UG-02-S02 | A060 | 1553.970526 |
| UG-02-S02-A070 |  | Trim piles, blinding and piled slab (incl. cure) |  | 10d | 2027-03-02 | 2027-03-13 | UG-02-S02-A060 SS+3d, UG-02-S02-A060 FF+2d, UG-02-S03-A070 | 0d |  | F1 | UG-02 | UG-02-S02 | A070 | 78.047505 |
| UG-02-S02-A080 |  | Lay and joint pipe (incl. fittings, tie-in) |  | 4d | 2027-03-06 | 2027-03-09 | UG-02-S02-A070 SS+3d, UG-02-S02-A070 FF+2d, UG-02-S03-A080 | 0d |  | F1 | UG-02 | UG-02-S02 | A080 | 78.047505 |
| UG-02-S02-A090 |  | Surround, joint test and line test |  | 3d | 2027-03-08 | 2027-03-10 | UG-02-S02-A080 SS+2d, UG-02-S02-A080 FF+2d | 54d |  | F1 | UG-02 | UG-02-S02 | A090 | 78.047505 |
| UG-02-S02-A100 |  | Backfill to NG and remove struts |  | 4d | 2027-05-12 | 2027-05-16 | UG-02-S02-A090 SS+2d, UG-02-S02-A090 FF+2d, UG-03-S01-A080, UG-02-S03-A100 | 0d |  | F1 | UG-02 | UG-02-S02 | A100 | 1171.624568 |
| UG-02-S02-A110 |  | Dewatering off, extract sheets, reinstate |  | 5d | 2027-05-15 | 2027-05-19 | UG-02-S02-A100 SS+2d, UG-02-S02-A100 FF+2d |  |  | F1 | UG-02 | UG-02-S02 | A110 | 156.09501 |
|  | UG-02-S05 | **UG-02-S05 / GRP-UG02-S05-EL261-IPS-(-6.72/-6.73)-6m / Tie-in / Sheet piles** |  |  | 2026-12-01 | 2027-05-19 |  |  |  |  |  |  |  |  |
| UG-02-S05-A010 |  | Release: drawings, holds, access and gates | milestone | 0d | 2026-12-01 | 2026-12-01 |  | 63d | start on or after 2026-12-01 | F1 | UG-02 | UG-02-S05 | A010 |  |
| UG-02-S05-A020 |  | Set-out, crossing survey and working platform |  | 1d | 2027-02-13 | 2027-02-13 | UG-02-S05-A010, UG-02-S04-A030 SS | 0d |  | F1 | UG-02 | UG-02-S05 | A020 | 5.96786 |
| UG-02-S05-A030 |  | Pipe-support piling from platform (incl. integrity tests) |  | 2d | 2027-02-13 | 2027-02-14 | UG-02-S05-A020 SS+1d, UG-02-S05-A020 FF+2d | 0d |  | F1 | UG-02 | UG-02-S05 | A030 | 6 |
| UG-02-S05-A040 |  | Install sheet piles (shored lengths) |  | 1d | 2027-02-14 | 2027-02-14 | UG-02-S05-A030 SS+1d, UG-02-S05-A030 FF+2d | 0d |  | F1 | UG-02 | UG-02-S05 | A040 | 11.93572 |
| UG-02-S05-A050 |  | Install dewatering and draw down |  | 8d | 2027-02-15 | 2027-02-23 | UG-02-S05-A040 SS+1d, UG-02-S05-A040 FF+2d | 48d |  | F1 | UG-02 | UG-02-S05 | A050 | 5.96786 |
| UG-02-S05-A060 |  | Excavate and strut to formation |  | 1d | 2027-04-22 | 2027-04-22 | UG-02-S05-A050 SS+9d, UG-02-S05-A050 FF+2d, UG-03-S04-A060 SS, UG-03-S05-A060 SS | 0d |  | F1 | UG-02 | UG-02-S05 | A060 | 146.446618 |
| UG-02-S05-A070 |  | Trim piles, blinding and piled slab (incl. cure) |  | 4d | 2027-04-24 | 2027-04-27 | UG-02-S05-A060 SS+1d, UG-02-S05-A060 FF+2d | 0d |  | F1 | UG-02 | UG-02-S05 | A070 | 5.96786 |
| UG-02-S05-A080 |  | Lay and joint pipe (incl. fittings, tie-in) |  | 4d | 2027-04-25 | 2027-04-28 | UG-02-S05-A070 SS+2d, UG-02-S05-A070 FF+2d, UG-02-S04-A080 | 0d |  | F1 | UG-02 | UG-02-S05 | A080 | 5.96786 |
| UG-02-S05-A090 |  | Surround, joint test and line test |  | 3d | 2027-04-27 | 2027-04-29 | UG-02-S05-A080 SS+2d, UG-02-S05-A080 FF+2d | 13d |  | F1 | UG-02 | UG-02-S05 | A090 | 5.96786 |
| UG-02-S05-A100 |  | Backfill to NG and remove struts |  | 1d | 2027-05-17 | 2027-05-17 | UG-02-S05-A090 SS+2d, UG-02-S05-A090 FF+2d, UG-03-S04-A080, UG-03-S05-A080 | 0d |  | F1 | UG-02 | UG-02-S05 | A100 | 117.21096 |
| UG-02-S05-A110 |  | Dewatering off, extract sheets, reinstate |  | 2d | 2027-05-18 | 2027-05-19 | UG-02-S05-A100 SS+1d, UG-02-S05-A100 FF+2d |  |  | F1 | UG-02 | UG-02-S05 | A110 | 11.93572 |

Notes:
- UG-02-S02-A010: Notes: Front F1 / Line UG-02 / Package UG-02-S02 / Workbook logic: gates: START, D_DLU, aeration zone piling
- UG-02-S02-A020: Notes: Front F1 / Line UG-02 / Package UG-02-S02 / Quantity 78 m / Workbook logic: FS from A010; UG-02-S03-A030 (SS, set-out one package ahead of piling)
- UG-02-S02-A030: Notes: Front F1 / Line UG-02 / Package UG-02-S02 / Quantity 56 piles / Workbook logic: gate: D_PILEDES
- UG-02-S02-A040: Notes: Front F1 / Line UG-02 / Package UG-02-S02 / Quantity 156 m wall
- UG-02-S02-A050: Notes: Front F1 / Line UG-02 / Package UG-02-S02 / Quantity 78 m / Workbook logic: UG-02-S03-A060 (FS, negative lag = own duration: drawdown complete when the excavation crew is free)
- UG-02-S02-A060: Notes: Front F1 / Line UG-02 / Package UG-02-S02 / Quantity 1,554 m3
- UG-02-S02-A070: Notes: Front F1 / Line UG-02 / Package UG-02-S02 / Quantity 78 m
- UG-02-S02-A080: Notes: Front F1 / Line UG-02 / Package UG-02-S02 / Quantity 78 m
- UG-02-S02-A090: Notes: Front F1 / Line UG-02 / Package UG-02-S02 / Quantity 78 m
- UG-02-S02-A100: Notes: Front F1 / Line UG-02 / Package UG-02-S02 / Quantity 1,172 m3 / Workbook logic: UG-03-S01-A080 (FS, shared trench laid)
- UG-02-S02-A110: Notes: Front F1 / Line UG-02 / Package UG-02-S02 / Quantity 156 m wall
- UG-02-S05-A010: Notes: Front F1 / Line UG-02 / Package UG-02-S05 / Workbook logic: gates: START, D_DLU, structure ready, aeration zone piling
- UG-02-S05-A020: Notes: Front F1 / Line UG-02 / Package UG-02-S05 / Quantity 6 m / Workbook logic: FS from A010; UG-02-S04-A030 (SS, tie-in team follows the adjacent run)
- UG-02-S05-A030: Notes: Front F1 / Line UG-02 / Package UG-02-S05 / Quantity 6 piles / Workbook logic: gate: D_PILEDES
- UG-02-S05-A040: Notes: Front F1 / Line UG-02 / Package UG-02-S05 / Quantity 12 m wall
- UG-02-S05-A050: Notes: Front F1 / Line UG-02 / Package UG-02-S05 / Quantity 6 m
- UG-02-S05-A060: Notes: Front F1 / Line UG-02 / Package UG-02-S05 / Quantity 146 m3 / Workbook logic: UG-03-S04-A060 (SS, shared trench); UG-03-S05-A060 (SS, shared trench)
- UG-02-S05-A070: Notes: Front F1 / Line UG-02 / Package UG-02-S05 / Quantity 6 m
- UG-02-S05-A080: Notes: Front F1 / Line UG-02 / Package UG-02-S05 / Quantity 6 m / Workbook logic: UG-02-S04-A080 (FS, closure)
- UG-02-S05-A090: Notes: Front F1 / Line UG-02 / Package UG-02-S05 / Quantity 6 m
- UG-02-S05-A100: Notes: Front F1 / Line UG-02 / Package UG-02-S05 / Quantity 117 m3 / Workbook logic: UG-03-S04-A080 (FS, shared trench laid); UG-03-S05-A080 (FS, shared trench laid)
- UG-02-S05-A110: Notes: Front F1 / Line UG-02 / Package UG-02-S05 / Quantity 12 m wall

| ID | WBS | Activity | Type | Duration | Start | Finish | Predecessors | Free float | Constraint | Text1 | Text2 | Text3 | Text4 | Number1 |
| --- | --- | --- | --- | --- | --- | --- | --- | --- | --- | --- | --- | --- | --- | --- |
|  | UG-02-S04 | **UG-02-S04 / GRP-UG02-S04-CH156-EL261-(-6.17/-6.72)-105m / Run / Sheet piles** |  |  | 2026-12-01 | 2027-06-08 |  |  |  |  |  |  |  |  |
| UG-02-S04-A010 |  | Release: drawings, holds, access and gates | milestone | 0d | 2026-12-01 | 2026-12-01 |  | 51d | start on or after 2026-12-01 | F1 | UG-02 | UG-02-S04 | A010 |  |
| UG-02-S04-A020 |  | Set-out, crossing survey and working platform |  | 2d | 2027-01-30 | 2027-01-31 | UG-02-S04-A010, UG-02-S02-A030 SS | 11d |  | F1 | UG-02 | UG-02-S04 | A020 | 105.194075 |
| UG-02-S04-A030 |  | Pipe-support piling from platform (incl. integrity tests) |  | 15d | 2027-02-13 | 2027-03-01 | UG-02-S04-A020 SS+1d, UG-02-S04-A020 FF+2d, UG-02-S02-A030 | 0d |  | F1 | UG-02 | UG-02-S04 | A030 | 74 |
| UG-02-S04-A040 |  | Install sheet piles (shored lengths) |  | 9d | 2027-02-18 | 2027-02-28 | UG-02-S04-A030 SS+5d, UG-02-S04-A030 FF+2d, UG-02-S02-A040 | 0d |  | F1 | UG-02 | UG-02-S04 | A040 | 210.38815 |
| UG-02-S04-A050 |  | Install dewatering and draw down |  | 10d | 2027-02-22 | 2027-03-04 | UG-02-S04-A040 SS+3d, UG-02-S04-A040 FF+2d, UG-02-S02-A060 FS-10d | 23d |  | F1 | UG-02 | UG-02-S04 | A050 | 105.194075 |
| UG-02-S04-A060 |  | Excavate and strut to formation |  | 10d | 2027-03-31 | 2027-04-11 | UG-02-S04-A050 SS+9d, UG-02-S04-A050 FF+2d, UG-03-S05-A060 SS, UG-02-S02-A060 | 0d |  | F1 | UG-02 | UG-02-S04 | A060 | 2464.840678 |
| UG-02-S04-A070 |  | Trim piles, blinding and piled slab (incl. cure) |  | 12d | 2027-04-04 | 2027-04-17 | UG-02-S04-A060 SS+3d, UG-02-S04-A060 FF+2d, UG-02-S02-A070 | 0d |  | F1 | UG-02 | UG-02-S04 | A070 | 105.194075 |
| UG-02-S04-A080 |  | Lay and joint pipe (incl. fittings, tie-in) |  | 7d | 2027-04-10 | 2027-04-17 | UG-02-S04-A070 SS+4d, UG-02-S04-A070 FF+2d, UG-02-S02-A080 | 0d |  | F1 | UG-02 | UG-02-S04 | A080 | 105.194075 |
| UG-02-S04-A090 |  | Surround, joint test and line test |  | 3d | 2027-04-12 | 2027-04-14 | UG-02-S04-A080 SS+3d, UG-02-S04-A080 FF+2d | 39d |  | F1 | UG-02 | UG-02-S04 | A090 | 105.194075 |
| UG-02-S04-A100 |  | Backfill to NG and remove struts |  | 6d | 2027-05-30 | 2027-06-05 | UG-02-S04-A090 SS+2d, UG-02-S04-A090 FF+2d, UG-03-S01-A080, UG-03-S02-A080, UG-03-S03-A080, UG-03-S04-A080, UG-03-S05-A080, UG-02-S02-A100 | 0d |  | F1 | UG-02 | UG-02-S04 | A100 | 1949.506837 |
| UG-02-S04-A110 |  | Dewatering off, extract sheets, reinstate |  | 6d | 2027-06-02 | 2027-06-08 | UG-02-S04-A100 SS+3d, UG-02-S04-A100 FF+2d |  |  | F1 | UG-02 | UG-02-S04 | A110 | 210.38815 |
|  | UG-02-S01 | **UG-02-S01 / GRP-UG02-S01-PST08-EL013-(-5.10/-5.38)-13m / Tie-in / Sheet piles** |  |  | 2026-12-01 | 2027-03-23 |  |  |  |  |  |  |  |  |
| UG-02-S01-A010 |  | Release: drawings, holds, access and gates | milestone | 0d | 2026-12-01 | 2026-12-01 |  | 51d | start on or after 2026-12-01 | F1 | UG-02 | UG-02-S01 | A010 |  |
| UG-02-S01-A020 |  | Set-out, crossing survey and working platform |  | 1d | 2027-01-30 | 2027-01-30 | UG-02-S01-A010, UG-02-S02-A030 SS | 0d |  | F1 | UG-02 | UG-02-S01 | A020 | 13.052495 |
| UG-02-S01-A030 |  | Pipe-support piling from platform (incl. integrity tests) |  | 3d | 2027-01-30 | 2027-02-01 | UG-02-S01-A020 SS+1d, UG-02-S01-A020 FF+2d | 0d |  | F1 | UG-02 | UG-02-S01 | A030 | 12 |
| UG-02-S01-A040 |  | Install sheet piles (shored lengths) |  | 2d | 2027-02-01 | 2027-02-02 | UG-02-S01-A030 SS+2d, UG-02-S01-A030 FF+2d | 0d |  | F1 | UG-02 | UG-02-S01 | A040 | 26.10499 |
| UG-02-S01-A050 |  | Install dewatering and draw down |  | 8d | 2027-02-02 | 2027-02-10 | UG-02-S01-A040 SS+1d, UG-02-S01-A040 FF+2d | 0d |  | F1 | UG-02 | UG-02-S01 | A050 | 13.052495 |
| UG-02-S01-A060 |  | Excavate and strut to formation |  | 1d | 2027-02-13 | 2027-02-13 | UG-02-S01-A050 SS+9d, UG-02-S01-A050 FF+2d | 0d |  | F1 | UG-02 | UG-02-S01 | A060 | 232.249795 |
| UG-02-S01-A070 |  | Trim piles, blinding and piled slab (incl. cure) |  | 5d | 2027-02-13 | 2027-02-17 | UG-02-S01-A060 SS+1d, UG-02-S01-A060 FF+2d | 25d |  | F1 | UG-02 | UG-02-S01 | A070 | 13.052495 |
| UG-02-S01-A080 |  | Lay and joint pipe (incl. fittings, tie-in) |  | 6d | 2027-03-16 | 2027-03-22 | UG-02-S01-A070 SS+2d, UG-02-S01-A070 FF+2d, UG-02-S02-A080 | 0d |  | F1 | UG-02 | UG-02-S01 | A080 | 13.052495 |
| UG-02-S01-A090 |  | Surround, joint test and line test |  | 3d | 2027-03-20 | 2027-03-22 | UG-02-S01-A080 SS+3d, UG-02-S01-A080 FF+2d | 0d |  | F1 | UG-02 | UG-02-S01 | A090 | 13.052495 |
| UG-02-S01-A100 |  | Backfill to NG and remove struts |  | 1d | 2027-03-21 | 2027-03-21 | UG-02-S01-A090 SS+2d, UG-02-S01-A090 FF+2d | 0d |  | F1 | UG-02 | UG-02-S01 | A100 | 176.210282 |
| UG-02-S01-A110 |  | Dewatering off, extract sheets, reinstate |  | 2d | 2027-03-22 | 2027-03-23 | UG-02-S01-A100 SS+1d, UG-02-S01-A100 FF+2d |  |  | F1 | UG-02 | UG-02-S01 | A110 | 26.10499 |

Notes:
- UG-02-S04-A010: Notes: Front F1 / Line UG-02 / Package UG-02-S04 / Workbook logic: gates: START, D_DLU, aeration zone piling
- UG-02-S04-A020: Notes: Front F1 / Line UG-02 / Package UG-02-S04 / Quantity 105 m / Workbook logic: FS from A010; UG-02-S02-A030 (SS, set-out one package ahead of piling)
- UG-02-S04-A030: Notes: Front F1 / Line UG-02 / Package UG-02-S04 / Quantity 74 piles / Workbook logic: gate: D_PILEDES
- UG-02-S04-A040: Notes: Front F1 / Line UG-02 / Package UG-02-S04 / Quantity 210 m wall
- UG-02-S04-A050: Notes: Front F1 / Line UG-02 / Package UG-02-S04 / Quantity 105 m / Workbook logic: UG-02-S02-A060 (FS, negative lag = own duration: drawdown complete when the excavation crew is free)
- UG-02-S04-A060: Notes: Front F1 / Line UG-02 / Package UG-02-S04 / Quantity 2,465 m3 / Workbook logic: gate: D_XING; UG-03-S05-A060 (SS, shared trench)
- UG-02-S04-A070: Notes: Front F1 / Line UG-02 / Package UG-02-S04 / Quantity 105 m
- UG-02-S04-A080: Notes: Front F1 / Line UG-02 / Package UG-02-S04 / Quantity 105 m
- UG-02-S04-A090: Notes: Front F1 / Line UG-02 / Package UG-02-S04 / Quantity 105 m
- UG-02-S04-A100: Notes: Front F1 / Line UG-02 / Package UG-02-S04 / Quantity 1,950 m3 / Workbook logic: UG-03-S01-A080 (FS, shared trench laid); UG-03-S02-A080 (FS, shared trench laid); UG-03-S03-A080 (FS, shared trench laid); UG-03-S04-A080 (FS, shared trench laid); UG-03-S05-A080 (FS, shared trench laid)
- UG-02-S04-A110: Notes: Front F1 / Line UG-02 / Package UG-02-S04 / Quantity 210 m wall
- UG-02-S01-A010: Notes: Front F1 / Line UG-02 / Package UG-02-S01 / Workbook logic: gates: START, D_DLU, structure ready
- UG-02-S01-A020: Notes: Front F1 / Line UG-02 / Package UG-02-S01 / Quantity 13 m / Workbook logic: FS from A010; UG-02-S02-A030 (SS, tie-in team follows the adjacent run)
- UG-02-S01-A030: Notes: Front F1 / Line UG-02 / Package UG-02-S01 / Quantity 12 piles / Workbook logic: gate: D_PILEDES
- UG-02-S01-A040: Notes: Front F1 / Line UG-02 / Package UG-02-S01 / Quantity 26 m wall
- UG-02-S01-A050: Notes: Front F1 / Line UG-02 / Package UG-02-S01 / Quantity 13 m
- UG-02-S01-A060: Notes: Front F1 / Line UG-02 / Package UG-02-S01 / Quantity 232 m3
- UG-02-S01-A070: Notes: Front F1 / Line UG-02 / Package UG-02-S01 / Quantity 13 m
- UG-02-S01-A080: Notes: Front F1 / Line UG-02 / Package UG-02-S01 / Quantity 13 m / Workbook logic: UG-02-S02-A080 (FS, closure)
- UG-02-S01-A090: Notes: Front F1 / Line UG-02 / Package UG-02-S01 / Quantity 13 m
- UG-02-S01-A100: Notes: Front F1 / Line UG-02 / Package UG-02-S01 / Quantity 176 m3
- UG-02-S01-A110: Notes: Front F1 / Line UG-02 / Package UG-02-S01 / Quantity 26 m wall

| ID | WBS | Activity | Type | Duration | Start | Finish | Predecessors | Free float | Constraint | Text1 | Text2 | Text3 | Text4 | Number1 |
| --- | --- | --- | --- | --- | --- | --- | --- | --- | --- | --- | --- | --- | --- | --- |
|  | UG-03 | **UG-03** |  |  | 2026-12-01 | 2027-06-23 |  |  |  |  |  |  |  |  |
|  | UG-03-S01 | **UG-03-S01 / GRP-UG03-S01-EXPST-CH066-(-5.10/-5.86)-66m / Run / Sheet piles** |  |  | 2026-12-01 | 2027-06-12 |  |  |  |  |  |  |  |  |
| UG-03-S01-A010 |  | Release: drawings, holds, access and gates | milestone | 0d | 2026-12-01 | 2026-12-01 |  | 63d | start on or after 2026-12-01 | F1 | UG-03 | UG-03-S01 | A010 |  |
| UG-03-S01-A020 |  | Set-out, crossing survey and working platform |  | 1d | 2027-02-13 | 2027-02-13 | UG-03-S01-A010, UG-02-S04-A030 SS | 14d |  | F1 | UG-03 | UG-03-S01 | A020 | 66 |
| UG-03-S01-A030 |  | Pipe-support piling from platform (incl. integrity tests) |  | 10d | 2027-03-02 | 2027-03-13 | UG-03-S01-A020 SS+1d, UG-03-S01-A020 FF+2d, UG-02-S04-A030 | 0d |  | F1 | UG-03 | UG-03-S01 | A030 | 46 |
| UG-03-S01-A040 |  | Install sheet piles (shored lengths) |  | 6d | 2027-03-06 | 2027-03-11 | UG-03-S01-A030 SS+3d, UG-03-S01-A030 FF+2d, UG-02-S04-A040 | 3d |  | F1 | UG-03 | UG-03-S01 | A040 | 132 |
| UG-03-S01-A050 |  | Install dewatering and draw down |  | 9d | 2027-04-01 | 2027-04-11 | UG-03-S01-A040 SS+3d, UG-03-S01-A040 FF+2d, UG-02-S04-A060 FS-9d | 0d |  | F1 | UG-03 | UG-03-S01 | A050 | 66 |
| UG-03-S01-A060 |  | Excavate and strut to formation |  | 6d | 2027-04-12 | 2027-04-18 | UG-03-S01-A050 SS+9d, UG-03-S01-A050 FF+2d, UG-02-S02-A060 SS, UG-02-S03-A060 SS, UG-02-S04-A060 SS, UG-02-S04-A060 | 0d |  | F1 | UG-03 | UG-03-S01 | A060 | 1291.19832 |
| UG-03-S01-A070 |  | Trim piles, blinding and piled slab (incl. cure) |  | 9d | 2027-04-18 | 2027-04-27 | UG-03-S01-A060 SS+3d, UG-03-S01-A060 FF+2d, UG-02-S04-A070 | 0d |  | F1 | UG-03 | UG-03-S01 | A070 | 66 |
| UG-03-S01-A080 |  | Lay and joint pipe (incl. fittings, tie-in) |  | 5d | 2027-04-22 | 2027-04-27 | UG-03-S01-A070 SS+3d, UG-03-S01-A070 FF+2d, UG-02-S04-A080 | 0d |  | F1 | UG-03 | UG-03-S01 | A080 | 66 |
| UG-03-S01-A090 |  | Surround, joint test and line test |  | 3d | 2027-04-24 | 2027-04-26 | UG-03-S01-A080 SS+2d, UG-03-S01-A080 FF+2d | 35d |  | F1 | UG-03 | UG-03-S01 | A090 | 66 |
| UG-03-S01-A100 |  | Backfill to NG and remove struts |  | 3d | 2027-06-06 | 2027-06-08 | UG-03-S01-A090 SS+2d, UG-03-S01-A090 FF+2d, UG-02-S02-A080, UG-02-S03-A080, UG-02-S04-A080, UG-02-S04-A100 | 0d |  | F1 | UG-03 | UG-03-S01 | A100 | 980.863091 |
| UG-03-S01-A110 |  | Dewatering off, extract sheets, reinstate |  | 4d | 2027-06-08 | 2027-06-12 | UG-03-S01-A100 SS+2d, UG-03-S01-A100 FF+2d |  |  | F1 | UG-03 | UG-03-S01 | A110 | 132 |
|  | UG-03-S02 | **UG-03-S02 / GRP-UG03-S02-CH066-CH082-(-5.86/-5.99)-16m / Run / Sheet piles** |  |  | 2026-12-01 | 2027-06-13 |  |  |  |  |  |  |  |  |
| UG-03-S02-A010 |  | Release: drawings, holds, access and gates | milestone | 0d | 2026-12-01 | 2026-12-01 |  | 78d | start on or after 2026-12-01 | F1 | UG-03 | UG-03-S02 | A010 |  |
| UG-03-S02-A020 |  | Set-out, crossing survey and working platform |  | 1d | 2027-03-02 | 2027-03-02 | UG-03-S02-A010, UG-03-S01-A030 SS | 9d |  | F1 | UG-03 | UG-03-S02 | A020 | 16 |
| UG-03-S02-A030 |  | Pipe-support piling from platform (incl. integrity tests) |  | 3d | 2027-03-14 | 2027-03-16 | UG-03-S02-A020 SS+1d, UG-03-S02-A020 FF+2d, UG-03-S01-A030 | 0d |  | F1 | UG-03 | UG-03-S02 | A030 | 14 |
| UG-03-S02-A040 |  | Install sheet piles (shored lengths) |  | 2d | 2027-03-16 | 2027-03-17 | UG-03-S02-A030 SS+2d, UG-03-S02-A030 FF+2d, UG-03-S01-A040 | 1d |  | F1 | UG-03 | UG-03-S02 | A040 | 32 |
| UG-03-S02-A050 |  | Install dewatering and draw down |  | 8d | 2027-04-10 | 2027-04-18 | UG-03-S02-A040 SS+1d, UG-03-S02-A040 FF+2d, UG-03-S01-A060 FS-8d | 0d |  | F1 | UG-03 | UG-03-S02 | A050 | 16 |
| UG-03-S02-A060 |  | Excavate and strut to formation |  | 2d | 2027-04-19 | 2027-04-20 | UG-03-S02-A050 SS+9d, UG-03-S02-A050 FF+2d, UG-02-S03-A060 SS, UG-02-S04-A060 SS, UG-03-S01-A060 | 0d |  | F1 | UG-03 | UG-03-S02 | A060 | 337.754483 |
| UG-03-S02-A070 |  | Trim piles, blinding and piled slab (incl. cure) |  | 5d | 2027-04-29 | 2027-05-04 | UG-03-S02-A060 SS+1d, UG-03-S02-A060 FF+2d, UG-03-S01-A070 | 0d |  | F1 | UG-03 | UG-03-S02 | A070 | 16 |
| UG-03-S02-A080 |  | Lay and joint pipe (incl. fittings, tie-in) |  | 1d | 2027-05-01 | 2027-05-01 | UG-03-S02-A070 SS+2d, UG-03-S02-A070 FF+2d, UG-03-S01-A080 | 0d |  | F1 | UG-03 | UG-03-S02 | A080 | 16 |
| UG-03-S02-A090 |  | Surround, joint test and line test |  | 3d | 2027-05-02 | 2027-05-04 | UG-03-S02-A080 SS+1d, UG-03-S02-A080 FF+2d | 30d |  | F1 | UG-03 | UG-03-S02 | A090 | 16 |
| UG-03-S02-A100 |  | Backfill to NG and remove struts |  | 1d | 2027-06-10 | 2027-06-10 | UG-03-S02-A090 SS+2d, UG-03-S02-A090 FF+2d, UG-02-S03-A080, UG-02-S04-A080, UG-03-S01-A100 | 0d |  | F1 | UG-03 | UG-03-S02 | A100 | 261.067128 |
| UG-03-S02-A110 |  | Dewatering off, extract sheets, reinstate |  | 2d | 2027-06-12 | 2027-06-13 | UG-03-S02-A100 SS+1d, UG-03-S02-A100 FF+2d |  |  | F1 | UG-03 | UG-03-S02 | A110 | 32 |

Notes:
- UG-03-S01-A010: Notes: Front F1 / Line UG-03 / Package UG-03-S01 / Workbook logic: gates: START, D_DLU
- UG-03-S01-A020: Notes: Front F1 / Line UG-03 / Package UG-03-S01 / Quantity 66 m / Workbook logic: FS from A010; UG-02-S04-A030 (SS, set-out one package ahead of piling)
- UG-03-S01-A030: Notes: Front F1 / Line UG-03 / Package UG-03-S01 / Quantity 46 piles / Workbook logic: gate: D_PILEDES
- UG-03-S01-A040: Notes: Front F1 / Line UG-03 / Package UG-03-S01 / Quantity 132 m wall
- UG-03-S01-A050: Notes: Front F1 / Line UG-03 / Package UG-03-S01 / Quantity 66 m / Workbook logic: UG-02-S04-A060 (FS, negative lag = own duration: drawdown complete when the excavation crew is free)
- UG-03-S01-A060: Notes: Front F1 / Line UG-03 / Package UG-03-S01 / Quantity 1,291 m3 / Workbook logic: UG-02-S02-A060 (SS, shared trench); UG-02-S03-A060 (SS, shared trench); UG-02-S04-A060 (SS, shared trench)
- UG-03-S01-A070: Notes: Front F1 / Line UG-03 / Package UG-03-S01 / Quantity 66 m
- UG-03-S01-A080: Notes: Front F1 / Line UG-03 / Package UG-03-S01 / Quantity 66 m
- UG-03-S01-A090: Notes: Front F1 / Line UG-03 / Package UG-03-S01 / Quantity 66 m
- UG-03-S01-A100: Notes: Front F1 / Line UG-03 / Package UG-03-S01 / Quantity 981 m3 / Workbook logic: UG-02-S02-A080 (FS, shared trench laid); UG-02-S03-A080 (FS, shared trench laid); UG-02-S04-A080 (FS, shared trench laid)
- UG-03-S01-A110: Notes: Front F1 / Line UG-03 / Package UG-03-S01 / Quantity 132 m wall
- UG-03-S02-A010: Notes: Front F1 / Line UG-03 / Package UG-03-S02 / Workbook logic: gates: START, D_DLU
- UG-03-S02-A020: Notes: Front F1 / Line UG-03 / Package UG-03-S02 / Quantity 16 m / Workbook logic: FS from A010; UG-03-S01-A030 (SS, set-out one package ahead of piling)
- UG-03-S02-A030: Notes: Front F1 / Line UG-03 / Package UG-03-S02 / Quantity 14 piles / Workbook logic: gate: D_PILEDES
- UG-03-S02-A040: Notes: Front F1 / Line UG-03 / Package UG-03-S02 / Quantity 32 m wall
- UG-03-S02-A050: Notes: Front F1 / Line UG-03 / Package UG-03-S02 / Quantity 16 m / Workbook logic: UG-03-S01-A060 (FS, negative lag = own duration: drawdown complete when the excavation crew is free)
- UG-03-S02-A060: Notes: Front F1 / Line UG-03 / Package UG-03-S02 / Quantity 338 m3 / Workbook logic: UG-02-S03-A060 (SS, shared trench); UG-02-S04-A060 (SS, shared trench)
- UG-03-S02-A070: Notes: Front F1 / Line UG-03 / Package UG-03-S02 / Quantity 16 m
- UG-03-S02-A080: Notes: Front F1 / Line UG-03 / Package UG-03-S02 / Quantity 16 m
- UG-03-S02-A090: Notes: Front F1 / Line UG-03 / Package UG-03-S02 / Quantity 16 m
- UG-03-S02-A100: Notes: Front F1 / Line UG-03 / Package UG-03-S02 / Quantity 261 m3 / Workbook logic: UG-02-S03-A080 (FS, shared trench laid); UG-02-S04-A080 (FS, shared trench laid)
- UG-03-S02-A110: Notes: Front F1 / Line UG-03 / Package UG-03-S02 / Quantity 32 m wall

| ID | WBS | Activity | Type | Duration | Start | Finish | Predecessors | Free float | Constraint | Text1 | Text2 | Text3 | Text4 | Number1 |
| --- | --- | --- | --- | --- | --- | --- | --- | --- | --- | --- | --- | --- | --- | --- |
|  | UG-03-S04 | **UG-03-S04 / GRP-UG03-S04-CH168-EL175-(-6.70/-6.73)-7m / Run / Sheet piles** |  |  | 2026-12-01 | 2027-06-14 |  |  |  |  |  |  |  |  |
| UG-03-S04-A010 |  | Release: drawings, holds, access and gates | milestone | 0d | 2026-12-01 | 2026-12-01 |  | 88d | start on or after 2026-12-01 | F1 | UG-03 | UG-03-S04 | A010 |  |
| UG-03-S04-A020 |  | Set-out, crossing survey and working platform |  | 1d | 2027-03-14 | 2027-03-14 | UG-03-S04-A010, UG-03-S02-A030 SS | 3d |  | F1 | UG-03 | UG-03-S04 | A020 | 6.980386 |
| UG-03-S04-A030 |  | Pipe-support piling from platform (incl. integrity tests) |  | 2d | 2027-03-18 | 2027-03-20 | UG-03-S04-A020 SS+1d, UG-03-S04-A020 FF+2d, UG-03-S02-A030 | 0d |  | F1 | UG-03 | UG-03-S04 | A030 | 8 |
| UG-03-S04-A040 |  | Install sheet piles (shored lengths) |  | 1d | 2027-03-20 | 2027-03-20 | UG-03-S04-A030 SS+1d, UG-03-S04-A030 FF+2d, UG-03-S02-A040 | 2d |  | F1 | UG-03 | UG-03-S04 | A040 | 13.960771 |
| UG-03-S04-A050 |  | Install dewatering and draw down |  | 8d | 2027-04-12 | 2027-04-20 | UG-03-S04-A040 SS+1d, UG-03-S04-A040 FF+2d, UG-03-S02-A060 FS-8d | 0d |  | F1 | UG-03 | UG-03-S04 | A050 | 6.980386 |
| UG-03-S04-A060 |  | Excavate and strut to formation |  | 1d | 2027-04-22 | 2027-04-22 | UG-03-S04-A050 SS+9d, UG-03-S04-A050 FF+2d, UG-02-S04-A060 SS, UG-03-S02-A060 | 0d |  | F1 | UG-03 | UG-03-S04 | A060 | 170.288368 |
| UG-03-S04-A070 |  | Trim piles, blinding and piled slab (incl. cure) |  | 4d | 2027-05-05 | 2027-05-09 | UG-03-S04-A060 SS+1d, UG-03-S04-A060 FF+2d, UG-03-S02-A070 | 0d |  | F1 | UG-03 | UG-03-S04 | A070 | 6.980386 |
| UG-03-S04-A080 |  | Lay and joint pipe (incl. fittings, tie-in) |  | 2d | 2027-05-08 | 2027-05-09 | UG-03-S04-A070 SS+2d, UG-03-S04-A070 FF+2d, UG-03-S02-A080 | 0d |  | F1 | UG-03 | UG-03-S04 | A080 | 6.980386 |
| UG-03-S04-A090 |  | Surround, joint test and line test |  | 3d | 2027-05-08 | 2027-05-10 | UG-03-S04-A080 SS+1d, UG-03-S04-A080 FF+2d | 26d |  | F1 | UG-03 | UG-03-S04 | A090 | 6.980386 |
| UG-03-S04-A100 |  | Backfill to NG and remove struts |  | 1d | 2027-06-12 | 2027-06-12 | UG-03-S04-A090 SS+2d, UG-03-S04-A090 FF+2d, UG-02-S04-A080, UG-02-S05-A080, UG-04-S01-A080, UG-04-S02-A080, UG-03-S02-A100 | 0d |  | F1 | UG-03 | UG-03-S04 | A100 | 136.507062 |
| UG-03-S04-A110 |  | Dewatering off, extract sheets, reinstate |  | 2d | 2027-06-13 | 2027-06-14 | UG-03-S04-A100 SS+1d, UG-03-S04-A100 FF+2d |  |  | F1 | UG-03 | UG-03-S04 | A110 | 13.960771 |
|  | UG-03-S05 | **UG-03-S05 / GRP-UG03-S05-EL175-IPS-(-6.73/-6.73)-11m / Tie-in / Sheet piles** |  |  | 2026-12-01 | 2027-05-24 |  |  |  |  |  |  |  |  |
| UG-03-S05-A010 |  | Release: drawings, holds, access and gates | milestone | 0d | 2026-12-01 | 2026-12-01 |  | 92d | start on or after 2026-12-01 | F1 | UG-03 | UG-03-S05 | A010 |  |
| UG-03-S05-A020 |  | Set-out, crossing survey and working platform |  | 1d | 2027-03-18 | 2027-03-18 | UG-03-S05-A010, UG-03-S04-A030 SS | 0d |  | F1 | UG-03 | UG-03-S05 | A020 | 10.97878 |
| UG-03-S05-A030 |  | Pipe-support piling from platform (incl. integrity tests) |  | 2d | 2027-03-20 | 2027-03-21 | UG-03-S05-A020 SS+1d, UG-03-S05-A020 FF+2d | 0d |  | F1 | UG-03 | UG-03-S05 | A030 | 10 |
| UG-03-S05-A040 |  | Install sheet piles (shored lengths) |  | 1d | 2027-03-20 | 2027-03-20 | UG-03-S05-A030 SS+1d, UG-03-S05-A030 FF+2d | 0d |  | F1 | UG-03 | UG-03-S05 | A040 | 21.95756 |
| UG-03-S05-A050 |  | Install dewatering and draw down |  | 8d | 2027-03-21 | 2027-03-29 | UG-03-S05-A040 SS+1d, UG-03-S05-A040 FF+2d | 0d |  | F1 | UG-03 | UG-03-S05 | A050 | 10.97878 |
| UG-03-S05-A060 |  | Excavate and strut to formation |  | 2d | 2027-03-31 | 2027-04-01 | UG-03-S05-A050 SS+9d, UG-03-S05-A050 FF+2d | 0d |  | F1 | UG-03 | UG-03-S05 | A060 | 269.48722 |
| UG-03-S05-A070 |  | Trim piles, blinding and piled slab (incl. cure) |  | 4d | 2027-04-01 | 2027-04-05 | UG-03-S05-A060 SS+1d, UG-03-S05-A060 FF+2d | 33d |  | F1 | UG-03 | UG-03-S05 | A070 | 10.97878 |
| UG-03-S05-A080 |  | Lay and joint pipe (incl. fittings, tie-in) |  | 4d | 2027-05-12 | 2027-05-16 | UG-03-S05-A070 SS+2d, UG-03-S05-A070 FF+2d, UG-03-S04-A080 | 0d |  | F1 | UG-03 | UG-03-S05 | A080 | 10.97878 |
| UG-03-S05-A090 |  | Surround, joint test and line test |  | 3d | 2027-05-15 | 2027-05-17 | UG-03-S05-A080 SS+2d, UG-03-S05-A080 FF+2d | 2d |  | F1 | UG-03 | UG-03-S05 | A090 | 10.97878 |
| UG-03-S05-A100 |  | Backfill to NG and remove struts |  | 1d | 2027-05-22 | 2027-05-22 | UG-03-S05-A090 SS+2d, UG-03-S05-A090 FF+2d, UG-02-S04-A080, UG-02-S05-A080, UG-04-S01-A080, UG-04-S02-A080 | 0d |  | F1 | UG-03 | UG-03-S05 | A100 | 215.703848 |
| UG-03-S05-A110 |  | Dewatering off, extract sheets, reinstate |  | 2d | 2027-05-23 | 2027-05-24 | UG-03-S05-A100 SS+1d, UG-03-S05-A100 FF+2d |  |  | F1 | UG-03 | UG-03-S05 | A110 | 21.95756 |

Notes:
- UG-03-S04-A010: Notes: Front F1 / Line UG-03 / Package UG-03-S04 / Workbook logic: gates: START, D_DLU
- UG-03-S04-A020: Notes: Front F1 / Line UG-03 / Package UG-03-S04 / Quantity 7 m / Workbook logic: FS from A010; UG-03-S02-A030 (SS, set-out one package ahead of piling)
- UG-03-S04-A030: Notes: Front F1 / Line UG-03 / Package UG-03-S04 / Quantity 8 piles / Workbook logic: gate: D_PILEDES
- UG-03-S04-A040: Notes: Front F1 / Line UG-03 / Package UG-03-S04 / Quantity 14 m wall
- UG-03-S04-A050: Notes: Front F1 / Line UG-03 / Package UG-03-S04 / Quantity 7 m / Workbook logic: UG-03-S02-A060 (FS, negative lag = own duration: drawdown complete when the excavation crew is free)
- UG-03-S04-A060: Notes: Front F1 / Line UG-03 / Package UG-03-S04 / Quantity 170 m3 / Workbook logic: UG-02-S04-A060 (SS, shared trench)
- UG-03-S04-A070: Notes: Front F1 / Line UG-03 / Package UG-03-S04 / Quantity 7 m
- UG-03-S04-A080: Notes: Front F1 / Line UG-03 / Package UG-03-S04 / Quantity 7 m
- UG-03-S04-A090: Notes: Front F1 / Line UG-03 / Package UG-03-S04 / Quantity 7 m
- UG-03-S04-A100: Notes: Front F1 / Line UG-03 / Package UG-03-S04 / Quantity 137 m3 / Workbook logic: UG-02-S04-A080 (FS, shared trench laid); UG-02-S05-A080 (FS, shared trench laid); UG-04-S01-A080 (FS, shared trench laid); UG-04-S02-A080 (FS, shared trench laid)
- UG-03-S04-A110: Notes: Front F1 / Line UG-03 / Package UG-03-S04 / Quantity 14 m wall
- UG-03-S05-A010: Notes: Front F1 / Line UG-03 / Package UG-03-S05 / Workbook logic: gates: START, D_DLU, structure ready
- UG-03-S05-A020: Notes: Front F1 / Line UG-03 / Package UG-03-S05 / Quantity 11 m / Workbook logic: FS from A010; UG-03-S04-A030 (SS, tie-in team follows the adjacent run)
- UG-03-S05-A030: Notes: Front F1 / Line UG-03 / Package UG-03-S05 / Quantity 10 piles / Workbook logic: gate: D_PILEDES
- UG-03-S05-A040: Notes: Front F1 / Line UG-03 / Package UG-03-S05 / Quantity 22 m wall
- UG-03-S05-A050: Notes: Front F1 / Line UG-03 / Package UG-03-S05 / Quantity 11 m
- UG-03-S05-A060: Notes: Front F1 / Line UG-03 / Package UG-03-S05 / Quantity 269 m3
- UG-03-S05-A070: Notes: Front F1 / Line UG-03 / Package UG-03-S05 / Quantity 11 m
- UG-03-S05-A080: Notes: Front F1 / Line UG-03 / Package UG-03-S05 / Quantity 11 m / Workbook logic: UG-03-S04-A080 (FS, closure)
- UG-03-S05-A090: Notes: Front F1 / Line UG-03 / Package UG-03-S05 / Quantity 11 m
- UG-03-S05-A100: Notes: Front F1 / Line UG-03 / Package UG-03-S05 / Quantity 216 m3 / Workbook logic: UG-02-S04-A080 (FS, shared trench laid); UG-02-S05-A080 (FS, shared trench laid); UG-04-S01-A080 (FS, shared trench laid); UG-04-S02-A080 (FS, shared trench laid)
- UG-03-S05-A110: Notes: Front F1 / Line UG-03 / Package UG-03-S05 / Quantity 22 m wall

| ID | WBS | Activity | Type | Duration | Start | Finish | Predecessors | Free float | Constraint | Text1 | Text2 | Text3 | Text4 | Number1 |
| --- | --- | --- | --- | --- | --- | --- | --- | --- | --- | --- | --- | --- | --- | --- |
|  | UG-03-S03 | **UG-03-S03 / GRP-UG03-S03-CH082-CH168-(-5.99/-6.70)-86m / Run / Sheet piles** |  |  | 2026-12-01 | 2027-06-23 |  |  |  |  |  |  |  |  |
| UG-03-S03-A010 |  | Release: drawings, holds, access and gates | milestone | 0d | 2026-12-01 | 2026-12-01 |  | 94d | start on or after 2026-12-01 | F1 | UG-03 | UG-03-S03 | A010 |  |
| UG-03-S03-A020 |  | Set-out, crossing survey and working platform |  | 2d | 2027-03-21 | 2027-03-22 | UG-03-S03-A010, UG-04-S01-A030 SS | 2d |  | F1 | UG-03 | UG-03-S03 | A020 | 86.1 |
| UG-03-S03-A030 |  | Pipe-support piling from platform (incl. integrity tests) |  | 12d | 2027-03-24 | 2027-04-06 | UG-03-S03-A020 SS+1d, UG-03-S03-A020 FF+2d, UG-04-S01-A030 | 0d |  | F1 | UG-03 | UG-03-S03 | A030 | 60 |
| UG-03-S03-A040 |  | Install sheet piles (shored lengths) |  | 7d | 2027-03-29 | 2027-04-05 | UG-03-S03-A030 SS+4d, UG-03-S03-A030 FF+2d, UG-04-S01-A040 | 11d |  | F1 | UG-03 | UG-03-S03 | A040 | 172.2 |
| UG-03-S03-A050 |  | Install dewatering and draw down |  | 10d | 2027-04-14 | 2027-04-25 | UG-03-S03-A040 SS+3d, UG-03-S03-A040 FF+2d, UG-04-S01-A060 FS-10d | 1d |  | F1 | UG-03 | UG-03-S03 | A050 | 86.1 |
| UG-03-S03-A060 |  | Excavate and strut to formation |  | 8d | 2027-04-26 | 2027-05-04 | UG-03-S03-A050 SS+9d, UG-03-S03-A050 FF+2d, UG-02-S04-A060 SS, UG-04-S01-A060 | 13d |  | F1 | UG-03 | UG-03-S03 | A060 | 1964.830425 |
| UG-03-S03-A070 |  | Trim piles, blinding and piled slab (incl. cure) |  | 11d | 2027-05-15 | 2027-05-26 | UG-03-S03-A060 SS+3d, UG-03-S03-A060 FF+2d, UG-04-S01-A070 | 0d |  | F1 | UG-03 | UG-03-S03 | A070 | 86.1 |
| UG-03-S03-A080 |  | Lay and joint pipe (incl. fittings, tie-in) |  | 5d | 2027-05-19 | 2027-05-24 | UG-03-S03-A070 SS+3d, UG-03-S03-A070 FF+2d, UG-04-S01-A080 | 0d |  | F1 | UG-03 | UG-03-S03 | A080 | 86.1 |
| UG-03-S03-A090 |  | Surround, joint test and line test |  | 3d | 2027-05-22 | 2027-05-24 | UG-03-S03-A080 SS+2d, UG-03-S03-A080 FF+2d | 20d |  | F1 | UG-03 | UG-03-S03 | A090 | 86.1 |
| UG-03-S03-A100 |  | Backfill to NG and remove struts |  | 5d | 2027-06-16 | 2027-06-21 | UG-03-S03-A090 SS+2d, UG-03-S03-A090 FF+2d, UG-02-S04-A080, UG-04-S01-A100 | 0d |  | F1 | UG-03 | UG-03-S03 | A100 | 1552.156597 |
| UG-03-S03-A110 |  | Dewatering off, extract sheets, reinstate |  | 5d | 2027-06-19 | 2027-06-23 | UG-03-S03-A100 SS+2d, UG-03-S03-A100 FF+2d |  |  | F1 | UG-03 | UG-03-S03 | A110 | 172.2 |
|  | UG-04 | **UG-04** |  |  | 2026-12-01 | 2027-06-16 |  |  |  |  |  |  |  |  |
|  | UG-04-S01 | **UG-04-S01 / GRP-UG04-S01-EXPST-EL010-(-5.09/-5.86)-10m / Run / Sheet piles** |  |  | 2026-12-01 | 2027-06-16 |  |  |  |  |  |  |  |  |
| UG-04-S01-A010 |  | Release: drawings, holds, access and gates | milestone | 0d | 2026-12-01 | 2026-12-01 |  | 92d | start on or after 2026-12-01 | F1 | UG-04 | UG-04-S01 | A010 |  |
| UG-04-S01-A020 |  | Set-out, crossing survey and working platform |  | 1d | 2027-03-18 | 2027-03-18 | UG-04-S01-A010, UG-03-S04-A030 SS | 1d |  | F1 | UG-04 | UG-04-S01 | A020 | 10.30969 |
| UG-04-S01-A030 |  | Pipe-support piling from platform (incl. integrity tests) |  | 2d | 2027-03-21 | 2027-03-22 | UG-04-S01-A020 SS+1d, UG-04-S01-A020 FF+2d, UG-03-S04-A030 | 0d |  | F1 | UG-04 | UG-04-S01 | A030 | 10 |
| UG-04-S01-A040 |  | Install sheet piles (shored lengths) |  | 1d | 2027-03-23 | 2027-03-23 | UG-04-S01-A030 SS+1d, UG-04-S01-A030 FF+2d, UG-03-S04-A040 | 4d |  | F1 | UG-04 | UG-04-S01 | A040 | 20.619381 |
| UG-04-S01-A050 |  | Install dewatering and draw down |  | 8d | 2027-04-14 | 2027-04-22 | UG-04-S01-A040 SS+1d, UG-04-S01-A040 FF+2d, UG-03-S04-A060 FS-8d | 0d |  | F1 | UG-04 | UG-04-S01 | A050 | 10.30969 |
| UG-04-S01-A060 |  | Excavate and strut to formation |  | 1d | 2027-04-24 | 2027-04-24 | UG-04-S01-A050 SS+9d, UG-04-S01-A050 FF+2d, UG-03-S04-A060 SS, UG-03-S05-A060 SS, UG-03-S04-A060 | 1d |  | F1 | UG-04 | UG-04-S01 | A060 | 191.574073 |
| UG-04-S01-A070 |  | Trim piles, blinding and piled slab (incl. cure) |  | 4d | 2027-05-10 | 2027-05-13 | UG-04-S01-A060 SS+1d, UG-04-S01-A060 FF+2d, UG-03-S04-A070 | 0d |  | F1 | UG-04 | UG-04-S01 | A070 | 10.30969 |
| UG-04-S01-A080 |  | Lay and joint pipe (incl. fittings, tie-in) |  | 4d | 2027-05-12 | 2027-05-16 | UG-04-S01-A070 SS+2d, UG-04-S01-A070 FF+2d, UG-03-S04-A080 | 0d |  | F1 | UG-04 | UG-04-S01 | A080 | 10.30969 |
| UG-04-S01-A090 |  | Surround, joint test and line test |  | 3d | 2027-05-15 | 2027-05-17 | UG-04-S01-A080 SS+2d, UG-04-S01-A080 FF+2d | 22d |  | F1 | UG-04 | UG-04-S01 | A090 | 10.30969 |
| UG-04-S01-A100 |  | Backfill to NG and remove struts |  | 1d | 2027-06-14 | 2027-06-14 | UG-04-S01-A090 SS+2d, UG-04-S01-A090 FF+2d, UG-03-S04-A080, UG-03-S05-A080, UG-03-S04-A100 | 0d |  | F1 | UG-04 | UG-04-S01 | A100 | 146.851549 |
| UG-04-S01-A110 |  | Dewatering off, extract sheets, reinstate |  | 2d | 2027-06-15 | 2027-06-16 | UG-04-S01-A100 SS+1d, UG-04-S01-A100 FF+2d |  |  | F1 | UG-04 | UG-04-S01 | A110 | 20.619381 |

Notes:
- UG-03-S03-A010: Notes: Front F1 / Line UG-03 / Package UG-03-S03 / Workbook logic: gates: START, D_DLU
- UG-03-S03-A020: Notes: Front F1 / Line UG-03 / Package UG-03-S03 / Quantity 86 m / Workbook logic: FS from A010; UG-04-S01-A030 (SS, set-out one package ahead of piling)
- UG-03-S03-A030: Notes: Front F1 / Line UG-03 / Package UG-03-S03 / Quantity 60 piles / Workbook logic: gate: D_PILEDES
- UG-03-S03-A040: Notes: Front F1 / Line UG-03 / Package UG-03-S03 / Quantity 172 m wall
- UG-03-S03-A050: Notes: Front F1 / Line UG-03 / Package UG-03-S03 / Quantity 86 m / Workbook logic: UG-04-S01-A060 (FS, negative lag = own duration: drawdown complete when the excavation crew is free)
- UG-03-S03-A060: Notes: Front F1 / Line UG-03 / Package UG-03-S03 / Quantity 1,965 m3 / Workbook logic: gate: D_XING; UG-02-S04-A060 (SS, shared trench)
- UG-03-S03-A070: Notes: Front F1 / Line UG-03 / Package UG-03-S03 / Quantity 86 m
- UG-03-S03-A080: Notes: Front F1 / Line UG-03 / Package UG-03-S03 / Quantity 86 m
- UG-03-S03-A090: Notes: Front F1 / Line UG-03 / Package UG-03-S03 / Quantity 86 m
- UG-03-S03-A100: Notes: Front F1 / Line UG-03 / Package UG-03-S03 / Quantity 1,552 m3 / Workbook logic: UG-02-S04-A080 (FS, shared trench laid)
- UG-03-S03-A110: Notes: Front F1 / Line UG-03 / Package UG-03-S03 / Quantity 172 m wall
- UG-04-S01-A010: Notes: Front F1 / Line UG-04 / Package UG-04-S01 / Workbook logic: gates: START, D_DLU
- UG-04-S01-A020: Notes: Front F1 / Line UG-04 / Package UG-04-S01 / Quantity 10 m / Workbook logic: FS from A010; UG-03-S04-A030 (SS, set-out one package ahead of piling)
- UG-04-S01-A030: Notes: Front F1 / Line UG-04 / Package UG-04-S01 / Quantity 10 piles / Workbook logic: gate: D_PILEDES
- UG-04-S01-A040: Notes: Front F1 / Line UG-04 / Package UG-04-S01 / Quantity 21 m wall
- UG-04-S01-A050: Notes: Front F1 / Line UG-04 / Package UG-04-S01 / Quantity 10 m / Workbook logic: UG-03-S04-A060 (FS, negative lag = own duration: drawdown complete when the excavation crew is free)
- UG-04-S01-A060: Notes: Front F1 / Line UG-04 / Package UG-04-S01 / Quantity 192 m3 / Workbook logic: UG-03-S04-A060 (SS, shared trench); UG-03-S05-A060 (SS, shared trench)
- UG-04-S01-A070: Notes: Front F1 / Line UG-04 / Package UG-04-S01 / Quantity 10 m
- UG-04-S01-A080: Notes: Front F1 / Line UG-04 / Package UG-04-S01 / Quantity 10 m
- UG-04-S01-A090: Notes: Front F1 / Line UG-04 / Package UG-04-S01 / Quantity 10 m
- UG-04-S01-A100: Notes: Front F1 / Line UG-04 / Package UG-04-S01 / Quantity 147 m3 / Workbook logic: UG-03-S04-A080 (FS, shared trench laid); UG-03-S05-A080 (FS, shared trench laid)
- UG-04-S01-A110: Notes: Front F1 / Line UG-04 / Package UG-04-S01 / Quantity 21 m wall

| ID | WBS | Activity | Type | Duration | Start | Finish | Predecessors | Free float | Constraint | Text1 | Text2 | Text3 | Text4 | Number1 |
| --- | --- | --- | --- | --- | --- | --- | --- | --- | --- | --- | --- | --- | --- | --- |
|  | UG-04-S02 | **UG-04-S02 / GRP-UG04-S02-EL010-IPS-(-5.86/-6.73)-12m / Tie-in / Sheet piles** |  |  | 2026-12-01 | 2027-05-23 |  |  |  |  |  |  |  |  |
| UG-04-S02-A010 |  | Release: drawings, holds, access and gates | milestone | 0d | 2026-12-01 | 2026-12-01 |  | 94d | start on or after 2026-12-01 | F1 | UG-04 | UG-04-S02 | A010 |  |
| UG-04-S02-A020 |  | Set-out, crossing survey and working platform |  | 1d | 2027-03-21 | 2027-03-21 | UG-04-S02-A010, UG-04-S01-A030 SS | 0d |  | F1 | UG-04 | UG-04-S02 | A020 | 12.3452 |
| UG-04-S02-A030 |  | Pipe-support piling from platform (incl. integrity tests) |  | 3d | 2027-03-22 | 2027-03-24 | UG-04-S02-A020 SS+1d, UG-04-S02-A020 FF+2d | 0d |  | F1 | UG-04 | UG-04-S02 | A030 | 12 |
| UG-04-S02-A040 |  | Install sheet piles (shored lengths) |  | 1d | 2027-03-24 | 2027-03-24 | UG-04-S02-A030 SS+2d, UG-04-S02-A030 FF+2d | 0d |  | F1 | UG-04 | UG-04-S02 | A040 | 24.6904 |
| UG-04-S02-A050 |  | Install dewatering and draw down |  | 8d | 2027-03-25 | 2027-04-03 | UG-04-S02-A040 SS+1d, UG-04-S02-A040 FF+2d | 15d |  | F1 | UG-04 | UG-04-S02 | A050 | 12.3452 |
| UG-04-S02-A060 |  | Excavate and strut to formation |  | 2d | 2027-04-22 | 2027-04-24 | UG-04-S02-A050 SS+9d, UG-04-S02-A050 FF+2d, UG-03-S04-A060 SS, UG-03-S05-A060 SS | 0d |  | F1 | UG-04 | UG-04-S02 | A060 | 281.267853 |
| UG-04-S02-A070 |  | Trim piles, blinding and piled slab (incl. cure) |  | 5d | 2027-04-24 | 2027-04-28 | UG-04-S02-A060 SS+1d, UG-04-S02-A060 FF+2d | 17d |  | F1 | UG-04 | UG-04-S02 | A070 | 12.3452 |
| UG-04-S02-A080 |  | Lay and joint pipe (incl. fittings, tie-in) |  | 4d | 2027-05-17 | 2027-05-20 | UG-04-S02-A070 SS+2d, UG-04-S02-A070 FF+2d, UG-04-S01-A080 | 0d |  | F1 | UG-04 | UG-04-S02 | A080 | 12.3452 |
| UG-04-S02-A090 |  | Surround, joint test and line test |  | 3d | 2027-05-19 | 2027-05-22 | UG-04-S02-A080 SS+2d, UG-04-S02-A080 FF+2d | 0d |  | F1 | UG-04 | UG-04-S02 | A090 | 12.3452 |
| UG-04-S02-A100 |  | Backfill to NG and remove struts |  | 1d | 2027-05-22 | 2027-05-22 | UG-04-S02-A090 SS+2d, UG-04-S02-A090 FF+2d, UG-03-S04-A080, UG-03-S05-A080 | 0d |  | F1 | UG-04 | UG-04-S02 | A100 | 220.790653 |
| UG-04-S02-A110 |  | Dewatering off, extract sheets, reinstate |  | 2d | 2027-05-22 | 2027-05-23 | UG-04-S02-A100 SS+1d, UG-04-S02-A100 FF+2d |  |  | F1 | UG-04 | UG-04-S02 | A110 | 24.6904 |
|  | F2 | **F2 Bypass corridor: IPS bypass and outfall twin** |  |  | 2026-12-01 | 2027-07-20 |  |  |  |  |  |  |  |  |
|  | UG-06 | **UG-06** |  |  | 2026-12-01 | 2027-06-01 |  |  |  |  |  |  |  |  |
|  | UG-06-S02 | **UG-06-S02 / GRP-UG06-S02-EL021-CH049-(-4.05/-4.05)-28m / Run / Sheet piles** |  |  | 2026-12-01 | 2026-12-24 |  |  |  |  |  |  |  |  |
| UG-06-S02-A010 |  | Release: drawings, holds, access and gates | milestone | 0d | 2026-12-01 | 2026-12-01 |  | 0d | start on or after 2026-12-01 | F2 | UG-06 | UG-06-S02 | A010 |  |
| UG-06-S02-A020 |  | Set-out, crossing survey and working platform |  | 1d | 2026-12-01 | 2026-12-01 | UG-06-S02-A010 | 0d |  | F2 | UG-06 | UG-06-S02 | A020 | 27.915391 |
| UG-06-S02-A030 |  | Pipe-support piling from platform (incl. integrity tests) |  | 3d | 2026-12-02 | 2026-12-05 | UG-06-S02-A020 SS+1d, UG-06-S02-A020 FF+2d | 0d |  | F2 | UG-06 | UG-06-S02 | A030 | 22 |
| UG-06-S02-A040 |  | Install sheet piles (shored lengths) |  | 2d | 2026-12-05 | 2026-12-06 | UG-06-S02-A030 SS+2d, UG-06-S02-A030 FF+2d | 0d |  | F2 | UG-06 | UG-06-S02 | A040 | 55.830783 |
| UG-06-S02-A050 |  | Install dewatering and draw down |  | 8d | 2026-12-05 | 2026-12-13 | UG-06-S02-A040 SS+1d, UG-06-S02-A040 FF+2d | 0d |  | F2 | UG-06 | UG-06-S02 | A050 | 27.915391 |
| UG-06-S02-A060 |  | Excavate and strut to formation |  | 1d | 2026-12-15 | 2026-12-15 | UG-06-S02-A050 SS+9d, UG-06-S02-A050 FF+2d | 0d |  | F2 | UG-06 | UG-06-S02 | A060 | 397.885024 |
| UG-06-S02-A070 |  | Trim piles, blinding and piled slab (incl. cure) |  | 5d | 2026-12-16 | 2026-12-21 | UG-06-S02-A060 SS+1d, UG-06-S02-A060 FF+2d | 0d |  | F2 | UG-06 | UG-06-S02 | A070 | 27.915391 |
| UG-06-S02-A080 |  | Lay and joint pipe (incl. fittings, tie-in) |  | 1d | 2026-12-19 | 2026-12-19 | UG-06-S02-A070 SS+2d, UG-06-S02-A070 FF+2d | 0d |  | F2 | UG-06 | UG-06-S02 | A080 | 27.915391 |
| UG-06-S02-A090 |  | Surround, joint test and line test |  | 3d | 2026-12-19 | 2026-12-21 | UG-06-S02-A080 SS+1d, UG-06-S02-A080 FF+2d | 0d |  | F2 | UG-06 | UG-06-S02 | A090 | 27.915391 |
| UG-06-S02-A100 |  | Backfill to NG and remove struts |  | 1d | 2026-12-21 | 2026-12-21 | UG-06-S02-A090 SS+2d, UG-06-S02-A090 FF+2d | 0d |  | F2 | UG-06 | UG-06-S02 | A100 | 241.641772 |
| UG-06-S02-A110 |  | Dewatering off, extract sheets, reinstate |  | 3d | 2026-12-22 | 2026-12-24 | UG-06-S02-A100 SS+1d, UG-06-S02-A100 FF+2d |  |  | F2 | UG-06 | UG-06-S02 | A110 | 55.830783 |

Notes:
- UG-04-S02-A010: Notes: Front F1 / Line UG-04 / Package UG-04-S02 / Workbook logic: gates: START, D_DLU, structure ready
- UG-04-S02-A020: Notes: Front F1 / Line UG-04 / Package UG-04-S02 / Quantity 12 m / Workbook logic: FS from A010; UG-04-S01-A030 (SS, tie-in team follows the adjacent run)
- UG-04-S02-A030: Notes: Front F1 / Line UG-04 / Package UG-04-S02 / Quantity 12 piles / Workbook logic: gate: D_PILEDES
- UG-04-S02-A040: Notes: Front F1 / Line UG-04 / Package UG-04-S02 / Quantity 25 m wall
- UG-04-S02-A050: Notes: Front F1 / Line UG-04 / Package UG-04-S02 / Quantity 12 m
- UG-04-S02-A060: Notes: Front F1 / Line UG-04 / Package UG-04-S02 / Quantity 281 m3 / Workbook logic: UG-03-S04-A060 (SS, shared trench); UG-03-S05-A060 (SS, shared trench)
- UG-04-S02-A070: Notes: Front F1 / Line UG-04 / Package UG-04-S02 / Quantity 12 m
- UG-04-S02-A080: Notes: Front F1 / Line UG-04 / Package UG-04-S02 / Quantity 12 m / Workbook logic: UG-04-S01-A080 (FS, closure)
- UG-04-S02-A090: Notes: Front F1 / Line UG-04 / Package UG-04-S02 / Quantity 12 m
- UG-04-S02-A100: Notes: Front F1 / Line UG-04 / Package UG-04-S02 / Quantity 221 m3 / Workbook logic: UG-03-S04-A080 (FS, shared trench laid); UG-03-S05-A080 (FS, shared trench laid)
- UG-04-S02-A110: Notes: Front F1 / Line UG-04 / Package UG-04-S02 / Quantity 25 m wall
- UG-06-S02-A010: Notes: Front F2 / Line UG-06 / Package UG-06-S02 / Workbook logic: gates: START, D_DLU
- UG-06-S02-A020: Notes: Front F2 / Line UG-06 / Package UG-06-S02 / Quantity 28 m / Workbook logic: FS from A010
- UG-06-S02-A030: Notes: Front F2 / Line UG-06 / Package UG-06-S02 / Quantity 22 piles / Workbook logic: gate: D_PILEDES
- UG-06-S02-A040: Notes: Front F2 / Line UG-06 / Package UG-06-S02 / Quantity 56 m wall
- UG-06-S02-A050: Notes: Front F2 / Line UG-06 / Package UG-06-S02 / Quantity 28 m
- UG-06-S02-A060: Notes: Front F2 / Line UG-06 / Package UG-06-S02 / Quantity 398 m3
- UG-06-S02-A070: Notes: Front F2 / Line UG-06 / Package UG-06-S02 / Quantity 28 m
- UG-06-S02-A080: Notes: Front F2 / Line UG-06 / Package UG-06-S02 / Quantity 28 m
- UG-06-S02-A090: Notes: Front F2 / Line UG-06 / Package UG-06-S02 / Quantity 28 m
- UG-06-S02-A100: Notes: Front F2 / Line UG-06 / Package UG-06-S02 / Quantity 242 m3
- UG-06-S02-A110: Notes: Front F2 / Line UG-06 / Package UG-06-S02 / Quantity 56 m wall

| ID | WBS | Activity | Type | Duration | Start | Finish | Predecessors | Free float | Constraint | Text1 | Text2 | Text3 | Text4 | Number1 |
| --- | --- | --- | --- | --- | --- | --- | --- | --- | --- | --- | --- | --- | --- | --- |
|  | UG-06-S05 | **UG-06-S05 / GRP-UG06-S05-CH278-CHUG25-(-4.13/-4.12)-22m / Run / Sheet piles** |  |  | 2026-12-01 | 2027-05-10 |  |  |  |  |  |  |  |  |
| UG-06-S05-A010 |  | Release: drawings, holds, access and gates | milestone | 0d | 2026-12-01 | 2026-12-01 |  | 39d | start on or after 2026-12-01 | F2 | UG-06 | UG-06-S05 | A010 |  |
| UG-06-S05-A020 |  | Set-out, crossing survey and working platform |  | 1d | 2027-01-16 | 2027-01-16 | UG-06-S05-A010, UG-26-S01-A030 SS | 33d |  | F2 | UG-06 | UG-06-S05 | A020 | 22.107202 |
| UG-06-S05-A030 |  | Pipe-support piling from platform (incl. integrity tests) |  | 2d | 2027-02-24 | 2027-02-25 | UG-06-S05-A020 SS+1d, UG-06-S05-A020 FF+2d, UG-26-S01-A030 | 0d |  | F2 | UG-06 | UG-06-S05 | A030 | 18 |
| UG-06-S05-A040 |  | Install sheet piles (shored lengths) |  | 1d | 2027-02-27 | 2027-02-27 | UG-06-S05-A030 SS+1d, UG-06-S05-A030 FF+2d, UG-26-S01-A040 | 0d |  | F2 | UG-06 | UG-06-S05 | A040 | 44.214404 |
| UG-06-S05-A050 |  | Install dewatering and draw down |  | 8d | 2027-02-28 | 2027-03-08 | UG-06-S05-A040 SS+1d, UG-06-S05-A040 FF+2d, UG-26-S01-A060 FS-8d | 0d |  | F2 | UG-06 | UG-06-S05 | A050 | 22.107202 |
| UG-06-S05-A060 |  | Excavate and strut to formation |  | 1d | 2027-03-10 | 2027-03-10 | UG-06-S05-A050 SS+9d, UG-06-S05-A050 FF+2d, UG-25-S01-A060 SS, UG-26-S01-A060 SS, UG-26-S01-A060 | 5d |  | F2 | UG-06 | UG-06-S05 | A060 | 321.738939 |
| UG-06-S05-A070 |  | Trim piles, blinding and piled slab (incl. cure) |  | 4d | 2027-03-24 | 2027-03-28 | UG-06-S05-A060 SS+1d, UG-06-S05-A060 FF+2d, UG-26-S01-A070 | 0d |  | F2 | UG-06 | UG-06-S05 | A070 | 22.107202 |
| UG-06-S05-A080 |  | Lay and joint pipe (incl. fittings, tie-in) |  | 1d | 2027-03-27 | 2027-03-27 | UG-06-S05-A070 SS+2d, UG-06-S05-A070 FF+2d, UG-26-S01-A080 | 0d |  | F2 | UG-06 | UG-06-S05 | A080 | 22.107202 |
| UG-06-S05-A090 |  | Surround, joint test and line test |  | 3d | 2027-03-27 | 2027-03-29 | UG-06-S05-A080 SS+1d, UG-06-S05-A080 FF+2d | 32d |  | F2 | UG-06 | UG-06-S05 | A090 | 22.107202 |
| UG-06-S05-A100 |  | Backfill to NG and remove struts |  | 1d | 2027-05-08 | 2027-05-08 | UG-06-S05-A090 SS+2d, UG-06-S05-A090 FF+2d, UG-05-S04-A080, UG-05-S05-A080, UG-25-S01-A080, UG-26-S01-A080, UG-26-S01-A100 | 0d |  | F2 | UG-06 | UG-06-S05 | A100 | 198.003905 |
| UG-06-S05-A110 |  | Dewatering off, extract sheets, reinstate |  | 2d | 2027-05-09 | 2027-05-10 | UG-06-S05-A100 SS+1d, UG-06-S05-A100 FF+2d |  |  | F2 | UG-06 | UG-06-S05 | A110 | 44.214404 |
|  | UG-06-S04 | **UG-06-S04 / GRP-UG06-S04-CH147-CH278-(-4.13/-4.13)-130m / Run / Sheet piles** |  |  | 2026-12-01 | 2027-05-26 |  |  |  |  |  |  |  |  |
| UG-06-S04-A010 |  | Release: drawings, holds, access and gates | milestone | 0d | 2026-12-01 | 2026-12-01 |  | 73d | start on or after 2026-12-01 | F2 | UG-06 | UG-06-S04 | A010 |  |
| UG-06-S04-A020 |  | Set-out, crossing survey and working platform |  | 2d | 2027-02-24 | 2027-02-25 | UG-06-S04-A010, UG-06-S05-A030 SS | 1d |  | F2 | UG-06 | UG-06-S04 | A020 | 130.4 |
| UG-06-S04-A030 |  | Pipe-support piling from platform (incl. integrity tests) |  | 9d | 2027-02-27 | 2027-03-08 | UG-06-S04-A020 SS+1d, UG-06-S04-A020 FF+2d, UG-06-S05-A030 | 0d |  | F2 | UG-06 | UG-06-S04 | A030 | 90 |
| UG-06-S04-A040 |  | Install sheet piles (shored lengths) |  | 6d | 2027-03-03 | 2027-03-09 | UG-06-S04-A030 SS+3d, UG-06-S04-A030 FF+2d, UG-06-S05-A040 | 0d |  | F2 | UG-06 | UG-06-S04 | A040 | 260.8 |
| UG-06-S04-A050 |  | Install dewatering and draw down |  | 11d | 2027-03-06 | 2027-03-17 | UG-06-S04-A040 SS+3d, UG-06-S04-A040 FF+2d, UG-06-S05-A060 FS-11d | 1d |  | F2 | UG-06 | UG-06-S04 | A050 | 130.4 |
| UG-06-S04-A060 |  | Excavate and strut to formation |  | 4d | 2027-03-17 | 2027-03-21 | UG-06-S04-A050 SS+9d, UG-06-S04-A050 FF+2d, UG-06-S05-A060 | 0d |  | F2 | UG-06 | UG-06-S04 | A060 | 1900.375383 |
| UG-06-S04-A070 |  | Trim piles, blinding and piled slab (incl. cure) |  | 9d | 2027-03-29 | 2027-04-07 | UG-06-S04-A060 SS+2d, UG-06-S04-A060 FF+2d, UG-06-S05-A070 | 0d |  | F2 | UG-06 | UG-06-S04 | A070 | 130.4 |
| UG-06-S04-A080 |  | Lay and joint pipe (incl. fittings, tie-in) |  | 4d | 2027-04-03 | 2027-04-06 | UG-06-S04-A070 SS+3d, UG-06-S04-A070 FF+2d, UG-06-S05-A080 | 0d |  | F2 | UG-06 | UG-06-S04 | A080 | 130.4 |
| UG-06-S04-A090 |  | Surround, joint test and line test |  | 3d | 2027-04-04 | 2027-04-06 | UG-06-S04-A080 SS+2d, UG-06-S04-A080 FF+2d | 35d |  | F2 | UG-06 | UG-06-S04 | A090 | 130.4 |
| UG-06-S04-A100 |  | Backfill to NG and remove struts |  | 2d | 2027-05-18 | 2027-05-19 | UG-06-S04-A090 SS+2d, UG-06-S04-A090 FF+2d, UG-05-S03-A080, UG-05-S04-A080, UG-05-S05-A080, UG-06-S05-A100 | 0d |  | F2 | UG-06 | UG-06-S04 | A100 | 1170.520543 |
| UG-06-S04-A110 |  | Dewatering off, extract sheets, reinstate |  | 7d | 2027-05-19 | 2027-05-26 | UG-06-S04-A100 SS+1d, UG-06-S04-A100 FF+2d |  |  | F2 | UG-06 | UG-06-S04 | A110 | 260.8 |

Notes:
- UG-06-S05-A010: Notes: Front F2 / Line UG-06 / Package UG-06-S05 / Workbook logic: gates: START, D_DLU
- UG-06-S05-A020: Notes: Front F2 / Line UG-06 / Package UG-06-S05 / Quantity 22 m / Workbook logic: FS from A010; UG-26-S01-A030 (SS, set-out one package ahead of piling)
- UG-06-S05-A030: Notes: Front F2 / Line UG-06 / Package UG-06-S05 / Quantity 18 piles / Workbook logic: gate: D_PILEDES
- UG-06-S05-A040: Notes: Front F2 / Line UG-06 / Package UG-06-S05 / Quantity 44 m wall
- UG-06-S05-A050: Notes: Front F2 / Line UG-06 / Package UG-06-S05 / Quantity 22 m / Workbook logic: UG-26-S01-A060 (FS, negative lag = own duration: drawdown complete when the excavation crew is free)
- UG-06-S05-A060: Notes: Front F2 / Line UG-06 / Package UG-06-S05 / Quantity 322 m3 / Workbook logic: UG-25-S01-A060 (SS, shared trench); UG-26-S01-A060 (SS, shared trench)
- UG-06-S05-A070: Notes: Front F2 / Line UG-06 / Package UG-06-S05 / Quantity 22 m
- UG-06-S05-A080: Notes: Front F2 / Line UG-06 / Package UG-06-S05 / Quantity 22 m
- UG-06-S05-A090: Notes: Front F2 / Line UG-06 / Package UG-06-S05 / Quantity 22 m
- UG-06-S05-A100: Notes: Front F2 / Line UG-06 / Package UG-06-S05 / Quantity 198 m3 / Workbook logic: UG-05-S04-A080 (FS, shared trench laid); UG-05-S05-A080 (FS, shared trench laid); UG-25-S01-A080 (FS, shared trench laid); UG-26-S01-A080 (FS, shared trench laid)
- UG-06-S05-A110: Notes: Front F2 / Line UG-06 / Package UG-06-S05 / Quantity 44 m wall
- UG-06-S04-A010: Notes: Front F2 / Line UG-06 / Package UG-06-S04 / Workbook logic: gates: START, D_DLU
- UG-06-S04-A020: Notes: Front F2 / Line UG-06 / Package UG-06-S04 / Quantity 130 m / Workbook logic: FS from A010; UG-06-S05-A030 (SS, set-out one package ahead of piling)
- UG-06-S04-A030: Notes: Front F2 / Line UG-06 / Package UG-06-S04 / Quantity 90 piles / Workbook logic: gate: D_PILEDES
- UG-06-S04-A040: Notes: Front F2 / Line UG-06 / Package UG-06-S04 / Quantity 261 m wall
- UG-06-S04-A050: Notes: Front F2 / Line UG-06 / Package UG-06-S04 / Quantity 130 m / Workbook logic: UG-06-S05-A060 (FS, negative lag = own duration: drawdown complete when the excavation crew is free)
- UG-06-S04-A060: Notes: Front F2 / Line UG-06 / Package UG-06-S04 / Quantity 1,900 m3
- UG-06-S04-A070: Notes: Front F2 / Line UG-06 / Package UG-06-S04 / Quantity 130 m
- UG-06-S04-A080: Notes: Front F2 / Line UG-06 / Package UG-06-S04 / Quantity 130 m
- UG-06-S04-A090: Notes: Front F2 / Line UG-06 / Package UG-06-S04 / Quantity 130 m
- UG-06-S04-A100: Notes: Front F2 / Line UG-06 / Package UG-06-S04 / Quantity 1,171 m3 / Workbook logic: UG-05-S03-A080 (FS, shared trench laid); UG-05-S04-A080 (FS, shared trench laid); UG-05-S05-A080 (FS, shared trench laid)
- UG-06-S04-A110: Notes: Front F2 / Line UG-06 / Package UG-06-S04 / Quantity 261 m wall

| ID | WBS | Activity | Type | Duration | Start | Finish | Predecessors | Free float | Constraint | Text1 | Text2 | Text3 | Text4 | Number1 |
| --- | --- | --- | --- | --- | --- | --- | --- | --- | --- | --- | --- | --- | --- | --- |
|  | UG-06-S03 | **UG-06-S03 / GRP-UG06-S03-CH049-CH147-(-4.05/-4.13)-98m / Run / Sheet piles** |  |  | 2026-12-01 | 2027-05-31 |  |  |  |  |  |  |  |  |
| UG-06-S03-A010 |  | Release: drawings, holds, access and gates | milestone | 0d | 2026-12-01 | 2026-12-01 |  | 85d | start on or after 2026-12-01 | F2 | UG-06 | UG-06-S03 | A010 |  |
| UG-06-S03-A020 |  | Set-out, crossing survey and working platform |  | 2d | 2027-03-10 | 2027-03-11 | UG-06-S03-A010, UG-05-S05-A030 SS | 1d |  | F2 | UG-06 | UG-06-S03 | A020 | 98.3 |
| UG-06-S03-A030 |  | Pipe-support piling from platform (incl. integrity tests) |  | 7d | 2027-03-13 | 2027-03-20 | UG-06-S03-A020 SS+1d, UG-06-S03-A020 FF+2d, UG-05-S05-A030 | 0d |  | F2 | UG-06 | UG-06-S03 | A030 | 68 |
| UG-06-S03-A040 |  | Install sheet piles (shored lengths) |  | 4d | 2027-03-16 | 2027-03-20 | UG-06-S03-A030 SS+3d, UG-06-S03-A030 FF+2d, UG-05-S05-A040 | 0d |  | F2 | UG-06 | UG-06-S03 | A040 | 196.6 |
| UG-06-S03-A050 |  | Install dewatering and draw down |  | 10d | 2027-03-18 | 2027-03-29 | UG-06-S03-A040 SS+2d, UG-06-S03-A040 FF+2d, UG-05-S05-A060 FS-10d | 0d |  | F2 | UG-06 | UG-06-S03 | A050 | 98.3 |
| UG-06-S03-A060 |  | Excavate and strut to formation |  | 3d | 2027-03-28 | 2027-03-30 | UG-06-S03-A050 SS+9d, UG-06-S03-A050 FF+2d, UG-05-S05-A060 | 7d |  | F2 | UG-06 | UG-06-S03 | A060 | 1408.203985 |
| UG-06-S03-A070 |  | Trim piles, blinding and piled slab (incl. cure) |  | 8d | 2027-04-15 | 2027-04-24 | UG-06-S03-A060 SS+2d, UG-06-S03-A060 FF+2d, UG-05-S05-A070 | 0d |  | F2 | UG-06 | UG-06-S03 | A070 | 98.3 |
| UG-06-S03-A080 |  | Lay and joint pipe (incl. fittings, tie-in) |  | 6d | 2027-04-18 | 2027-04-24 | UG-06-S03-A070 SS+3d, UG-06-S03-A070 FF+2d, UG-05-S05-A080 | 0d |  | F2 | UG-06 | UG-06-S03 | A080 | 98.3 |
| UG-06-S03-A090 |  | Surround, joint test and line test |  | 3d | 2027-04-21 | 2027-04-24 | UG-06-S03-A080 SS+3d, UG-06-S03-A080 FF+2d | 26d |  | F2 | UG-06 | UG-06-S03 | A090 | 98.3 |
| UG-06-S03-A100 |  | Backfill to NG and remove struts |  | 2d | 2027-05-25 | 2027-05-26 | UG-06-S03-A090 SS+2d, UG-06-S03-A090 FF+2d, UG-05-S02-A080, UG-05-S03-A080, UG-05-S04-A080, UG-05-S05-A100 | 0d |  | F2 | UG-06 | UG-06-S03 | A100 | 858.016035 |
| UG-06-S03-A110 |  | Dewatering off, extract sheets, reinstate |  | 5d | 2027-05-26 | 2027-05-31 | UG-06-S03-A100 SS+1d, UG-06-S03-A100 FF+2d |  |  | F2 | UG-06 | UG-06-S03 | A110 | 196.6 |
|  | UG-06-S01 | **UG-06-S01 / GRP-UG06-S01-IPS-EL021-(-4.07/-4.05)-21m / Tie-in / Sheet piles** |  |  | 2026-12-01 | 2027-06-01 |  |  |  |  |  |  |  |  |
| UG-06-S01-A010 |  | Release: drawings, holds, access and gates | milestone | 0d | 2026-12-01 | 2026-12-01 |  | 1d | start on or after 2026-12-01 | F2 | UG-06 | UG-06-S01 | A010 |  |
| UG-06-S01-A020 |  | Set-out, crossing survey and working platform |  | 1d | 2026-12-02 | 2026-12-02 | UG-06-S01-A010, UG-06-S02-A030 SS | 0d |  | F2 | UG-06 | UG-06-S01 | A020 | 21.184609 |
| UG-06-S01-A030 |  | Pipe-support piling from platform (incl. integrity tests) |  | 2d | 2026-12-03 | 2026-12-05 | UG-06-S01-A020 SS+1d, UG-06-S01-A020 FF+2d | 0d |  | F2 | UG-06 | UG-06-S01 | A030 | 18 |
| UG-06-S01-A040 |  | Install sheet piles (shored lengths) |  | 1d | 2026-12-05 | 2026-12-05 | UG-06-S01-A030 SS+1d, UG-06-S01-A030 FF+2d | 0d |  | F2 | UG-06 | UG-06-S01 | A040 | 42.369217 |
| UG-06-S01-A050 |  | Install dewatering and draw down |  | 8d | 2026-12-05 | 2026-12-13 | UG-06-S01-A040 SS+1d, UG-06-S01-A040 FF+2d | 0d |  | F2 | UG-06 | UG-06-S01 | A050 | 21.184609 |
| UG-06-S01-A060 |  | Excavate and strut to formation |  | 1d | 2026-12-15 | 2026-12-15 | UG-06-S01-A050 SS+9d, UG-06-S01-A050 FF+2d | 0d |  | F2 | UG-06 | UG-06-S01 | A060 | 303.281026 |
| UG-06-S01-A070 |  | Trim piles, blinding and piled slab (incl. cure) |  | 4d | 2026-12-16 | 2026-12-20 | UG-06-S01-A060 SS+1d, UG-06-S01-A060 FF+2d | 5d |  | F2 | UG-06 | UG-06-S01 | A070 | 21.184609 |
| UG-06-S01-A080 |  | Lay and joint pipe (incl. fittings, tie-in) |  | 6d | 2026-12-24 | 2026-12-30 | UG-06-S01-A070 SS+2d, UG-06-S01-A070 FF+2d, UG-06-S02-A080 | 0d |  | F2 | UG-06 | UG-06-S01 | A080 | 21.184609 |
| UG-06-S01-A090 |  | Surround, joint test and line test |  | 3d | 2026-12-27 | 2026-12-29 | UG-06-S01-A080 SS+3d, UG-06-S01-A080 FF+2d | 128d |  | F2 | UG-06 | UG-06-S01 | A090 | 21.184609 |
| UG-06-S01-A100 |  | Backfill to NG and remove struts |  | 1d | 2027-05-30 | 2027-05-30 | UG-06-S01-A090 SS+2d, UG-06-S01-A090 FF+2d, UG-05-S01-A080 | 0d |  | F2 | UG-06 | UG-06-S01 | A100 | 183.727346 |
| UG-06-S01-A110 |  | Dewatering off, extract sheets, reinstate |  | 2d | 2027-05-31 | 2027-06-01 | UG-06-S01-A100 SS+1d, UG-06-S01-A100 FF+2d |  |  | F2 | UG-06 | UG-06-S01 | A110 | 42.369217 |

Notes:
- UG-06-S03-A010: Notes: Front F2 / Line UG-06 / Package UG-06-S03 / Workbook logic: gates: START, D_DLU
- UG-06-S03-A020: Notes: Front F2 / Line UG-06 / Package UG-06-S03 / Quantity 98 m / Workbook logic: FS from A010; UG-05-S05-A030 (SS, set-out one package ahead of piling)
- UG-06-S03-A030: Notes: Front F2 / Line UG-06 / Package UG-06-S03 / Quantity 68 piles / Workbook logic: gate: D_PILEDES
- UG-06-S03-A040: Notes: Front F2 / Line UG-06 / Package UG-06-S03 / Quantity 197 m wall
- UG-06-S03-A050: Notes: Front F2 / Line UG-06 / Package UG-06-S03 / Quantity 98 m / Workbook logic: UG-05-S05-A060 (FS, negative lag = own duration: drawdown complete when the excavation crew is free)
- UG-06-S03-A060: Notes: Front F2 / Line UG-06 / Package UG-06-S03 / Quantity 1,408 m3
- UG-06-S03-A070: Notes: Front F2 / Line UG-06 / Package UG-06-S03 / Quantity 98 m
- UG-06-S03-A080: Notes: Front F2 / Line UG-06 / Package UG-06-S03 / Quantity 98 m
- UG-06-S03-A090: Notes: Front F2 / Line UG-06 / Package UG-06-S03 / Quantity 98 m
- UG-06-S03-A100: Notes: Front F2 / Line UG-06 / Package UG-06-S03 / Quantity 858 m3 / Workbook logic: UG-05-S02-A080 (FS, shared trench laid); UG-05-S03-A080 (FS, shared trench laid); UG-05-S04-A080 (FS, shared trench laid)
- UG-06-S03-A110: Notes: Front F2 / Line UG-06 / Package UG-06-S03 / Quantity 197 m wall
- UG-06-S01-A010: Notes: Front F2 / Line UG-06 / Package UG-06-S01 / Workbook logic: gates: START, D_DLU, structure ready
- UG-06-S01-A020: Notes: Front F2 / Line UG-06 / Package UG-06-S01 / Quantity 21 m / Workbook logic: FS from A010; UG-06-S02-A030 (SS, tie-in team follows the adjacent run)
- UG-06-S01-A030: Notes: Front F2 / Line UG-06 / Package UG-06-S01 / Quantity 18 piles / Workbook logic: gate: D_PILEDES
- UG-06-S01-A040: Notes: Front F2 / Line UG-06 / Package UG-06-S01 / Quantity 42 m wall
- UG-06-S01-A050: Notes: Front F2 / Line UG-06 / Package UG-06-S01 / Quantity 21 m
- UG-06-S01-A060: Notes: Front F2 / Line UG-06 / Package UG-06-S01 / Quantity 303 m3
- UG-06-S01-A070: Notes: Front F2 / Line UG-06 / Package UG-06-S01 / Quantity 21 m
- UG-06-S01-A080: Notes: Front F2 / Line UG-06 / Package UG-06-S01 / Quantity 21 m / Workbook logic: UG-06-S02-A080 (FS, closure)
- UG-06-S01-A090: Notes: Front F2 / Line UG-06 / Package UG-06-S01 / Quantity 21 m
- UG-06-S01-A100: Notes: Front F2 / Line UG-06 / Package UG-06-S01 / Quantity 184 m3 / Workbook logic: UG-05-S01-A080 (FS, shared trench laid)
- UG-06-S01-A110: Notes: Front F2 / Line UG-06 / Package UG-06-S01 / Quantity 42 m wall

| ID | WBS | Activity | Type | Duration | Start | Finish | Predecessors | Free float | Constraint | Text1 | Text2 | Text3 | Text4 | Number1 |
| --- | --- | --- | --- | --- | --- | --- | --- | --- | --- | --- | --- | --- | --- | --- |
|  | UG-25 | **UG-25** |  |  | 2026-12-01 | 2027-05-13 |  |  |  |  |  |  |  |  |
|  | UG-25-S01 | **UG-25-S01 / GRP-UG25-S01-BYPCH-OUTF-(-4.55/-4.70)-495m / Run / Sheet piles** |  |  | 2026-12-01 | 2027-05-13 |  |  |  |  |  |  |  |  |
| UG-25-S01-A010 |  | Release: drawings, holds, access and gates | milestone | 0d | 2026-12-01 | 2026-12-01 |  | 1d | start on or after 2026-12-01 | F2 | UG-25 | UG-25-S01 | A010 |  |
| UG-25-S01-A020 |  | Set-out, crossing survey and working platform |  | 7d | 2026-12-02 | 2026-12-09 | UG-25-S01-A010, UG-06-S02-A030 SS | 0d |  | F2 | UG-25 | UG-25-S01 | A020 | 495.217183 |
| UG-25-S01-A030 |  | Pipe-support piling from platform (incl. integrity tests) |  | 34d | 2026-12-06 | 2027-01-13 | UG-25-S01-A020 SS+3d, UG-25-S01-A020 FF+2d, UG-06-S02-A030 | 0d |  | F2 | UG-25 | UG-25-S01 | A030 | 334 |
| UG-25-S01-A040 |  | Install sheet piles (shored lengths) |  | 20d | 2026-12-19 | 2027-01-10 | UG-25-S01-A030 SS+10d, UG-25-S01-A030 FF+2d, UG-06-S02-A040 | 0d |  | F2 | UG-25 | UG-25-S01 | A040 | 990.434367 |
| UG-25-S01-A050 |  | Install dewatering and draw down |  | 20d | 2026-12-26 | 2027-01-17 | UG-25-S01-A040 SS+7d, UG-25-S01-A040 FF+2d, UG-06-S02-A060 FS-20d | 0d |  | F2 | UG-25 | UG-25-S01 | A050 | 495.217183 |
| UG-25-S01-A060 |  | Excavate and strut to formation |  | 18d | 2027-01-09 | 2027-01-28 | UG-25-S01-A050 SS+12d, UG-25-S01-A050 FF+2d, UG-06-S02-A060 | 0d |  | F2 | UG-25 | UG-25-S01 | A060 | 8609.066514 |
| UG-25-S01-A070 |  | Trim piles, blinding and piled slab (incl. cure) |  | 24d | 2027-01-16 | 2027-02-11 | UG-25-S01-A060 SS+6d, UG-25-S01-A060 FF+2d, UG-06-S02-A070 | 0d |  | F2 | UG-25 | UG-25-S01 | A070 | 495.217183 |
| UG-25-S01-A080 |  | Lay and joint pipe (incl. fittings, tie-in) |  | 18d | 2027-01-25 | 2027-02-14 | UG-25-S01-A070 SS+8d, UG-25-S01-A070 FF+2d, UG-06-S02-A080 | 0d |  | F2 | UG-25 | UG-25-S01 | A080 | 495.217183 |
| UG-25-S01-A090 |  | Surround, joint test and line test |  | 6d | 2027-02-01 | 2027-02-07 | UG-25-S01-A080 SS+6d, UG-25-S01-A080 FF+2d | 61d |  | F2 | UG-25 | UG-25-S01 | A090 | 495.217183 |
| UG-25-S01-A100 |  | Backfill to NG and remove struts |  | 8d | 2027-04-17 | 2027-04-25 | UG-25-S01-A090 SS+3d, UG-25-S01-A090 FF+2d, UG-05-S05-A080, UG-06-S05-A080, UG-26-S01-A080, UG-06-S02-A100 | 0d |  | F2 | UG-25 | UG-25-S01 | A100 | 5350.109725 |
| UG-25-S01-A110 |  | Dewatering off, extract sheets, reinstate |  | 21d | 2027-04-20 | 2027-05-13 | UG-25-S01-A100 SS+3d, UG-25-S01-A100 FF+2d |  |  | F2 | UG-25 | UG-25-S01 | A110 | 990.434367 |
|  | UG-26 | **UG-26** |  |  | 2026-12-01 | 2027-05-24 |  |  |  |  |  |  |  |  |
|  | UG-26-S01 | **UG-26-S01 / GRP-UG26-S01-BYPCH-OUTF-(-4.19/-4.56)-496m / Run / Sheet piles** |  |  | 2026-12-01 | 2027-05-24 |  |  |  |  |  |  |  |  |
| UG-26-S01-A010 |  | Release: drawings, holds, access and gates | milestone | 0d | 2026-12-01 | 2026-12-01 |  | 4d | start on or after 2026-12-01 | F2 | UG-26 | UG-26-S01 | A010 |  |
| UG-26-S01-A020 |  | Set-out, crossing survey and working platform |  | 7d | 2026-12-06 | 2026-12-13 | UG-26-S01-A010, UG-25-S01-A030 SS | 32d |  | F2 | UG-26 | UG-26-S01 | A020 | 495.714577 |
| UG-26-S01-A030 |  | Pipe-support piling from platform (incl. integrity tests) |  | 34d | 2027-01-16 | 2027-02-23 | UG-26-S01-A020 SS+3d, UG-26-S01-A020 FF+2d, UG-25-S01-A030 | 0d |  | F2 | UG-26 | UG-26-S01 | A030 | 334 |
| UG-26-S01-A040 |  | Install sheet piles (shored lengths) |  | 20d | 2027-01-27 | 2027-02-18 | UG-26-S01-A030 SS+10d, UG-26-S01-A030 FF+2d, UG-25-S01-A040 | 0d |  | F2 | UG-26 | UG-26-S01 | A040 | 991.429153 |
| UG-26-S01-A050 |  | Install dewatering and draw down |  | 20d | 2027-02-04 | 2027-02-27 | UG-26-S01-A040 SS+7d, UG-26-S01-A040 FF+2d, UG-25-S01-A060 FS-20d | 0d |  | F2 | UG-26 | UG-26-S01 | A050 | 495.714577 |
| UG-26-S01-A060 |  | Excavate and strut to formation |  | 17d | 2027-02-18 | 2027-03-09 | UG-26-S01-A050 SS+12d, UG-26-S01-A050 FF+2d, UG-25-S01-A060 SS, UG-25-S01-A060 | 0d |  | F2 | UG-26 | UG-26-S01 | A060 | 8189.584319 |
| UG-26-S01-A070 |  | Trim piles, blinding and piled slab (incl. cure) |  | 24d | 2027-02-24 | 2027-03-23 | UG-26-S01-A060 SS+5d, UG-26-S01-A060 FF+2d, UG-25-S01-A070 | 0d |  | F2 | UG-26 | UG-26-S01 | A070 | 495.714577 |
| UG-26-S01-A080 |  | Lay and joint pipe (incl. fittings, tie-in) |  | 16d | 2027-03-06 | 2027-03-23 | UG-26-S01-A070 SS+8d, UG-26-S01-A070 FF+2d, UG-25-S01-A080 | 0d |  | F2 | UG-26 | UG-26-S01 | A080 | 495.714577 |
| UG-26-S01-A090 |  | Surround, joint test and line test |  | 6d | 2027-03-11 | 2027-03-17 | UG-26-S01-A080 SS+5d, UG-26-S01-A080 FF+2d | 37d |  | F2 | UG-26 | UG-26-S01 | A090 | 495.714577 |
| UG-26-S01-A100 |  | Backfill to NG and remove struts |  | 8d | 2027-04-27 | 2027-05-05 | UG-26-S01-A090 SS+3d, UG-26-S01-A090 FF+2d, UG-05-S05-A080, UG-06-S05-A080, UG-25-S01-A080, UG-25-S01-A100 | 0d |  | F2 | UG-26 | UG-26-S01 | A100 | 4924.648286 |
| UG-26-S01-A110 |  | Dewatering off, extract sheets, reinstate |  | 21d | 2027-05-01 | 2027-05-24 | UG-26-S01-A100 SS+3d, UG-26-S01-A100 FF+2d |  |  | F2 | UG-26 | UG-26-S01 | A110 | 991.429153 |

Notes:
- UG-25-S01-A010: Notes: Front F2 / Line UG-25 / Package UG-25-S01 / Workbook logic: gates: START, D_DLU
- UG-25-S01-A020: Notes: Front F2 / Line UG-25 / Package UG-25-S01 / Quantity 495 m / Workbook logic: FS from A010; UG-06-S02-A030 (SS, set-out one package ahead of piling)
- UG-25-S01-A030: Notes: Front F2 / Line UG-25 / Package UG-25-S01 / Quantity 334 piles / Workbook logic: gate: D_PILEDES
- UG-25-S01-A040: Notes: Front F2 / Line UG-25 / Package UG-25-S01 / Quantity 990 m wall
- UG-25-S01-A050: Notes: Front F2 / Line UG-25 / Package UG-25-S01 / Quantity 495 m / Workbook logic: UG-06-S02-A060 (FS, negative lag = own duration: drawdown complete when the excavation crew is free)
- UG-25-S01-A060: Notes: Front F2 / Line UG-25 / Package UG-25-S01 / Quantity 8,609 m3
- UG-25-S01-A070: Notes: Front F2 / Line UG-25 / Package UG-25-S01 / Quantity 495 m
- UG-25-S01-A080: Notes: Front F2 / Line UG-25 / Package UG-25-S01 / Quantity 495 m
- UG-25-S01-A090: Notes: Front F2 / Line UG-25 / Package UG-25-S01 / Quantity 495 m
- UG-25-S01-A100: Notes: Front F2 / Line UG-25 / Package UG-25-S01 / Quantity 5,350 m3 / Workbook logic: UG-05-S05-A080 (FS, shared trench laid); UG-06-S05-A080 (FS, shared trench laid); UG-26-S01-A080 (FS, shared trench laid)
- UG-25-S01-A110: Notes: Front F2 / Line UG-25 / Package UG-25-S01 / Quantity 990 m wall
- UG-26-S01-A010: Notes: Front F2 / Line UG-26 / Package UG-26-S01 / Workbook logic: gates: START, D_DLU
- UG-26-S01-A020: Notes: Front F2 / Line UG-26 / Package UG-26-S01 / Quantity 496 m / Workbook logic: FS from A010; UG-25-S01-A030 (SS, set-out one package ahead of piling)
- UG-26-S01-A030: Notes: Front F2 / Line UG-26 / Package UG-26-S01 / Quantity 334 piles / Workbook logic: gate: D_PILEDES
- UG-26-S01-A040: Notes: Front F2 / Line UG-26 / Package UG-26-S01 / Quantity 991 m wall
- UG-26-S01-A050: Notes: Front F2 / Line UG-26 / Package UG-26-S01 / Quantity 496 m / Workbook logic: UG-25-S01-A060 (FS, negative lag = own duration: drawdown complete when the excavation crew is free)
- UG-26-S01-A060: Notes: Front F2 / Line UG-26 / Package UG-26-S01 / Quantity 8,190 m3 / Workbook logic: UG-25-S01-A060 (SS, shared trench)
- UG-26-S01-A070: Notes: Front F2 / Line UG-26 / Package UG-26-S01 / Quantity 496 m
- UG-26-S01-A080: Notes: Front F2 / Line UG-26 / Package UG-26-S01 / Quantity 496 m
- UG-26-S01-A090: Notes: Front F2 / Line UG-26 / Package UG-26-S01 / Quantity 496 m
- UG-26-S01-A100: Notes: Front F2 / Line UG-26 / Package UG-26-S01 / Quantity 4,925 m3 / Workbook logic: UG-05-S05-A080 (FS, shared trench laid); UG-06-S05-A080 (FS, shared trench laid); UG-25-S01-A080 (FS, shared trench laid)
- UG-26-S01-A110: Notes: Front F2 / Line UG-26 / Package UG-26-S01 / Quantity 991 m wall

| ID | WBS | Activity | Type | Duration | Start | Finish | Predecessors | Free float | Constraint | Text1 | Text2 | Text3 | Text4 | Number1 |
| --- | --- | --- | --- | --- | --- | --- | --- | --- | --- | --- | --- | --- | --- | --- |
|  | UG-05 | **UG-05** |  |  | 2026-12-01 | 2027-07-14 |  |  |  |  |  |  |  |  |
|  | UG-05-S05 | **UG-05-S05 / GRP-UG05-S05-CH282-CHUG25-(-4.12/-4.12)-25m / Run / Sheet piles** |  |  | 2026-12-01 | 2027-05-24 |  |  |  |  |  |  |  |  |
| UG-05-S05-A010 |  | Release: drawings, holds, access and gates | milestone | 0d | 2026-12-01 | 2026-12-01 |  | 75d | start on or after 2026-12-01 | F2 | UG-05 | UG-05-S05 | A010 |  |
| UG-05-S05-A020 |  | Set-out, crossing survey and working platform |  | 1d | 2027-02-27 | 2027-02-27 | UG-05-S05-A010, UG-06-S04-A030 SS | 9d |  | F2 | UG-05 | UG-05-S05 | A020 | 25.017434 |
| UG-05-S05-A030 |  | Pipe-support piling from platform (incl. integrity tests) |  | 2d | 2027-03-10 | 2027-03-11 | UG-05-S05-A020 SS+1d, UG-05-S05-A020 FF+2d, UG-06-S04-A030 | 0d |  | F2 | UG-05 | UG-05-S05 | A030 | 20 |
| UG-05-S05-A040 |  | Install sheet piles (shored lengths) |  | 2d | 2027-03-13 | 2027-03-14 | UG-05-S05-A030 SS+1d, UG-05-S05-A030 FF+2d, UG-06-S04-A040 | 0d |  | F2 | UG-05 | UG-05-S05 | A040 | 50.034868 |
| UG-05-S05-A050 |  | Install dewatering and draw down |  | 8d | 2027-03-13 | 2027-03-21 | UG-05-S05-A040 SS+1d, UG-05-S05-A040 FF+2d, UG-06-S04-A060 FS-8d | 0d |  | F2 | UG-05 | UG-05-S05 | A050 | 25.017434 |
| UG-05-S05-A060 |  | Excavate and strut to formation |  | 1d | 2027-03-23 | 2027-03-23 | UG-05-S05-A050 SS+9d, UG-05-S05-A050 FF+2d, UG-06-S04-A060 SS, UG-06-S05-A060 SS, UG-25-S01-A060 SS, UG-26-S01-A060 SS, UG-06-S04-A060 | 3d |  | F2 | UG-05 | UG-05-S05 | A060 | 363.941704 |
| UG-05-S05-A070 |  | Trim piles, blinding and piled slab (incl. cure) |  | 5d | 2027-04-10 | 2027-04-14 | UG-05-S05-A060 SS+1d, UG-05-S05-A060 FF+2d, UG-06-S04-A070 | 0d |  | F2 | UG-05 | UG-05-S05 | A070 | 25.017434 |
| UG-05-S05-A080 |  | Lay and joint pipe (incl. fittings, tie-in) |  | 1d | 2027-04-11 | 2027-04-11 | UG-05-S05-A070 SS+2d, UG-05-S05-A070 FF+2d, UG-06-S04-A080 | 0d |  | F2 | UG-05 | UG-05-S05 | A080 | 25.017434 |
| UG-05-S05-A090 |  | Surround, joint test and line test |  | 3d | 2027-04-12 | 2027-04-14 | UG-05-S05-A080 SS+1d, UG-05-S05-A080 FF+2d | 30d |  | F2 | UG-05 | UG-05-S05 | A090 | 25.017434 |
| UG-05-S05-A100 |  | Backfill to NG and remove struts |  | 1d | 2027-05-22 | 2027-05-22 | UG-05-S05-A090 SS+2d, UG-05-S05-A090 FF+2d, UG-06-S04-A080, UG-06-S05-A080, UG-25-S01-A080, UG-26-S01-A080, UG-06-S04-A100 | 0d |  | F2 | UG-05 | UG-05-S05 | A100 | 223.917967 |
| UG-05-S05-A110 |  | Dewatering off, extract sheets, reinstate |  | 3d | 2027-05-22 | 2027-05-24 | UG-05-S05-A100 SS+1d, UG-05-S05-A100 FF+2d |  |  | F2 | UG-05 | UG-05-S05 | A110 | 50.034868 |
|  | UG-05-S04 | **UG-05-S04 / GRP-UG05-S04-CH158-CH282-(-4.12/-4.12)-123m / Run / Sheet piles** |  |  | 2026-12-01 | 2027-06-03 |  |  |  |  |  |  |  |  |
| UG-05-S04-A010 |  | Release: drawings, holds, access and gates | milestone | 0d | 2026-12-01 | 2026-12-01 |  | 87d | start on or after 2026-12-01 | F2 | UG-05 | UG-05-S04 | A010 |  |
| UG-05-S04-A020 |  | Set-out, crossing survey and working platform |  | 2d | 2027-03-13 | 2027-03-14 | UG-05-S04-A010, UG-06-S03-A030 SS | 7d |  | F2 | UG-05 | UG-05-S04 | A020 | 123.2 |
| UG-05-S04-A030 |  | Pipe-support piling from platform (incl. integrity tests) |  | 9d | 2027-03-22 | 2027-03-31 | UG-05-S04-A020 SS+1d, UG-05-S04-A020 FF+2d, UG-06-S03-A030 | 0d |  | F2 | UG-05 | UG-05-S04 | A030 | 86 |
| UG-05-S04-A040 |  | Install sheet piles (shored lengths) |  | 5d | 2027-03-27 | 2027-03-31 | UG-05-S04-A030 SS+3d, UG-05-S04-A030 FF+2d, UG-06-S03-A040 | 0d |  | F2 | UG-05 | UG-05-S04 | A040 | 246.4 |
| UG-05-S04-A050 |  | Install dewatering and draw down |  | 11d | 2027-03-28 | 2027-04-08 | UG-05-S04-A040 SS+2d, UG-05-S04-A040 FF+2d, UG-06-S03-A060 FS-11d | 1d |  | F2 | UG-05 | UG-05-S04 | A050 | 123.2 |
| UG-05-S04-A060 |  | Excavate and strut to formation |  | 4d | 2027-04-08 | 2027-04-12 | UG-05-S04-A050 SS+9d, UG-05-S04-A050 FF+2d, UG-06-S03-A060 SS, UG-06-S04-A060 SS, UG-06-S05-A060 SS, UG-06-S03-A060 | 3d |  | F2 | UG-05 | UG-05-S04 | A060 | 1789.934204 |
| UG-05-S04-A070 |  | Trim piles, blinding and piled slab (incl. cure) |  | 9d | 2027-04-25 | 2027-05-04 | UG-05-S04-A060 SS+2d, UG-05-S04-A060 FF+2d, UG-06-S03-A070 | 0d |  | F2 | UG-05 | UG-05-S04 | A070 | 123.2 |
| UG-05-S04-A080 |  | Lay and joint pipe (incl. fittings, tie-in) |  | 4d | 2027-04-29 | 2027-05-03 | UG-05-S04-A070 SS+3d, UG-05-S04-A070 FF+2d, UG-06-S03-A080 | 0d |  | F2 | UG-05 | UG-05-S04 | A080 | 123.2 |
| UG-05-S04-A090 |  | Surround, joint test and line test |  | 3d | 2027-05-01 | 2027-05-03 | UG-05-S04-A080 SS+2d, UG-05-S04-A080 FF+2d | 21d |  | F2 | UG-05 | UG-05-S04 | A090 | 123.2 |
| UG-05-S04-A100 |  | Backfill to NG and remove struts |  | 2d | 2027-05-29 | 2027-05-30 | UG-05-S04-A090 SS+2d, UG-05-S04-A090 FF+2d, UG-06-S03-A080, UG-06-S04-A080, UG-06-S05-A080, UG-06-S03-A100 | 0d |  | F2 | UG-05 | UG-05-S04 | A100 | 1100.378098 |
| UG-05-S04-A110 |  | Dewatering off, extract sheets, reinstate |  | 6d | 2027-05-29 | 2027-06-03 | UG-05-S04-A100 SS+1d, UG-05-S04-A100 FF+2d |  |  | F2 | UG-05 | UG-05-S04 | A110 | 246.4 |

Notes:
- UG-05-S05-A010: Notes: Front F2 / Line UG-05 / Package UG-05-S05 / Workbook logic: gates: START, D_DLU
- UG-05-S05-A020: Notes: Front F2 / Line UG-05 / Package UG-05-S05 / Quantity 25 m / Workbook logic: FS from A010; UG-06-S04-A030 (SS, set-out one package ahead of piling)
- UG-05-S05-A030: Notes: Front F2 / Line UG-05 / Package UG-05-S05 / Quantity 20 piles / Workbook logic: gate: D_PILEDES
- UG-05-S05-A040: Notes: Front F2 / Line UG-05 / Package UG-05-S05 / Quantity 50 m wall
- UG-05-S05-A050: Notes: Front F2 / Line UG-05 / Package UG-05-S05 / Quantity 25 m / Workbook logic: UG-06-S04-A060 (FS, negative lag = own duration: drawdown complete when the excavation crew is free)
- UG-05-S05-A060: Notes: Front F2 / Line UG-05 / Package UG-05-S05 / Quantity 364 m3 / Workbook logic: UG-06-S04-A060 (SS, shared trench); UG-06-S05-A060 (SS, shared trench); UG-25-S01-A060 (SS, shared trench); UG-26-S01-A060 (SS, shared trench)
- UG-05-S05-A070: Notes: Front F2 / Line UG-05 / Package UG-05-S05 / Quantity 25 m
- UG-05-S05-A080: Notes: Front F2 / Line UG-05 / Package UG-05-S05 / Quantity 25 m
- UG-05-S05-A090: Notes: Front F2 / Line UG-05 / Package UG-05-S05 / Quantity 25 m
- UG-05-S05-A100: Notes: Front F2 / Line UG-05 / Package UG-05-S05 / Quantity 224 m3 / Workbook logic: UG-06-S04-A080 (FS, shared trench laid); UG-06-S05-A080 (FS, shared trench laid); UG-25-S01-A080 (FS, shared trench laid); UG-26-S01-A080 (FS, shared trench laid)
- UG-05-S05-A110: Notes: Front F2 / Line UG-05 / Package UG-05-S05 / Quantity 50 m wall
- UG-05-S04-A010: Notes: Front F2 / Line UG-05 / Package UG-05-S04 / Workbook logic: gates: START, D_DLU
- UG-05-S04-A020: Notes: Front F2 / Line UG-05 / Package UG-05-S04 / Quantity 123 m / Workbook logic: FS from A010; UG-06-S03-A030 (SS, set-out one package ahead of piling)
- UG-05-S04-A030: Notes: Front F2 / Line UG-05 / Package UG-05-S04 / Quantity 86 piles / Workbook logic: gate: D_PILEDES
- UG-05-S04-A040: Notes: Front F2 / Line UG-05 / Package UG-05-S04 / Quantity 246 m wall
- UG-05-S04-A050: Notes: Front F2 / Line UG-05 / Package UG-05-S04 / Quantity 123 m / Workbook logic: UG-06-S03-A060 (FS, negative lag = own duration: drawdown complete when the excavation crew is free)
- UG-05-S04-A060: Notes: Front F2 / Line UG-05 / Package UG-05-S04 / Quantity 1,790 m3 / Workbook logic: UG-06-S03-A060 (SS, shared trench); UG-06-S04-A060 (SS, shared trench); UG-06-S05-A060 (SS, shared trench)
- UG-05-S04-A070: Notes: Front F2 / Line UG-05 / Package UG-05-S04 / Quantity 123 m
- UG-05-S04-A080: Notes: Front F2 / Line UG-05 / Package UG-05-S04 / Quantity 123 m
- UG-05-S04-A090: Notes: Front F2 / Line UG-05 / Package UG-05-S04 / Quantity 123 m
- UG-05-S04-A100: Notes: Front F2 / Line UG-05 / Package UG-05-S04 / Quantity 1,100 m3 / Workbook logic: UG-06-S03-A080 (FS, shared trench laid); UG-06-S04-A080 (FS, shared trench laid); UG-06-S05-A080 (FS, shared trench laid)
- UG-05-S04-A110: Notes: Front F2 / Line UG-05 / Package UG-05-S04 / Quantity 246 m wall

| ID | WBS | Activity | Type | Duration | Start | Finish | Predecessors | Free float | Constraint | Text1 | Text2 | Text3 | Text4 | Number1 |
| --- | --- | --- | --- | --- | --- | --- | --- | --- | --- | --- | --- | --- | --- | --- |
|  | UG-05-S03 | **UG-05-S03 / GRP-UG05-S03-CH054-CH158-(-3.82/-4.12)-104m / Run / Mixed: 58 m sheet piles** |  |  | 2026-12-01 | 2027-06-06 |  |  |  |  |  |  |  |  |
| UG-05-S03-A010 |  | Release: drawings, holds, access and gates | milestone | 0d | 2026-12-01 | 2026-12-01 |  | 95d | start on or after 2026-12-01 | F2 | UG-05 | UG-05-S03 | A010 |  |
| UG-05-S03-A020 |  | Set-out, crossing survey and working platform |  | 2d | 2027-03-22 | 2027-03-23 | UG-05-S03-A010, UG-05-S04-A030 SS | 9d |  | F2 | UG-05 | UG-05-S03 | A020 | 104.2 |
| UG-05-S03-A030 |  | Pipe-support piling from platform (incl. integrity tests) |  | 8d | 2027-04-03 | 2027-04-11 | UG-05-S03-A020 SS+1d, UG-05-S03-A020 FF+2d, UG-05-S04-A030 | 0d |  | F2 | UG-05 | UG-05-S03 | A030 | 72 |
| UG-05-S03-A040 |  | Install sheet piles (shored lengths) |  | 3d | 2027-04-05 | 2027-04-07 | UG-05-S03-A030 SS+3d, UG-05-S03-A030 FF+2d, UG-05-S04-A040 | 0d |  | F2 | UG-05 | UG-05-S03 | A040 | 116.6 |
| UG-05-S03-A050 |  | Install dewatering and draw down |  | 10d | 2027-04-07 | 2027-04-18 | UG-05-S03-A040 SS+2d, UG-05-S03-A040 FF+2d, UG-05-S04-A060 FS-10d | 0d |  | F2 | UG-05 | UG-05-S03 | A050 | 104.2 |
| UG-05-S03-A060 |  | Excavate and strut to formation |  | 4d | 2027-04-17 | 2027-04-20 | UG-05-S03-A050 SS+9d, UG-05-S03-A050 FF+2d, UG-06-S03-A060 SS, UG-06-S04-A060 SS, UG-05-S04-A060 | 2d |  | F2 | UG-05 | UG-05-S03 | A060 | 2384.867161 |
| UG-05-S03-A070 |  | Trim piles, blinding and piled slab (incl. cure) |  | 8d | 2027-05-06 | 2027-05-15 | UG-05-S03-A060 SS+2d, UG-05-S03-A060 FF+2d, UG-05-S04-A070 | 0d |  | F2 | UG-05 | UG-05-S03 | A070 | 104.2 |
| UG-05-S03-A080 |  | Lay and joint pipe (incl. fittings, tie-in) |  | 5d | 2027-05-09 | 2027-05-13 | UG-05-S03-A070 SS+3d, UG-05-S03-A070 FF+2d, UG-05-S04-A080 | 0d |  | F2 | UG-05 | UG-05-S03 | A080 | 104.2 |
| UG-05-S03-A090 |  | Surround, joint test and line test |  | 3d | 2027-05-11 | 2027-05-13 | UG-05-S03-A080 SS+2d, UG-05-S03-A080 FF+2d | 15d |  | F2 | UG-05 | UG-05-S03 | A090 | 104.2 |
| UG-05-S03-A100 |  | Backfill to NG and remove struts |  | 3d | 2027-05-31 | 2027-06-02 | UG-05-S03-A090 SS+2d, UG-05-S03-A090 FF+2d, UG-06-S03-A080, UG-06-S04-A080, UG-05-S04-A100 | 0d |  | F2 | UG-05 | UG-05-S03 | A100 | 1801.654302 |
| UG-05-S03-A110 |  | Dewatering off, extract sheets, reinstate |  | 4d | 2027-06-02 | 2027-06-06 | UG-05-S03-A100 SS+2d, UG-05-S03-A100 FF+2d |  |  | F2 | UG-05 | UG-05-S03 | A110 | 116.6 |
|  | UG-05-S02 | **UG-05-S02 / GRP-UG05-S02-CH006-CH054-(-3.66/-3.82)-48m / Run / Open cut** |  |  | 2026-12-01 | 2027-07-14 |  |  |  |  |  |  |  |  |
| UG-05-S02-A010 |  | Release: drawings, holds, access and gates | milestone | 0d | 2026-12-01 | 2026-12-01 |  | 105d | start on or after 2026-12-01 | F2 | UG-05 | UG-05-S02 | A010 |  |
| UG-05-S02-A020 |  | Set-out, crossing survey and working platform |  | 1d | 2027-04-03 | 2027-04-03 | UG-05-S02-A010, UG-05-S03-A030 SS | 7d |  | F2 | UG-05 | UG-05-S02 | A020 | 48.1 |
| UG-05-S02-A030 |  | Pipe-support piling from platform (incl. integrity tests) |  | 4d | 2027-04-12 | 2027-04-15 | UG-05-S02-A020 SS+1d, UG-05-S02-A020 FF+2d, UG-05-S03-A030 | 0d |  | F2 | UG-05 | UG-05-S02 | A030 | 36 |
| UG-05-S02-A050 |  | Install dewatering and draw down |  | 9d | 2027-04-14 | 2027-04-24 | UG-05-S03-A060 FS-9d, UG-05-S02-A030 SS+2d, UG-05-S02-A030 SF+4d, UG-05-S02-A030 FF+2d | 0d |  | F2 | UG-05 | UG-05-S02 | A050 | 48.1 |
| UG-05-S02-A060 |  | Excavate and strut to formation |  | 2d | 2027-04-24 | 2027-04-25 | UG-05-S02-A050 SS+9d, UG-05-S02-A050 FF+2d, UG-06-S03-A060 SS, UG-05-S03-A060 | 9d |  | F2 | UG-05 | UG-05-S02 | A060 | 1502.706663 |
| UG-05-S02-A070 |  | Trim piles, blinding and piled slab (incl. cure) |  | 6d | 2027-05-16 | 2027-05-22 | UG-05-S02-A060 SS+1d, UG-05-S02-A060 FF+2d, UG-05-S03-A070 | 0d |  | F2 | UG-05 | UG-05-S02 | A070 | 48.1 |
| UG-05-S02-A080 |  | Lay and joint pipe (incl. fittings, tie-in) |  | 3d | 2027-05-19 | 2027-05-22 | UG-05-S02-A070 SS+3d, UG-05-S02-A070 FF+2d, UG-05-S03-A080 | 0d |  | F2 | UG-05 | UG-05-S02 | A080 | 48.1 |
| UG-05-S02-A090 |  | Surround, joint test and line test |  | 3d | 2027-05-22 | 2027-05-24 | UG-05-S02-A080 SS+2d, UG-05-S02-A080 FF+2d | 42d |  | F2 | UG-05 | UG-05-S02 | A090 | 48.1 |
| UG-05-S02-A100 |  | Backfill to NG and remove struts |  | 2d | 2027-07-13 | 2027-07-14 | UG-05-S02-A090 SS+2d, UG-05-S02-A090 FF+2d, UG-06-S03-A080, UG-24-S01-A080, UG-24-S02-A080, UG-05-S03-A100 | 0d |  | F2 | UG-05 | UG-05-S02 | A100 | 1229.418551 |
| UG-05-S02-A110 |  | Dewatering off, extract sheets, reinstate |  | 1d | 2027-07-14 | 2027-07-14 | UG-05-S02-A100 SS+1d, UG-05-S02-A100 FF+2d |  |  | F2 | UG-05 | UG-05-S02 | A110 | 0 |
|  | UG-05-S01 | **UG-05-S01 / GRP-UG05-S01-IPS-CH006-(-3.64/-3.66)-6m / Tie-in / Open cut** |  |  | 2026-12-01 | 2027-07-14 |  |  |  |  |  |  |  |  |
| UG-05-S01-A010 |  | Release: drawings, holds, access and gates | milestone | 0d | 2026-12-01 | 2026-12-01 |  | 113d | start on or after 2026-12-01 | F2 | UG-05 | UG-05-S01 | A010 |  |
| UG-05-S01-A020 |  | Set-out, crossing survey and working platform |  | 1d | 2027-04-12 | 2027-04-12 | UG-05-S01-A010, UG-05-S02-A030 SS | 0d |  | F2 | UG-05 | UG-05-S01 | A020 | 6 |
| UG-05-S01-A030 |  | Pipe-support piling from platform (incl. integrity tests) |  | 1d | 2027-04-13 | 2027-04-13 | UG-05-S01-A020 SS+1d, UG-05-S01-A020 FF+2d | 0d |  | F2 | UG-05 | UG-05-S01 | A030 | 6 |
| UG-05-S01-A050 |  | Install dewatering and draw down |  | 8d | 2027-04-14 | 2027-04-22 | UG-05-S01-A030 SS+1d, UG-05-S01-A030 SF+3d, UG-05-S01-A030 FF+2d | 0d |  | F2 | UG-05 | UG-05-S01 | A050 | 6 |
| UG-05-S01-A060 |  | Excavate and strut to formation |  | 1d | 2027-04-24 | 2027-04-24 | UG-05-S01-A050 SS+9d, UG-05-S01-A050 FF+2d, UG-06-S01-A060 SS | 0d |  | F2 | UG-05 | UG-05-S01 | A060 | 178.131965 |
| UG-05-S01-A070 |  | Trim piles, blinding and piled slab (incl. cure) |  | 4d | 2027-04-25 | 2027-04-28 | UG-05-S01-A060 SS+1d, UG-05-S01-A060 FF+2d | 24d |  | F2 | UG-05 | UG-05-S01 | A070 | 6 |
| UG-05-S01-A080 |  | Lay and joint pipe (incl. fittings, tie-in) |  | 4d | 2027-05-25 | 2027-05-29 | UG-05-S01-A070 SS+2d, UG-05-S01-A070 FF+2d, UG-05-S02-A080 | 0d |  | F2 | UG-05 | UG-05-S01 | A080 | 6 |
| UG-05-S01-A090 |  | Surround, joint test and line test |  | 3d | 2027-05-27 | 2027-05-30 | UG-05-S01-A080 SS+2d, UG-05-S01-A080 FF+2d | 36d |  | F2 | UG-05 | UG-05-S01 | A090 | 6 |
| UG-05-S01-A100 |  | Backfill to NG and remove struts |  | 1d | 2027-07-13 | 2027-07-13 | UG-05-S01-A090 SS+2d, UG-05-S01-A090 FF+2d, UG-06-S01-A080, UG-24-S01-A080, UG-24-S02-A080 | 0d |  | F2 | UG-05 | UG-05-S01 | A100 | 143.883368 |
| UG-05-S01-A110 |  | Dewatering off, extract sheets, reinstate |  | 1d | 2027-07-14 | 2027-07-14 | UG-05-S01-A100 SS+1d, UG-05-S01-A100 FF+2d |  |  | F2 | UG-05 | UG-05-S01 | A110 | 0 |

Notes:
- UG-05-S03-A010: Notes: Front F2 / Line UG-05 / Package UG-05-S03 / Workbook logic: gates: START, D_DLU
- UG-05-S03-A020: Notes: Front F2 / Line UG-05 / Package UG-05-S03 / Quantity 104 m / Workbook logic: FS from A010; UG-05-S04-A030 (SS, set-out one package ahead of piling)
- UG-05-S03-A030: Notes: Front F2 / Line UG-05 / Package UG-05-S03 / Quantity 72 piles / Workbook logic: gate: D_PILEDES
- UG-05-S03-A040: Notes: Front F2 / Line UG-05 / Package UG-05-S03 / Quantity 117 m wall
- UG-05-S03-A050: Notes: Front F2 / Line UG-05 / Package UG-05-S03 / Quantity 104 m / Workbook logic: UG-05-S04-A060 (FS, negative lag = own duration: drawdown complete when the excavation crew is free)
- UG-05-S03-A060: Notes: Front F2 / Line UG-05 / Package UG-05-S03 / Quantity 2,385 m3 / Workbook logic: UG-06-S03-A060 (SS, shared trench); UG-06-S04-A060 (SS, shared trench)
- UG-05-S03-A070: Notes: Front F2 / Line UG-05 / Package UG-05-S03 / Quantity 104 m
- UG-05-S03-A080: Notes: Front F2 / Line UG-05 / Package UG-05-S03 / Quantity 104 m
- UG-05-S03-A090: Notes: Front F2 / Line UG-05 / Package UG-05-S03 / Quantity 104 m
- UG-05-S03-A100: Notes: Front F2 / Line UG-05 / Package UG-05-S03 / Quantity 1,802 m3 / Workbook logic: UG-06-S03-A080 (FS, shared trench laid); UG-06-S04-A080 (FS, shared trench laid)
- UG-05-S03-A110: Notes: Front F2 / Line UG-05 / Package UG-05-S03 / Quantity 117 m wall
- UG-05-S02-A010: Notes: Front F2 / Line UG-05 / Package UG-05-S02 / Workbook logic: gates: START, D_DLU
- UG-05-S02-A020: Notes: Front F2 / Line UG-05 / Package UG-05-S02 / Quantity 48 m / Workbook logic: FS from A010; UG-05-S03-A030 (SS, set-out one package ahead of piling)
- UG-05-S02-A030: Notes: Front F2 / Line UG-05 / Package UG-05-S02 / Quantity 36 piles / Workbook logic: gate: D_PILEDES
- UG-05-S02-A050: Notes: Front F2 / Line UG-05 / Package UG-05-S02 / Quantity 48 m / Workbook logic: UG-05-S03-A060 (FS, negative lag = own duration: drawdown complete when the excavation crew is free)
- UG-05-S02-A060: Notes: Front F2 / Line UG-05 / Package UG-05-S02 / Quantity 1,503 m3 / Workbook logic: UG-06-S03-A060 (SS, shared trench)
- UG-05-S02-A070: Notes: Front F2 / Line UG-05 / Package UG-05-S02 / Quantity 48 m
- UG-05-S02-A080: Notes: Front F2 / Line UG-05 / Package UG-05-S02 / Quantity 48 m
- UG-05-S02-A090: Notes: Front F2 / Line UG-05 / Package UG-05-S02 / Quantity 48 m
- UG-05-S02-A100: Notes: Front F2 / Line UG-05 / Package UG-05-S02 / Quantity 1,229 m3 / Workbook logic: UG-06-S03-A080 (FS, shared trench laid); UG-24-S01-A080 (FS, shared trench laid); UG-24-S02-A080 (FS, shared trench laid)
- UG-05-S02-A110: Notes: Front F2 / Line UG-05 / Package UG-05-S02 / Quantity 0 m wall
- UG-05-S01-A010: Notes: Front F2 / Line UG-05 / Package UG-05-S01 / Workbook logic: gates: START, D_DLU, structure ready
- UG-05-S01-A020: Notes: Front F2 / Line UG-05 / Package UG-05-S01 / Quantity 6 m / Workbook logic: FS from A010; UG-05-S02-A030 (SS, tie-in team follows the adjacent run)
- UG-05-S01-A030: Notes: Front F2 / Line UG-05 / Package UG-05-S01 / Quantity 6 piles / Workbook logic: gate: D_PILEDES
- UG-05-S01-A050: Notes: Front F2 / Line UG-05 / Package UG-05-S01 / Quantity 6 m
- UG-05-S01-A060: Notes: Front F2 / Line UG-05 / Package UG-05-S01 / Quantity 178 m3 / Workbook logic: UG-06-S01-A060 (SS, shared trench)
- UG-05-S01-A070: Notes: Front F2 / Line UG-05 / Package UG-05-S01 / Quantity 6 m
- UG-05-S01-A080: Notes: Front F2 / Line UG-05 / Package UG-05-S01 / Quantity 6 m / Workbook logic: UG-05-S02-A080 (FS, closure)
- UG-05-S01-A090: Notes: Front F2 / Line UG-05 / Package UG-05-S01 / Quantity 6 m
- UG-05-S01-A100: Notes: Front F2 / Line UG-05 / Package UG-05-S01 / Quantity 144 m3 / Workbook logic: UG-06-S01-A080 (FS, shared trench laid); UG-24-S01-A080 (FS, shared trench laid); UG-24-S02-A080 (FS, shared trench laid)
- UG-05-S01-A110: Notes: Front F2 / Line UG-05 / Package UG-05-S01 / Quantity 0 m wall

| ID | WBS | Activity | Type | Duration | Start | Finish | Predecessors | Free float | Constraint | Text1 | Text2 | Text3 | Text4 | Number1 |
| --- | --- | --- | --- | --- | --- | --- | --- | --- | --- | --- | --- | --- | --- | --- |
|  | UG-24 | **UG-24** |  |  | 2026-12-01 | 2027-07-20 |  |  |  |  |  |  |  |  |
|  | UG-24-S01 | **UG-24-S01 / GRP-UG24-S01-EXPST-EL124-(-2.60/-3.02)-124m / Run / Mixed: 70 m sheet piles** |  |  | 2026-12-01 | 2027-07-20 |  |  |  |  |  |  |  |  |
| UG-24-S01-A010 |  | Release: drawings, holds, access and gates | milestone | 0d | 2026-12-01 | 2026-12-01 |  | 113d | start on or after 2026-12-01 | F2 | UG-24 | UG-24-S01 | A010 |  |
| UG-24-S01-A020 |  | Set-out, crossing survey and working platform |  | 2d | 2027-04-12 | 2027-04-13 | UG-24-S01-A010, UG-05-S02-A030 SS | 3d |  | F2 | UG-24 | UG-24-S01 | A020 | 123.745505 |
| UG-24-S01-A030 |  | Pipe-support piling from platform (incl. integrity tests) |  | 9d | 2027-04-17 | 2027-04-26 | UG-24-S01-A020 SS+1d, UG-24-S01-A020 FF+2d, UG-05-S02-A030 | 0d |  | F2 | UG-24 | UG-24-S01 | A030 | 86 |
| UG-24-S01-A040 |  | Install sheet piles (shored lengths) |  | 3d | 2027-04-21 | 2027-04-24 | UG-24-S01-A030 SS+3d, UG-24-S01-A030 FF+2d, UG-05-S03-A040 | 0d |  | F2 | UG-24 | UG-24-S01 | A040 | 140 |
| UG-24-S01-A050 |  | Install dewatering and draw down |  | 11d | 2027-04-24 | 2027-05-05 | UG-24-S01-A040 SS+2d, UG-24-S01-A040 FF+2d, UG-05-S02-A060 FS-11d | 41d |  | F2 | UG-24 | UG-24-S01 | A050 | 123.745505 |
| UG-24-S01-A060 |  | Excavate and strut to formation |  | 3d | 2027-06-22 | 2027-06-24 | UG-24-S01-A050 SS+9d, UG-24-S01-A050 FF+2d, UG-02-S04-A100, UG-02-S05-A100, UG-03-S01-A100, UG-03-S02-A100, UG-03-S03-A100, UG-03-S04-A100, UG-03-S05-A100, UG-04-S01-A100, UG-04-S02-A100, UG-05-S01-A060 SS, UG-05-S02-A060 SS, UG-05-S02-A060 | 0d |  | F2 | UG-24 | UG-24-S01 | A060 | 1672.358597 |
| UG-24-S01-A070 |  | Trim piles, blinding and piled slab (incl. cure) |  | 9d | 2027-06-24 | 2027-07-04 | UG-24-S01-A060 SS+2d, UG-24-S01-A060 FF+2d, UG-05-S02-A070 | 0d |  | F2 | UG-24 | UG-24-S01 | A070 | 123.745505 |
| UG-24-S01-A080 |  | Lay and joint pipe (incl. fittings, tie-in) |  | 8d | 2027-06-28 | 2027-07-06 | UG-24-S01-A070 SS+3d, UG-24-S01-A070 FF+2d, UG-05-S02-A080 | 0d |  | F2 | UG-24 | UG-24-S01 | A080 | 123.745505 |
| UG-24-S01-A090 |  | Surround, joint test and line test |  | 3d | 2027-07-01 | 2027-07-04 | UG-24-S01-A080 SS+3d, UG-24-S01-A080 FF+2d | 10d |  | F2 | UG-24 | UG-24-S01 | A090 | 123.745505 |
| UG-24-S01-A100 |  | Backfill to NG and remove struts |  | 2d | 2027-07-17 | 2027-07-18 | UG-24-S01-A090 SS+2d, UG-24-S01-A090 FF+2d, UG-05-S01-A080, UG-05-S02-A080, UG-05-S02-A100 | 0d |  | F2 | UG-24 | UG-24-S01 | A100 | 1098.366566 |
| UG-24-S01-A110 |  | Dewatering off, extract sheets, reinstate |  | 4d | 2027-07-17 | 2027-07-20 | UG-24-S01-A100 SS+1d, UG-24-S01-A100 FF+2d |  |  | F2 | UG-24 | UG-24-S01 | A110 | 140 |
|  | UG-24-S02 | **UG-24-S02 / GRP-UG24-S02-EL124-IPS-(-3.03/-3.03)-3m / Tie-in / Open cut** |  |  | 2026-12-01 | 2027-07-13 |  |  |  |  |  |  |  |  |
| UG-24-S02-A010 |  | Release: drawings, holds, access and gates | milestone | 0d | 2026-12-01 | 2026-12-01 |  | 117d | start on or after 2026-12-01 | F2 | UG-24 | UG-24-S02 | A010 |  |
| UG-24-S02-A020 |  | Set-out, crossing survey and working platform |  | 1d | 2027-04-17 | 2027-04-17 | UG-24-S02-A010, UG-24-S01-A030 SS | 0d |  | F2 | UG-24 | UG-24-S02 | A020 | 3.0856 |
| UG-24-S02-A030 |  | Pipe-support piling from platform (incl. integrity tests) |  | 1d | 2027-04-18 | 2027-04-18 | UG-24-S02-A020 SS+1d, UG-24-S02-A020 FF+2d | 0d |  | F2 | UG-24 | UG-24-S02 | A030 | 6 |
| UG-24-S02-A050 |  | Install dewatering and draw down |  | 8d | 2027-04-19 | 2027-04-27 | UG-24-S02-A030 SS+1d, UG-24-S02-A030 SF+3d, UG-24-S02-A030 FF+2d | 23d |  | F2 | UG-24 | UG-24-S02 | A050 | 3.0856 |
| UG-24-S02-A060 |  | Excavate and strut to formation |  | 1d | 2027-05-26 | 2027-05-26 | UG-24-S02-A050 SS+9d, UG-24-S02-A050 FF+2d, UG-04-S02-A100, UG-05-S01-A060 SS, UG-05-S02-A060 SS | 0d |  | F2 | UG-24 | UG-24-S02 | A060 | 61.971972 |
| UG-24-S02-A070 |  | Trim piles, blinding and piled slab (incl. cure) |  | 4d | 2027-05-27 | 2027-05-31 | UG-24-S02-A060 SS+1d, UG-24-S02-A060 FF+2d | 34d |  | F2 | UG-24 | UG-24-S02 | A070 | 3.0856 |
| UG-24-S02-A080 |  | Lay and joint pipe (incl. fittings, tie-in) |  | 4d | 2027-07-08 | 2027-07-12 | UG-24-S02-A070 SS+2d, UG-24-S02-A070 FF+2d, UG-24-S01-A080 | 0d |  | F2 | UG-24 | UG-24-S02 | A080 | 3.0856 |
| UG-24-S02-A090 |  | Surround, joint test and line test |  | 3d | 2027-07-10 | 2027-07-12 | UG-24-S02-A080 SS+2d, UG-24-S02-A080 FF+2d | 0d |  | F2 | UG-24 | UG-24-S02 | A090 | 3.0856 |
| UG-24-S02-A100 |  | Backfill to NG and remove struts |  | 1d | 2027-07-12 | 2027-07-12 | UG-24-S02-A090 SS+2d, UG-24-S02-A090 FF+2d, UG-05-S01-A080, UG-05-S02-A080 | 0d |  | F2 | UG-24 | UG-24-S02 | A100 | 46.856113 |
| UG-24-S02-A110 |  | Dewatering off, extract sheets, reinstate |  | 1d | 2027-07-13 | 2027-07-13 | UG-24-S02-A100 SS+1d, UG-24-S02-A100 FF+2d |  |  | F2 | UG-24 | UG-24-S02 | A110 | 0 |

Notes:
- UG-24-S01-A010: Notes: Front F2 / Line UG-24 / Package UG-24-S01 / Workbook logic: gates: START, D_DLU, aeration zone piling
- UG-24-S01-A020: Notes: Front F2 / Line UG-24 / Package UG-24-S01 / Quantity 124 m / Workbook logic: FS from A010; UG-05-S02-A030 (SS, set-out one package ahead of piling)
- UG-24-S01-A030: Notes: Front F2 / Line UG-24 / Package UG-24-S01 / Quantity 86 piles / Workbook logic: gate: D_PILEDES
- UG-24-S01-A040: Notes: Front F2 / Line UG-24 / Package UG-24-S01 / Quantity 140 m wall
- UG-24-S01-A050: Notes: Front F2 / Line UG-24 / Package UG-24-S01 / Quantity 124 m / Workbook logic: UG-05-S02-A060 (FS, negative lag = own duration: drawdown complete when the excavation crew is free)
- UG-24-S01-A060: Notes: Front F2 / Line UG-24 / Package UG-24-S01 / Quantity 1,672 m3 / Workbook logic: UG-02-S04-A100 (FS, deeper first); UG-02-S05-A100 (FS, deeper first); UG-03-S01-A100 (FS, deeper first); UG-03-S02-A100 (FS, deeper first); UG-03-S03-A100 (FS, deeper first); UG-03-S04-A100 (FS, deeper first); UG-03-S05-A100 (FS, deeper first); UG-04-S01-A100 (FS, deeper first); UG-04-S02-A100 (FS, deeper first); UG-05-S01-A060 (SS, shared trench); UG-05-S02-A060 (SS, shared trench)
- UG-24-S01-A070: Notes: Front F2 / Line UG-24 / Package UG-24-S01 / Quantity 124 m
- UG-24-S01-A080: Notes: Front F2 / Line UG-24 / Package UG-24-S01 / Quantity 124 m
- UG-24-S01-A090: Notes: Front F2 / Line UG-24 / Package UG-24-S01 / Quantity 124 m
- UG-24-S01-A100: Notes: Front F2 / Line UG-24 / Package UG-24-S01 / Quantity 1,098 m3 / Workbook logic: UG-05-S01-A080 (FS, shared trench laid); UG-05-S02-A080 (FS, shared trench laid)
- UG-24-S01-A110: Notes: Front F2 / Line UG-24 / Package UG-24-S01 / Quantity 140 m wall
- UG-24-S02-A010: Notes: Front F2 / Line UG-24 / Package UG-24-S02 / Workbook logic: gates: START, D_DLU, structure ready
- UG-24-S02-A020: Notes: Front F2 / Line UG-24 / Package UG-24-S02 / Quantity 3 m / Workbook logic: FS from A010; UG-24-S01-A030 (SS, tie-in team follows the adjacent run)
- UG-24-S02-A030: Notes: Front F2 / Line UG-24 / Package UG-24-S02 / Quantity 6 piles / Workbook logic: gate: D_PILEDES
- UG-24-S02-A050: Notes: Front F2 / Line UG-24 / Package UG-24-S02 / Quantity 3 m
- UG-24-S02-A060: Notes: Front F2 / Line UG-24 / Package UG-24-S02 / Quantity 62 m3 / Workbook logic: UG-04-S02-A100 (FS, deeper first); UG-05-S01-A060 (SS, shared trench); UG-05-S02-A060 (SS, shared trench)
- UG-24-S02-A070: Notes: Front F2 / Line UG-24 / Package UG-24-S02 / Quantity 3 m
- UG-24-S02-A080: Notes: Front F2 / Line UG-24 / Package UG-24-S02 / Quantity 3 m / Workbook logic: UG-24-S01-A080 (FS, closure)
- UG-24-S02-A090: Notes: Front F2 / Line UG-24 / Package UG-24-S02 / Quantity 3 m
- UG-24-S02-A100: Notes: Front F2 / Line UG-24 / Package UG-24-S02 / Quantity 47 m3 / Workbook logic: UG-05-S01-A080 (FS, shared trench laid); UG-05-S02-A080 (FS, shared trench laid)
- UG-24-S02-A110: Notes: Front F2 / Line UG-24 / Package UG-24-S02 / Quantity 0 m wall

| ID | WBS | Activity | Type | Duration | Start | Finish | Predecessors | Free float | Constraint | Text1 | Text2 | Text3 | Text4 | Number1 |
| --- | --- | --- | --- | --- | --- | --- | --- | --- | --- | --- | --- | --- | --- | --- |
|  | F3 | **F3 Distribution & FCT risers** |  |  | 2026-12-01 | 2027-07-25 |  |  |  |  |  |  |  |  |
|  | UG-10 | **UG-10** |  |  | 2026-12-01 | 2027-03-07 |  |  |  |  |  |  |  |  |
|  | UG-10-S04 | **UG-10-S04 / GRP-UG10-S04-CH146-CH200-(-3.76/-5.01)-53m / Run / Sheet piles** |  |  | 2026-12-01 | 2027-02-08 |  |  |  |  |  |  |  |  |
| UG-10-S04-A010 |  | Release: drawings, holds, access and gates | milestone | 0d | 2026-12-01 | 2026-12-01 |  | 0d | start on or after 2026-12-01 | F3 | UG-10 | UG-10-S04 | A010 |  |
| UG-10-S04-A020 |  | Set-out, crossing survey and working platform |  | 1d | 2026-12-01 | 2026-12-01 | UG-10-S04-A010 | 0d |  | F3 | UG-10 | UG-10-S04 | A020 | 53.199 |
| UG-10-S04-A030 |  | Pipe-support piling from platform (incl. integrity tests) |  | 8d | 2026-12-02 | 2026-12-10 | UG-10-S04-A020 SS+1d, UG-10-S04-A020 FF+2d | 0d |  | F3 | UG-10 | UG-10-S04 | A030 | 38 |
| UG-10-S04-A040 |  | Install sheet piles (shored lengths) |  | 5d | 2026-12-05 | 2026-12-09 | UG-10-S04-A030 SS+3d, UG-10-S04-A030 FF+2d | 0d |  | F3 | UG-10 | UG-10-S04 | A040 | 106.398 |
| UG-10-S04-A050 |  | Install dewatering and draw down |  | 9d | 2026-12-07 | 2026-12-16 | UG-10-S04-A040 SS+2d, UG-10-S04-A040 FF+2d | 33d |  | F3 | UG-10 | UG-10-S04 | A050 | 53.199 |
| UG-10-S04-A060 |  | Excavate and strut to formation |  | 5d | 2027-01-25 | 2027-01-30 | UG-10-S04-A050 SS+9d, UG-10-S04-A050 FF+2d, UG-15-S02-A100 | 0d |  | F3 | UG-10 | UG-10-S04 | A060 | 1038.893687 |
| UG-10-S04-A070 |  | Trim piles, blinding and piled slab (incl. cure) |  | 8d | 2027-01-27 | 2027-02-04 | UG-10-S04-A060 SS+2d, UG-10-S04-A060 FF+2d | 0d |  | F3 | UG-10 | UG-10-S04 | A070 | 53.199 |
| UG-10-S04-A080 |  | Lay and joint pipe (incl. fittings, tie-in) |  | 4d | 2027-01-30 | 2027-02-02 | UG-10-S04-A070 SS+3d, UG-10-S04-A070 FF+2d | 0d |  | F3 | UG-10 | UG-10-S04 | A080 | 53.199 |
| UG-10-S04-A090 |  | Surround, joint test and line test |  | 3d | 2027-02-01 | 2027-02-03 | UG-10-S04-A080 SS+2d, UG-10-S04-A080 FF+2d | 0d |  | F3 | UG-10 | UG-10-S04 | A090 | 53.199 |
| UG-10-S04-A100 |  | Backfill to NG and remove struts |  | 2d | 2027-02-03 | 2027-02-04 | UG-10-S04-A090 SS+2d, UG-10-S04-A090 FF+2d | 0d |  | F3 | UG-10 | UG-10-S04 | A100 | 638.399974 |
| UG-10-S04-A110 |  | Dewatering off, extract sheets, reinstate |  | 4d | 2027-02-04 | 2027-02-08 | UG-10-S04-A100 SS+1d, UG-10-S04-A100 FF+2d |  |  | F3 | UG-10 | UG-10-S04 | A110 | 106.398 |
|  | UG-10-S05 | **UG-10-S05 / GRP-UG10-S05-CH200-SDCA-(-5.01/-5.01)-6m / Tie-in / Sheet piles** |  |  | 2026-12-01 | 2027-02-14 |  |  |  |  |  |  |  |  |
| UG-10-S05-A010 |  | Release: drawings, holds, access and gates | milestone | 0d | 2026-12-01 | 2026-12-01 |  | 1d | start on or after 2026-12-01 | F3 | UG-10 | UG-10-S05 | A010 |  |
| UG-10-S05-A020 |  | Set-out, crossing survey and working platform |  | 1d | 2026-12-02 | 2026-12-02 | UG-10-S05-A010, UG-10-S04-A030 SS | 0d |  | F3 | UG-10 | UG-10-S05 | A020 | 5.999731 |
| UG-10-S05-A030 |  | Pipe-support piling from platform (incl. integrity tests) |  | 2d | 2026-12-03 | 2026-12-05 | UG-10-S05-A020 SS+1d, UG-10-S05-A020 FF+2d | 0d |  | F3 | UG-10 | UG-10-S05 | A030 | 6 |
| UG-10-S05-A040 |  | Install sheet piles (shored lengths) |  | 1d | 2026-12-05 | 2026-12-05 | UG-10-S05-A030 SS+1d, UG-10-S05-A030 FF+2d | 0d |  | F3 | UG-10 | UG-10-S05 | A040 | 11.999463 |
| UG-10-S05-A050 |  | Install dewatering and draw down |  | 8d | 2026-12-05 | 2026-12-13 | UG-10-S05-A040 SS+1d, UG-10-S05-A040 FF+2d | 0d |  | F3 | UG-10 | UG-10-S05 | A050 | 5.999731 |
| UG-10-S05-A060 |  | Excavate and strut to formation |  | 1d | 2026-12-15 | 2026-12-15 | UG-10-S05-A050 SS+9d, UG-10-S05-A050 FF+2d | 0d |  | F3 | UG-10 | UG-10-S05 | A060 | 121.13732 |
| UG-10-S05-A070 |  | Trim piles, blinding and piled slab (incl. cure) |  | 4d | 2026-12-16 | 2026-12-20 | UG-10-S05-A060 SS+1d, UG-10-S05-A060 FF+2d | 44d |  | F3 | UG-10 | UG-10-S05 | A070 | 5.999731 |
| UG-10-S05-A080 |  | Lay and joint pipe (incl. fittings, tie-in) |  | 4d | 2027-02-08 | 2027-02-11 | UG-10-S05-A070 SS+2d, UG-10-S05-A070 FF+2d, UG-10-S04-A080 | 0d |  | F3 | UG-10 | UG-10-S05 | A080 | 5.999731 |
| UG-10-S05-A090 |  | Surround, joint test and line test |  | 3d | 2027-02-10 | 2027-02-13 | UG-10-S05-A080 SS+2d, UG-10-S05-A080 FF+2d | 0d |  | F3 | UG-10 | UG-10-S05 | A090 | 5.999731 |
| UG-10-S05-A100 |  | Backfill to NG and remove struts |  | 1d | 2027-02-13 | 2027-02-13 | UG-10-S05-A090 SS+2d, UG-10-S05-A090 FF+2d | 0d |  | F3 | UG-10 | UG-10-S05 | A100 | 75.969993 |
| UG-10-S05-A110 |  | Dewatering off, extract sheets, reinstate |  | 2d | 2027-02-13 | 2027-02-14 | UG-10-S05-A100 SS+1d, UG-10-S05-A100 FF+2d |  |  | F3 | UG-10 | UG-10-S05 | A110 | 11.999463 |

Notes:
- UG-10-S04-A010: Notes: Front F3 / Line UG-10 / Package UG-10-S04 / Workbook logic: gates: START, D_DLU
- UG-10-S04-A020: Notes: Front F3 / Line UG-10 / Package UG-10-S04 / Quantity 53 m / Workbook logic: FS from A010
- UG-10-S04-A030: Notes: Front F3 / Line UG-10 / Package UG-10-S04 / Quantity 38 piles / Workbook logic: gate: D_PILEDES
- UG-10-S04-A040: Notes: Front F3 / Line UG-10 / Package UG-10-S04 / Quantity 106 m wall
- UG-10-S04-A050: Notes: Front F3 / Line UG-10 / Package UG-10-S04 / Quantity 53 m
- UG-10-S04-A060: Notes: Front F3 / Line UG-10 / Package UG-10-S04 / Quantity 1,039 m3 / Workbook logic: UG-15-S02-A100 (FS, deeper first)
- UG-10-S04-A070: Notes: Front F3 / Line UG-10 / Package UG-10-S04 / Quantity 53 m
- UG-10-S04-A080: Notes: Front F3 / Line UG-10 / Package UG-10-S04 / Quantity 53 m
- UG-10-S04-A090: Notes: Front F3 / Line UG-10 / Package UG-10-S04 / Quantity 53 m
- UG-10-S04-A100: Notes: Front F3 / Line UG-10 / Package UG-10-S04 / Quantity 638 m3
- UG-10-S04-A110: Notes: Front F3 / Line UG-10 / Package UG-10-S04 / Quantity 106 m wall
- UG-10-S05-A010: Notes: Front F3 / Line UG-10 / Package UG-10-S05 / Workbook logic: gates: START, D_DLU, structure ready
- UG-10-S05-A020: Notes: Front F3 / Line UG-10 / Package UG-10-S05 / Quantity 6 m / Workbook logic: FS from A010; UG-10-S04-A030 (SS, tie-in team follows the adjacent run)
- UG-10-S05-A030: Notes: Front F3 / Line UG-10 / Package UG-10-S05 / Quantity 6 piles / Workbook logic: gate: D_PILEDES
- UG-10-S05-A040: Notes: Front F3 / Line UG-10 / Package UG-10-S05 / Quantity 12 m wall
- UG-10-S05-A050: Notes: Front F3 / Line UG-10 / Package UG-10-S05 / Quantity 6 m
- UG-10-S05-A060: Notes: Front F3 / Line UG-10 / Package UG-10-S05 / Quantity 121 m3
- UG-10-S05-A070: Notes: Front F3 / Line UG-10 / Package UG-10-S05 / Quantity 6 m
- UG-10-S05-A080: Notes: Front F3 / Line UG-10 / Package UG-10-S05 / Quantity 6 m / Workbook logic: UG-10-S04-A080 (FS, closure)
- UG-10-S05-A090: Notes: Front F3 / Line UG-10 / Package UG-10-S05 / Quantity 6 m
- UG-10-S05-A100: Notes: Front F3 / Line UG-10 / Package UG-10-S05 / Quantity 76 m3
- UG-10-S05-A110: Notes: Front F3 / Line UG-10 / Package UG-10-S05 / Quantity 12 m wall

| ID | WBS | Activity | Type | Duration | Start | Finish | Predecessors | Free float | Constraint | Text1 | Text2 | Text3 | Text4 | Number1 |
| --- | --- | --- | --- | --- | --- | --- | --- | --- | --- | --- | --- | --- | --- | --- |
|  | UG-10-S03 | **UG-10-S03 / GRP-UG10-S03-CH114-CH146-(-3.36/-3.76)-32m / Run / Mixed: 16 m sheet piles** |  |  | 2026-12-01 | 2027-02-15 |  |  |  |  |  |  |  |  |
| UG-10-S03-A010 |  | Release: drawings, holds, access and gates | milestone | 0d | 2026-12-01 | 2026-12-01 |  | 1d | start on or after 2026-12-01 | F3 | UG-10 | UG-10-S03 | A010 |  |
| UG-10-S03-A020 |  | Set-out, crossing survey and working platform |  | 1d | 2026-12-02 | 2026-12-02 | UG-10-S03-A010, UG-10-S04-A030 SS | 7d |  | F3 | UG-10 | UG-10-S03 | A020 | 32.1 |
| UG-10-S03-A030 |  | Pipe-support piling from platform (incl. integrity tests) |  | 5d | 2026-12-12 | 2026-12-16 | UG-10-S03-A020 SS+1d, UG-10-S03-A020 FF+2d, UG-10-S04-A030 | 0d |  | F3 | UG-10 | UG-10-S03 | A030 | 24 |
| UG-10-S03-A040 |  | Install sheet piles (shored lengths) |  | 2d | 2026-12-14 | 2026-12-15 | UG-10-S03-A030 SS+2d, UG-10-S03-A030 FF+2d, UG-10-S04-A040 | 7d |  | F3 | UG-10 | UG-10-S03 | A040 | 31.4 |
| UG-10-S03-A050 |  | Install dewatering and draw down |  | 8d | 2027-01-21 | 2027-01-30 | UG-10-S03-A040 SS+1d, UG-10-S03-A040 FF+2d, UG-10-S04-A060 FS-8d | 0d |  | F3 | UG-10 | UG-10-S03 | A050 | 32.1 |
| UG-10-S03-A060 |  | Excavate and strut to formation |  | 2d | 2027-01-31 | 2027-02-01 | UG-10-S03-A050 SS+9d, UG-10-S03-A050 FF+2d, UG-15-S02-A100, UG-15-S03-A100, UG-21-S01-A100, UG-22-S01-A100, UG-28-S02-A100, UG-10-S04-A060 | 1d |  | F3 | UG-10 | UG-10-S03 | A060 | 661.657773 |
| UG-10-S03-A070 |  | Trim piles, blinding and piled slab (incl. cure) |  | 6d | 2027-02-06 | 2027-02-11 | UG-10-S03-A060 SS+1d, UG-10-S03-A060 FF+2d, UG-10-S04-A070 | 0d |  | F3 | UG-10 | UG-10-S03 | A070 | 32.1 |
| UG-10-S03-A080 |  | Lay and joint pipe (incl. fittings, tie-in) |  | 3d | 2027-02-09 | 2027-02-11 | UG-10-S03-A070 SS+3d, UG-10-S03-A070 FF+2d, UG-10-S04-A080 | 0d |  | F3 | UG-10 | UG-10-S03 | A080 | 32.1 |
| UG-10-S03-A090 |  | Surround, joint test and line test |  | 3d | 2027-02-11 | 2027-02-14 | UG-10-S03-A080 SS+2d, UG-10-S03-A080 FF+2d | 0d |  | F3 | UG-10 | UG-10-S03 | A090 | 32.1 |
| UG-10-S03-A100 |  | Backfill to NG and remove struts |  | 2d | 2027-02-13 | 2027-02-14 | UG-10-S03-A090 SS+2d, UG-10-S03-A090 FF+2d, UG-10-S04-A100 | 0d |  | F3 | UG-10 | UG-10-S03 | A100 | 424.210626 |
| UG-10-S03-A110 |  | Dewatering off, extract sheets, reinstate |  | 2d | 2027-02-14 | 2027-02-15 | UG-10-S03-A100 SS+1d, UG-10-S03-A100 FF+2d |  |  | F3 | UG-10 | UG-10-S03 | A110 | 31.4 |
|  | UG-10-S02 | **UG-10-S02 / GRP-UG10-S02-EL007-CH114-(-3.19/-3.36)-107m / Run / Sheet piles** |  |  | 2026-12-01 | 2027-03-02 |  |  |  |  |  |  |  |  |
| UG-10-S02-A010 |  | Release: drawings, holds, access and gates | milestone | 0d | 2026-12-01 | 2026-12-01 |  | 9d | start on or after 2026-12-01 | F3 | UG-10 | UG-10-S02 | A010 |  |
| UG-10-S02-A020 |  | Set-out, crossing survey and working platform |  | 2d | 2026-12-12 | 2026-12-13 | UG-10-S02-A010, UG-10-S03-A030 SS | 5d |  | F3 | UG-10 | UG-10-S02 | A020 | 106.855922 |
| UG-10-S02-A030 |  | Pipe-support piling from platform (incl. integrity tests) |  | 15d | 2026-12-19 | 2027-01-04 | UG-10-S02-A020 SS+1d, UG-10-S02-A020 FF+2d, UG-10-S03-A030 | 0d |  | F3 | UG-10 | UG-10-S02 | A030 | 74 |
| UG-10-S02-A040 |  | Install sheet piles (shored lengths) |  | 9d | 2026-12-24 | 2027-01-03 | UG-10-S02-A030 SS+5d, UG-10-S02-A030 FF+2d, UG-10-S03-A040 | 4d |  | F3 | UG-10 | UG-10-S02 | A040 | 213.711844 |
| UG-10-S02-A050 |  | Install dewatering and draw down |  | 10d | 2027-01-23 | 2027-02-02 | UG-10-S02-A040 SS+3d, UG-10-S02-A040 FF+2d, UG-10-S03-A060 FS-10d | 1d |  | F3 | UG-10 | UG-10-S02 | A050 | 106.855922 |
| UG-10-S02-A060 |  | Excavate and strut to formation |  | 6d | 2027-02-03 | 2027-02-09 | UG-10-S02-A050 SS+9d, UG-10-S02-A050 FF+2d, UG-21-S01-A100, UG-22-S01-A100, UG-28-S02-A100, UG-10-S03-A060 | 0d |  | F3 | UG-10 | UG-10-S02 | A060 | 1252.603751 |
| UG-10-S02-A070 |  | Trim piles, blinding and piled slab (incl. cure) |  | 12d | 2027-02-13 | 2027-02-25 | UG-10-S02-A060 SS+3d, UG-10-S02-A060 FF+2d, UG-10-S03-A070 | 0d |  | F3 | UG-10 | UG-10-S02 | A070 | 106.855922 |
| UG-10-S02-A080 |  | Lay and joint pipe (incl. fittings, tie-in) |  | 7d | 2027-02-18 | 2027-02-25 | UG-10-S02-A070 SS+4d, UG-10-S02-A070 FF+2d, UG-10-S03-A080 | 0d |  | F3 | UG-10 | UG-10-S02 | A080 | 106.855922 |
| UG-10-S02-A090 |  | Surround, joint test and line test |  | 3d | 2027-02-21 | 2027-02-23 | UG-10-S02-A080 SS+3d, UG-10-S02-A080 FF+2d | 0d |  | F3 | UG-10 | UG-10-S02 | A090 | 106.855922 |
| UG-10-S02-A100 |  | Backfill to NG and remove struts |  | 2d | 2027-02-23 | 2027-02-24 | UG-10-S02-A090 SS+2d, UG-10-S02-A090 FF+2d, UG-10-S03-A100 | 0d |  | F3 | UG-10 | UG-10-S02 | A100 | 464.742853 |
| UG-10-S02-A110 |  | Dewatering off, extract sheets, reinstate |  | 6d | 2027-02-24 | 2027-03-02 | UG-10-S02-A100 SS+1d, UG-10-S02-A100 FF+2d |  |  | F3 | UG-10 | UG-10-S02 | A110 | 213.711844 |

Notes:
- UG-10-S03-A010: Notes: Front F3 / Line UG-10 / Package UG-10-S03 / Workbook logic: gates: START, D_DLU
- UG-10-S03-A020: Notes: Front F3 / Line UG-10 / Package UG-10-S03 / Quantity 32 m / Workbook logic: FS from A010; UG-10-S04-A030 (SS, set-out one package ahead of piling)
- UG-10-S03-A030: Notes: Front F3 / Line UG-10 / Package UG-10-S03 / Quantity 24 piles / Workbook logic: gate: D_PILEDES
- UG-10-S03-A040: Notes: Front F3 / Line UG-10 / Package UG-10-S03 / Quantity 31 m wall
- UG-10-S03-A050: Notes: Front F3 / Line UG-10 / Package UG-10-S03 / Quantity 32 m / Workbook logic: UG-10-S04-A060 (FS, negative lag = own duration: drawdown complete when the excavation crew is free)
- UG-10-S03-A060: Notes: Front F3 / Line UG-10 / Package UG-10-S03 / Quantity 662 m3 / Workbook logic: UG-15-S02-A100 (FS, deeper first); UG-15-S03-A100 (FS, deeper first); UG-21-S01-A100 (FS, deeper first); UG-22-S01-A100 (FS, deeper first); UG-28-S02-A100 (FS, deeper first)
- UG-10-S03-A070: Notes: Front F3 / Line UG-10 / Package UG-10-S03 / Quantity 32 m
- UG-10-S03-A080: Notes: Front F3 / Line UG-10 / Package UG-10-S03 / Quantity 32 m
- UG-10-S03-A090: Notes: Front F3 / Line UG-10 / Package UG-10-S03 / Quantity 32 m
- UG-10-S03-A100: Notes: Front F3 / Line UG-10 / Package UG-10-S03 / Quantity 424 m3
- UG-10-S03-A110: Notes: Front F3 / Line UG-10 / Package UG-10-S03 / Quantity 31 m wall
- UG-10-S02-A010: Notes: Front F3 / Line UG-10 / Package UG-10-S02 / Workbook logic: gates: START, D_DLU, aeration zone piling
- UG-10-S02-A020: Notes: Front F3 / Line UG-10 / Package UG-10-S02 / Quantity 107 m / Workbook logic: FS from A010; UG-10-S03-A030 (SS, set-out one package ahead of piling)
- UG-10-S02-A030: Notes: Front F3 / Line UG-10 / Package UG-10-S02 / Quantity 74 piles / Workbook logic: gate: D_PILEDES
- UG-10-S02-A040: Notes: Front F3 / Line UG-10 / Package UG-10-S02 / Quantity 214 m wall
- UG-10-S02-A050: Notes: Front F3 / Line UG-10 / Package UG-10-S02 / Quantity 107 m / Workbook logic: UG-10-S03-A060 (FS, negative lag = own duration: drawdown complete when the excavation crew is free)
- UG-10-S02-A060: Notes: Front F3 / Line UG-10 / Package UG-10-S02 / Quantity 1,253 m3 / Workbook logic: UG-21-S01-A100 (FS, deeper first); UG-22-S01-A100 (FS, deeper first); UG-28-S02-A100 (FS, deeper first)
- UG-10-S02-A070: Notes: Front F3 / Line UG-10 / Package UG-10-S02 / Quantity 107 m
- UG-10-S02-A080: Notes: Front F3 / Line UG-10 / Package UG-10-S02 / Quantity 107 m
- UG-10-S02-A090: Notes: Front F3 / Line UG-10 / Package UG-10-S02 / Quantity 107 m
- UG-10-S02-A100: Notes: Front F3 / Line UG-10 / Package UG-10-S02 / Quantity 465 m3
- UG-10-S02-A110: Notes: Front F3 / Line UG-10 / Package UG-10-S02 / Quantity 214 m wall

| ID | WBS | Activity | Type | Duration | Start | Finish | Predecessors | Free float | Constraint | Text1 | Text2 | Text3 | Text4 | Number1 |
| --- | --- | --- | --- | --- | --- | --- | --- | --- | --- | --- | --- | --- | --- | --- |
|  | UG-10-S01 | **UG-10-S01 / GRP-UG10-S01-AER-EL007-(-3.20/-3.19)-7m / Tie-in / Mixed: 5 m sheet piles** |  |  | 2026-12-01 | 2027-03-07 |  |  |  |  |  |  |  |  |
| UG-10-S01-A010 |  | Release: drawings, holds, access and gates | milestone | 0d | 2026-12-01 | 2026-12-01 |  | 15d | start on or after 2026-12-01 | F3 | UG-10 | UG-10-S01 | A010 |  |
| UG-10-S01-A020 |  | Set-out, crossing survey and working platform |  | 1d | 2026-12-19 | 2026-12-19 | UG-10-S01-A010, UG-10-S02-A030 SS | 0d |  | F3 | UG-10 | UG-10-S01 | A020 | 7.444078 |
| UG-10-S01-A030 |  | Pipe-support piling from platform (incl. integrity tests) |  | 2d | 2026-12-19 | 2026-12-20 | UG-10-S01-A020 SS+1d, UG-10-S01-A020 FF+2d | 0d |  | F3 | UG-10 | UG-10-S01 | A030 | 8 |
| UG-10-S01-A040 |  | Install sheet piles (shored lengths) |  | 1d | 2026-12-20 | 2026-12-20 | UG-10-S01-A030 SS+1d, UG-10-S01-A030 FF+2d | 0d |  | F3 | UG-10 | UG-10-S01 | A040 | 10.399996 |
| UG-10-S01-A050 |  | Install dewatering and draw down |  | 8d | 2026-12-21 | 2026-12-29 | UG-10-S01-A040 SS+1d, UG-10-S01-A040 FF+2d | 0d |  | F3 | UG-10 | UG-10-S01 | A050 | 7.444078 |
| UG-10-S01-A060 |  | Excavate and strut to formation |  | 1d | 2026-12-31 | 2026-12-31 | UG-10-S01-A050 SS+9d, UG-10-S01-A050 FF+2d | 0d |  | F3 | UG-10 | UG-10-S01 | A060 | 114.486678 |
| UG-10-S01-A070 |  | Trim piles, blinding and piled slab (incl. cure) |  | 4d | 2027-01-02 | 2027-01-05 | UG-10-S01-A060 SS+1d, UG-10-S01-A060 FF+2d | 48d |  | F3 | UG-10 | UG-10-S01 | A070 | 7.444078 |
| UG-10-S01-A080 |  | Lay and joint pipe (incl. fittings, tie-in) |  | 5d | 2027-03-01 | 2027-03-06 | UG-10-S01-A070 SS+2d, UG-10-S01-A070 FF+2d, UG-10-S02-A080 | 0d |  | F3 | UG-10 | UG-10-S01 | A080 | 7.444078 |
| UG-10-S01-A090 |  | Surround, joint test and line test |  | 3d | 2027-03-03 | 2027-03-06 | UG-10-S01-A080 SS+2d, UG-10-S01-A080 FF+2d | 0d |  | F3 | UG-10 | UG-10-S01 | A090 | 7.444078 |
| UG-10-S01-A100 |  | Backfill to NG and remove struts |  | 1d | 2027-03-06 | 2027-03-06 | UG-10-S01-A090 SS+2d, UG-10-S01-A090 FF+2d | 0d |  | F3 | UG-10 | UG-10-S01 | A100 | 58.849391 |
| UG-10-S01-A110 |  | Dewatering off, extract sheets, reinstate |  | 2d | 2027-03-06 | 2027-03-07 | UG-10-S01-A100 SS+1d, UG-10-S01-A100 FF+2d |  |  | F3 | UG-10 | UG-10-S01 | A110 | 10.399996 |
|  | UG-08 | **UG-08** |  |  | 2026-12-01 | 2027-07-20 |  |  |  |  |  |  |  |  |
|  | UG-08-S06 | **UG-08-S06 / GRP-UG08-S06-CH224-CH277-(-4.99/-4.99)-53m / Run / Sheet piles** |  |  | 2026-12-01 | 2027-05-25 |  |  |  |  |  |  |  |  |
| UG-08-S06-A010 |  | Release: drawings, holds, access and gates | milestone | 0d | 2026-12-01 | 2026-12-01 |  | 15d | start on or after 2026-12-01 | F3 | UG-08 | UG-08-S06 | A010 |  |
| UG-08-S06-A020 |  | Set-out, crossing survey and working platform |  | 1d | 2026-12-19 | 2026-12-19 | UG-08-S06-A010, UG-10-S02-A030 SS | 14d |  | F3 | UG-08 | UG-08-S06 | A020 | 53.014 |
| UG-08-S06-A030 |  | Pipe-support piling from platform (incl. integrity tests) |  | 8d | 2027-01-05 | 2027-01-13 | UG-08-S06-A020 SS+1d, UG-08-S06-A020 FF+2d, UG-10-S02-A030 | 0d |  | F3 | UG-08 | UG-08-S06 | A030 | 38 |
| UG-08-S06-A040 |  | Install sheet piles (shored lengths) |  | 5d | 2027-01-09 | 2027-01-13 | UG-08-S06-A030 SS+3d, UG-08-S06-A030 FF+2d, UG-10-S02-A040 | 3d |  | F3 | UG-08 | UG-08-S06 | A040 | 106.028 |
| UG-08-S06-A050 |  | Install dewatering and draw down |  | 9d | 2027-01-30 | 2027-02-08 | UG-08-S06-A040 SS+2d, UG-08-S06-A040 FF+2d, UG-10-S02-A060 FS-9d | 1d |  | F3 | UG-08 | UG-08-S06 | A050 | 53.014 |
| UG-08-S06-A060 |  | Excavate and strut to formation |  | 5d | 2027-02-10 | 2027-02-15 | UG-08-S06-A050 SS+9d, UG-08-S06-A050 FF+2d, UG-10-S02-A060 | 0d |  | F3 | UG-08 | UG-08-S06 | A060 | 1058.771197 |
| UG-08-S06-A070 |  | Trim piles, blinding and piled slab (incl. cure) |  | 8d | 2027-02-27 | 2027-03-07 | UG-08-S06-A060 SS+2d, UG-08-S06-A060 FF+2d, UG-10-S02-A070 | 0d |  | F3 | UG-08 | UG-08-S06 | A070 | 53.014 |
| UG-08-S06-A080 |  | Lay and joint pipe (incl. fittings, tie-in) |  | 3d | 2027-03-02 | 2027-03-04 | UG-08-S06-A070 SS+3d, UG-08-S06-A070 FF+2d, UG-10-S02-A080 | 0d |  | F3 | UG-08 | UG-08-S06 | A080 | 53.014 |
| UG-08-S06-A090 |  | Surround, joint test and line test |  | 3d | 2027-03-04 | 2027-03-07 | UG-08-S06-A080 SS+2d, UG-08-S06-A080 FF+2d | 64d |  | F3 | UG-08 | UG-08-S06 | A090 | 53.014 |
| UG-08-S06-A100 |  | Backfill to NG and remove struts |  | 2d | 2027-05-22 | 2027-05-23 | UG-08-S06-A090 SS+2d, UG-08-S06-A090 FF+2d, UG-09-S06-A080, UG-10-S02-A100 | 0d |  | F3 | UG-08 | UG-08-S06 | A100 | 667.891985 |
| UG-08-S06-A110 |  | Dewatering off, extract sheets, reinstate |  | 4d | 2027-05-22 | 2027-05-25 | UG-08-S06-A100 SS+1d, UG-08-S06-A100 FF+2d |  |  | F3 | UG-08 | UG-08-S06 | A110 | 106.028 |

Notes:
- UG-10-S01-A010: Notes: Front F3 / Line UG-10 / Package UG-10-S01 / Workbook logic: gates: START, D_DLU, structure ready, aeration zone piling
- UG-10-S01-A020: Notes: Front F3 / Line UG-10 / Package UG-10-S01 / Quantity 7 m / Workbook logic: FS from A010; UG-10-S02-A030 (SS, tie-in team follows the adjacent run)
- UG-10-S01-A030: Notes: Front F3 / Line UG-10 / Package UG-10-S01 / Quantity 8 piles / Workbook logic: gate: D_PILEDES
- UG-10-S01-A040: Notes: Front F3 / Line UG-10 / Package UG-10-S01 / Quantity 10 m wall
- UG-10-S01-A050: Notes: Front F3 / Line UG-10 / Package UG-10-S01 / Quantity 7 m
- UG-10-S01-A060: Notes: Front F3 / Line UG-10 / Package UG-10-S01 / Quantity 114 m3
- UG-10-S01-A070: Notes: Front F3 / Line UG-10 / Package UG-10-S01 / Quantity 7 m
- UG-10-S01-A080: Notes: Front F3 / Line UG-10 / Package UG-10-S01 / Quantity 7 m / Workbook logic: UG-10-S02-A080 (FS, closure)
- UG-10-S01-A090: Notes: Front F3 / Line UG-10 / Package UG-10-S01 / Quantity 7 m
- UG-10-S01-A100: Notes: Front F3 / Line UG-10 / Package UG-10-S01 / Quantity 59 m3
- UG-10-S01-A110: Notes: Front F3 / Line UG-10 / Package UG-10-S01 / Quantity 10 m wall
- UG-08-S06-A010: Notes: Front F3 / Line UG-08 / Package UG-08-S06 / Workbook logic: gates: START, D_DLU
- UG-08-S06-A020: Notes: Front F3 / Line UG-08 / Package UG-08-S06 / Quantity 53 m / Workbook logic: FS from A010; UG-10-S02-A030 (SS, set-out one package ahead of piling)
- UG-08-S06-A030: Notes: Front F3 / Line UG-08 / Package UG-08-S06 / Quantity 38 piles / Workbook logic: gate: D_PILEDES
- UG-08-S06-A040: Notes: Front F3 / Line UG-08 / Package UG-08-S06 / Quantity 106 m wall
- UG-08-S06-A050: Notes: Front F3 / Line UG-08 / Package UG-08-S06 / Quantity 53 m / Workbook logic: UG-10-S02-A060 (FS, negative lag = own duration: drawdown complete when the excavation crew is free)
- UG-08-S06-A060: Notes: Front F3 / Line UG-08 / Package UG-08-S06 / Quantity 1,059 m3
- UG-08-S06-A070: Notes: Front F3 / Line UG-08 / Package UG-08-S06 / Quantity 53 m
- UG-08-S06-A080: Notes: Front F3 / Line UG-08 / Package UG-08-S06 / Quantity 53 m
- UG-08-S06-A090: Notes: Front F3 / Line UG-08 / Package UG-08-S06 / Quantity 53 m
- UG-08-S06-A100: Notes: Front F3 / Line UG-08 / Package UG-08-S06 / Quantity 668 m3 / Workbook logic: UG-09-S06-A080 (FS, shared trench laid)
- UG-08-S06-A110: Notes: Front F3 / Line UG-08 / Package UG-08-S06 / Quantity 106 m wall

| ID | WBS | Activity | Type | Duration | Start | Finish | Predecessors | Free float | Constraint | Text1 | Text2 | Text3 | Text4 | Number1 |
| --- | --- | --- | --- | --- | --- | --- | --- | --- | --- | --- | --- | --- | --- | --- |
|  | UG-08-S05 | **UG-08-S05 / GRP-UG08-S05-CH108-CH224-(-3.18/-4.99)-116m / Run / Mixed: 54 m sheet piles** |  |  | 2026-12-01 | 2027-06-22 |  |  |  |  |  |  |  |  |
| UG-08-S05-A010 |  | Release: drawings, holds, access and gates | milestone | 0d | 2026-12-01 | 2026-12-01 |  | 39d | start on or after 2026-12-01 | F3 | UG-08 | UG-08-S05 | A010 |  |
| UG-08-S05-A020 |  | Set-out, crossing survey and working platform |  | 2d | 2027-01-16 | 2027-01-17 | UG-08-S05-A010, UG-09-S07-A030 SS | 7d |  | F3 | UG-08 | UG-08-S05 | A020 | 116.1 |
| UG-08-S05-A030 |  | Pipe-support piling from platform (incl. integrity tests) |  | 16d | 2027-01-25 | 2027-02-11 | UG-08-S05-A020 SS+1d, UG-08-S05-A020 FF+2d, UG-09-S07-A030 | 0d |  | F3 | UG-08 | UG-08-S05 | A030 | 80 |
| UG-08-S05-A040 |  | Install sheet piles (shored lengths) |  | 5d | 2027-01-31 | 2027-02-04 | UG-08-S05-A030 SS+5d, UG-08-S05-A030 FF+2d, UG-09-S07-A040 | 7d |  | F3 | UG-08 | UG-08-S05 | A040 | 108.2 |
| UG-08-S05-A050 |  | Install dewatering and draw down |  | 10d | 2027-02-10 | 2027-02-21 | UG-08-S05-A040 SS+2d, UG-08-S05-A040 FF+2d, UG-09-S07-A060 FS-10d | 17d |  | F3 | UG-08 | UG-08-S05 | A050 | 116.1 |
| UG-08-S05-A060 |  | Excavate and strut to formation |  | 7d | 2027-03-13 | 2027-03-20 | UG-08-S05-A050 SS+9d, UG-08-S05-A050 FF+2d, UG-12-S03-A100, UG-13-S03-A100, UG-13B-S11-A100, UG-09-S07-A060 SS, UG-09-S07-A060 | 1d |  | F3 | UG-08 | UG-08-S05 | A060 | 2361.15955 |
| UG-08-S05-A070 |  | Trim piles, blinding and piled slab (incl. cure) |  | 13d | 2027-03-20 | 2027-04-03 | UG-08-S05-A060 SS+3d, UG-08-S05-A060 FF+2d, UG-09-S07-A070 | 0d |  | F3 | UG-08 | UG-08-S05 | A070 | 116.1 |
| UG-08-S05-A080 |  | Lay and joint pipe (incl. fittings, tie-in) |  | 10d | 2027-03-24 | 2027-04-04 | UG-08-S05-A070 SS+4d, UG-08-S05-A070 FF+2d, UG-09-S07-A080 | 0d |  | F3 | UG-08 | UG-08-S05 | A080 | 116.1 |
| UG-08-S05-A090 |  | Surround, joint test and line test |  | 3d | 2027-03-28 | 2027-03-30 | UG-08-S05-A080 SS+3d, UG-08-S05-A080 FF+2d | 68d |  | F3 | UG-08 | UG-08-S05 | A090 | 116.1 |
| UG-08-S05-A100 |  | Backfill to NG and remove struts |  | 5d | 2027-06-17 | 2027-06-22 | UG-08-S05-A090 SS+2d, UG-08-S05-A090 FF+2d, UG-09-S04-A080, UG-09-S05-A080, UG-09-S06-A080, UG-09-S07-A080, UG-09-S07-A100 | 0d |  | F3 | UG-08 | UG-08-S05 | A100 | 1498.430014 |
| UG-08-S05-A110 |  | Dewatering off, extract sheets, reinstate |  | 4d | 2027-06-19 | 2027-06-22 | UG-08-S05-A100 SS+2d, UG-08-S05-A100 FF+2d |  |  | F3 | UG-08 | UG-08-S05 | A110 | 108.2 |
|  | UG-08-S04 | **UG-08-S04 / GRP-UG08-S04-CH060-CH108-(-3.17/-3.18)-48m / Run / Open cut** |  |  | 2026-12-01 | 2027-07-07 |  |  |  |  |  |  |  |  |
| UG-08-S04-A010 |  | Release: drawings, holds, access and gates | milestone | 0d | 2026-12-01 | 2026-12-01 |  | 73d | start on or after 2026-12-01 | F3 | UG-08 | UG-08-S04 | A010 |  |
| UG-08-S04-A020 |  | Set-out, crossing survey and working platform |  | 1d | 2027-02-24 | 2027-02-24 | UG-08-S04-A010, UG-09-S05-A030 SS | 3d |  | F3 | UG-08 | UG-08-S04 | A020 | 48 |
| UG-08-S04-A030 |  | Pipe-support piling from platform (incl. integrity tests) |  | 7d | 2027-03-01 | 2027-03-08 | UG-08-S04-A020 SS+1d, UG-08-S04-A020 FF+2d, UG-09-S05-A030 | 0d |  | F3 | UG-08 | UG-08-S04 | A030 | 34 |
| UG-08-S04-A050 |  | Install dewatering and draw down |  | 9d | 2027-05-02 | 2027-05-11 | UG-09-S05-A060 FS-9d, UG-08-S04-A030 SS+3d, UG-08-S04-A030 SF+5d, UG-08-S04-A030 FF+2d | 1d |  | F3 | UG-08 | UG-08-S04 | A050 | 48 |
| UG-08-S04-A060 |  | Excavate and strut to formation |  | 3d | 2027-05-13 | 2027-05-16 | UG-08-S04-A050 SS+9d, UG-08-S04-A050 FF+2d, UG-11-S03-A100, UG-11-S04-A100, UG-13-S05-A100, UG-23-S02-A100, UG-23-S03-A100, UG-23-S04-A100, UG-09-S05-A060 | 0d |  | F3 | UG-08 | UG-08-S04 | A060 | 1129.870824 |
| UG-08-S04-A070 |  | Trim piles, blinding and piled slab (incl. cure) |  | 7d | 2027-05-25 | 2027-06-01 | UG-08-S04-A060 SS+2d, UG-08-S04-A060 FF+2d, UG-09-S05-A070 | 0d |  | F3 | UG-08 | UG-08-S04 | A070 | 48 |
| UG-08-S04-A080 |  | Lay and joint pipe (incl. fittings, tie-in) |  | 4d | 2027-05-29 | 2027-06-01 | UG-08-S04-A070 SS+3d, UG-08-S04-A070 FF+2d, UG-09-S05-A080 | 0d |  | F3 | UG-08 | UG-08-S04 | A080 | 48 |
| UG-08-S04-A090 |  | Surround, joint test and line test |  | 3d | 2027-05-30 | 2027-06-01 | UG-08-S04-A080 SS+2d, UG-08-S04-A080 FF+2d | 29d |  | F3 | UG-08 | UG-08-S04 | A090 | 48 |
| UG-08-S04-A100 |  | Backfill to NG and remove struts |  | 3d | 2027-07-05 | 2027-07-07 | UG-08-S04-A090 SS+2d, UG-08-S04-A090 FF+2d, UG-09-S03-A080, UG-09-S04-A080, UG-09-S05-A100 | 0d |  | F3 | UG-08 | UG-08-S04 | A100 | 768.51685 |
| UG-08-S04-A110 |  | Dewatering off, extract sheets, reinstate |  | 1d | 2027-07-07 | 2027-07-07 | UG-08-S04-A100 SS+2d, UG-08-S04-A100 FF+2d |  |  | F3 | UG-08 | UG-08-S04 | A110 | 0 |
|  | UG-08-S03 | **UG-08-S03 / GRP-UG08-S03-CH038-CH060-(-3.16/-3.17)-22m / Run / Mixed: 19 m sheet piles** |  |  | 2026-12-01 | 2027-07-17 |  |  |  |  |  |  |  |  |
| UG-08-S03-A010 |  | Release: drawings, holds, access and gates | milestone | 0d | 2026-12-01 | 2026-12-01 |  | 85d | start on or after 2026-12-01 | F3 | UG-08 | UG-08-S03 | A010 |  |
| UG-08-S03-A020 |  | Set-out, crossing survey and working platform |  | 1d | 2027-03-10 | 2027-03-10 | UG-08-S03-A010, UG-09-S04-A030 SS | 11d |  | F3 | UG-08 | UG-08-S03 | A020 | 22 |
| UG-08-S03-A030 |  | Pipe-support piling from platform (incl. integrity tests) |  | 4d | 2027-03-24 | 2027-03-28 | UG-08-S03-A020 SS+1d, UG-08-S03-A020 FF+2d, UG-09-S04-A030 | 0d |  | F3 | UG-08 | UG-08-S03 | A030 | 18 |
| UG-08-S03-A040 |  | Install sheet piles (shored lengths) |  | 2d | 2027-03-27 | 2027-03-28 | UG-08-S03-A030 SS+2d, UG-08-S03-A030 FF+2d, UG-09-S06-A040 | 2d |  | F3 | UG-08 | UG-08-S03 | A040 | 37.816073 |
| UG-08-S03-A050 |  | Install dewatering and draw down |  | 8d | 2027-05-13 | 2027-05-22 | UG-08-S03-A040 SS+1d, UG-08-S03-A040 FF+2d, UG-09-S04-A060 FS-8d | 0d |  | F3 | UG-08 | UG-08-S03 | A050 | 22 |
| UG-08-S03-A060 |  | Excavate and strut to formation |  | 2d | 2027-05-23 | 2027-05-24 | UG-08-S03-A050 SS+9d, UG-08-S03-A050 FF+2d, UG-11-S03-A100, UG-11-S04-A100, UG-23-S03-A100, UG-23-S04-A100, UG-23-S05-A100, UG-09-S04-A060 SS, UG-09-S04-A060 | 0d |  | F3 | UG-08 | UG-08-S03 | A060 | 288.428521 |
| UG-08-S03-A070 |  | Trim piles, blinding and piled slab (incl. cure) |  | 5d | 2027-06-15 | 2027-06-20 | UG-08-S03-A060 SS+1d, UG-08-S03-A060 FF+2d, UG-09-S04-A070 | 0d |  | F3 | UG-08 | UG-08-S03 | A070 | 22 |
| UG-08-S03-A080 |  | Lay and joint pipe (incl. fittings, tie-in) |  | 3d | 2027-06-17 | 2027-06-20 | UG-08-S03-A070 SS+2d, UG-08-S03-A070 FF+2d, UG-09-S04-A080 | 0d |  | F3 | UG-08 | UG-08-S03 | A080 | 22 |
| UG-08-S03-A090 |  | Surround, joint test and line test |  | 3d | 2027-06-19 | 2027-06-21 | UG-08-S03-A080 SS+2d, UG-08-S03-A080 FF+2d | 18d |  | F3 | UG-08 | UG-08-S03 | A090 | 22 |
| UG-08-S03-A100 |  | Backfill to NG and remove struts |  | 1d | 2027-07-14 | 2027-07-14 | UG-08-S03-A090 SS+2d, UG-08-S03-A090 FF+2d, UG-09-S02-A080, UG-09-S03-A080, UG-09-S04-A080, UG-09-S04-A100 | 0d |  | F3 | UG-08 | UG-08-S03 | A100 | 126.143499 |
| UG-08-S03-A110 |  | Dewatering off, extract sheets, reinstate |  | 2d | 2027-07-15 | 2027-07-17 | UG-08-S03-A100 SS+1d, UG-08-S03-A100 FF+2d |  |  | F3 | UG-08 | UG-08-S03 | A110 | 37.816073 |

Notes:
- UG-08-S05-A010: Notes: Front F3 / Line UG-08 / Package UG-08-S05 / Workbook logic: gates: START, D_DLU
- UG-08-S05-A020: Notes: Front F3 / Line UG-08 / Package UG-08-S05 / Quantity 116 m / Workbook logic: FS from A010; UG-09-S07-A030 (SS, set-out one package ahead of piling)
- UG-08-S05-A030: Notes: Front F3 / Line UG-08 / Package UG-08-S05 / Quantity 80 piles / Workbook logic: gate: D_PILEDES
- UG-08-S05-A040: Notes: Front F3 / Line UG-08 / Package UG-08-S05 / Quantity 108 m wall
- UG-08-S05-A050: Notes: Front F3 / Line UG-08 / Package UG-08-S05 / Quantity 116 m / Workbook logic: UG-09-S07-A060 (FS, negative lag = own duration: drawdown complete when the excavation crew is free)
- UG-08-S05-A060: Notes: Front F3 / Line UG-08 / Package UG-08-S05 / Quantity 2,361 m3 / Workbook logic: UG-12-S03-A100 (FS, deeper first); UG-13-S03-A100 (FS, deeper first); UG-13B-S11-A100 (FS, deeper first); UG-09-S07-A060 (SS, shared trench)
- UG-08-S05-A070: Notes: Front F3 / Line UG-08 / Package UG-08-S05 / Quantity 116 m
- UG-08-S05-A080: Notes: Front F3 / Line UG-08 / Package UG-08-S05 / Quantity 116 m
- UG-08-S05-A090: Notes: Front F3 / Line UG-08 / Package UG-08-S05 / Quantity 116 m
- UG-08-S05-A100: Notes: Front F3 / Line UG-08 / Package UG-08-S05 / Quantity 1,498 m3 / Workbook logic: UG-09-S04-A080 (FS, shared trench laid); UG-09-S05-A080 (FS, shared trench laid); UG-09-S06-A080 (FS, shared trench laid); UG-09-S07-A080 (FS, shared trench laid)
- UG-08-S05-A110: Notes: Front F3 / Line UG-08 / Package UG-08-S05 / Quantity 108 m wall
- UG-08-S04-A010: Notes: Front F3 / Line UG-08 / Package UG-08-S04 / Workbook logic: gates: START, D_DLU
- UG-08-S04-A020: Notes: Front F3 / Line UG-08 / Package UG-08-S04 / Quantity 48 m / Workbook logic: FS from A010; UG-09-S05-A030 (SS, set-out one package ahead of piling)
- UG-08-S04-A030: Notes: Front F3 / Line UG-08 / Package UG-08-S04 / Quantity 34 piles / Workbook logic: gate: D_PILEDES
- UG-08-S04-A050: Notes: Front F3 / Line UG-08 / Package UG-08-S04 / Quantity 48 m / Workbook logic: UG-09-S05-A060 (FS, negative lag = own duration: drawdown complete when the excavation crew is free)
- UG-08-S04-A060: Notes: Front F3 / Line UG-08 / Package UG-08-S04 / Quantity 1,130 m3 / Workbook logic: UG-11-S03-A100 (FS, deeper first); UG-11-S04-A100 (FS, deeper first); UG-13-S05-A100 (FS, deeper first); UG-23-S02-A100 (FS, deeper first); UG-23-S03-A100 (FS, deeper first); UG-23-S04-A100 (FS, deeper first)
- UG-08-S04-A070: Notes: Front F3 / Line UG-08 / Package UG-08-S04 / Quantity 48 m
- UG-08-S04-A080: Notes: Front F3 / Line UG-08 / Package UG-08-S04 / Quantity 48 m
- UG-08-S04-A090: Notes: Front F3 / Line UG-08 / Package UG-08-S04 / Quantity 48 m
- UG-08-S04-A100: Notes: Front F3 / Line UG-08 / Package UG-08-S04 / Quantity 769 m3 / Workbook logic: UG-09-S03-A080 (FS, shared trench laid); UG-09-S04-A080 (FS, shared trench laid)
- UG-08-S04-A110: Notes: Front F3 / Line UG-08 / Package UG-08-S04 / Quantity 0 m wall
- UG-08-S03-A010: Notes: Front F3 / Line UG-08 / Package UG-08-S03 / Workbook logic: gates: START, D_DLU
- UG-08-S03-A020: Notes: Front F3 / Line UG-08 / Package UG-08-S03 / Quantity 22 m / Workbook logic: FS from A010; UG-09-S04-A030 (SS, set-out one package ahead of piling)
- UG-08-S03-A030: Notes: Front F3 / Line UG-08 / Package UG-08-S03 / Quantity 18 piles / Workbook logic: gate: D_PILEDES
- UG-08-S03-A040: Notes: Front F3 / Line UG-08 / Package UG-08-S03 / Quantity 38 m wall
- UG-08-S03-A050: Notes: Front F3 / Line UG-08 / Package UG-08-S03 / Quantity 22 m / Workbook logic: UG-09-S04-A060 (FS, negative lag = own duration: drawdown complete when the excavation crew is free)
- UG-08-S03-A060: Notes: Front F3 / Line UG-08 / Package UG-08-S03 / Quantity 288 m3 / Workbook logic: UG-11-S03-A100 (FS, deeper first); UG-11-S04-A100 (FS, deeper first); UG-23-S03-A100 (FS, deeper first); UG-23-S04-A100 (FS, deeper first); UG-23-S05-A100 (FS, deeper first); UG-09-S04-A060 (SS, shared trench)
- UG-08-S03-A070: Notes: Front F3 / Line UG-08 / Package UG-08-S03 / Quantity 22 m
- UG-08-S03-A080: Notes: Front F3 / Line UG-08 / Package UG-08-S03 / Quantity 22 m
- UG-08-S03-A090: Notes: Front F3 / Line UG-08 / Package UG-08-S03 / Quantity 22 m
- UG-08-S03-A100: Notes: Front F3 / Line UG-08 / Package UG-08-S03 / Quantity 126 m3 / Workbook logic: UG-09-S02-A080 (FS, shared trench laid); UG-09-S03-A080 (FS, shared trench laid); UG-09-S04-A080 (FS, shared trench laid)
- UG-08-S03-A110: Notes: Front F3 / Line UG-08 / Package UG-08-S03 / Quantity 38 m wall

| ID | WBS | Activity | Type | Duration | Start | Finish | Predecessors | Free float | Constraint | Text1 | Text2 | Text3 | Text4 | Number1 |
| --- | --- | --- | --- | --- | --- | --- | --- | --- | --- | --- | --- | --- | --- | --- |
|  | UG-08-S02 | **UG-08-S02 / GRP-UG08-S02-EL021-CH038-(-3.16/-3.16)-17m / Run / Sheet piles** |  |  | 2026-12-01 | 2027-07-20 |  |  |  |  |  |  |  |  |
| UG-08-S02-A010 |  | Release: drawings, holds, access and gates | milestone | 0d | 2026-12-01 | 2026-12-01 |  | 97d | start on or after 2026-12-01 | F3 | UG-08 | UG-08-S02 | A010 |  |
| UG-08-S02-A020 |  | Set-out, crossing survey and working platform |  | 1d | 2027-03-24 | 2027-03-24 | UG-08-S02-A010, UG-08-S03-A030 SS | 3d |  | F3 | UG-08 | UG-08-S02 | A020 | 17.478903 |
| UG-08-S02-A030 |  | Pipe-support piling from platform (incl. integrity tests) |  | 3d | 2027-03-29 | 2027-03-31 | UG-08-S02-A020 SS+1d, UG-08-S02-A020 FF+2d, UG-08-S03-A030 | 0d |  | F3 | UG-08 | UG-08-S02 | A030 | 14 |
| UG-08-S02-A040 |  | Install sheet piles (shored lengths) |  | 2d | 2027-03-31 | 2027-04-01 | UG-08-S02-A030 SS+2d, UG-08-S02-A030 FF+2d, UG-08-S03-A040 | 1d |  | F3 | UG-08 | UG-08-S02 | A040 | 34.957807 |
| UG-08-S02-A050 |  | Install dewatering and draw down |  | 8d | 2027-05-16 | 2027-05-24 | UG-08-S02-A040 SS+1d, UG-08-S02-A040 FF+2d, UG-08-S03-A060 FS-8d | 0d |  | F3 | UG-08 | UG-08-S02 | A050 | 17.478903 |
| UG-08-S02-A060 |  | Excavate and strut to formation |  | 1d | 2027-05-26 | 2027-05-26 | UG-08-S02-A050 SS+9d, UG-08-S02-A050 FF+2d, UG-11-S04-A100, UG-23-S04-A100, UG-23-S05-A100, UG-08-S03-A060 | 0d |  | F3 | UG-08 | UG-08-S02 | A060 | 200.119878 |
| UG-08-S02-A070 |  | Trim piles, blinding and piled slab (incl. cure) |  | 5d | 2027-06-21 | 2027-06-26 | UG-08-S02-A060 SS+1d, UG-08-S02-A060 FF+2d, UG-08-S03-A070 | 0d |  | F3 | UG-08 | UG-08-S02 | A070 | 17.478903 |
| UG-08-S02-A080 |  | Lay and joint pipe (incl. fittings, tie-in) |  | 1d | 2027-06-23 | 2027-06-23 | UG-08-S02-A070 SS+2d, UG-08-S02-A070 FF+2d, UG-08-S03-A080 | 0d |  | F3 | UG-08 | UG-08-S02 | A080 | 17.478903 |
| UG-08-S02-A090 |  | Surround, joint test and line test |  | 3d | 2027-06-24 | 2027-06-27 | UG-08-S02-A080 SS+1d, UG-08-S02-A080 FF+2d | 16d |  | F3 | UG-08 | UG-08-S02 | A090 | 17.478903 |
| UG-08-S02-A100 |  | Backfill to NG and remove struts |  | 1d | 2027-07-18 | 2027-07-18 | UG-08-S02-A090 SS+2d, UG-08-S02-A090 FF+2d, UG-09-S01-A080, UG-09-S02-A080, UG-09-S03-A080, UG-08-S03-A100 | 0d |  | F3 | UG-08 | UG-08-S02 | A100 | 71.245739 |
| UG-08-S02-A110 |  | Dewatering off, extract sheets, reinstate |  | 2d | 2027-07-19 | 2027-07-20 | UG-08-S02-A100 SS+1d, UG-08-S02-A100 FF+2d |  |  | F3 | UG-08 | UG-08-S02 | A110 | 34.957807 |
|  | UG-08-S01 | **UG-08-S01 / GRP-UG08-S01-AER-EL021-(-3.17/-3.16)-21m / Tie-in / Open cut** |  |  | 2026-12-01 | 2027-07-19 |  |  |  |  |  |  |  |  |
| UG-08-S01-A010 |  | Release: drawings, holds, access and gates | milestone | 0d | 2026-12-01 | 2026-12-01 |  | 101d | start on or after 2026-12-01 | F3 | UG-08 | UG-08-S01 | A010 |  |
| UG-08-S01-A020 |  | Set-out, crossing survey and working platform |  | 1d | 2027-03-29 | 2027-03-29 | UG-08-S01-A010, UG-08-S02-A030 SS | 0d |  | F3 | UG-08 | UG-08-S01 | A020 | 20.521097 |
| UG-08-S01-A030 |  | Pipe-support piling from platform (incl. integrity tests) |  | 4d | 2027-03-30 | 2027-04-03 | UG-08-S01-A020 SS+1d, UG-08-S01-A020 FF+2d | 0d |  | F3 | UG-08 | UG-08-S01 | A030 | 16 |
| UG-08-S01-A050 |  | Install dewatering and draw down |  | 8d | 2027-04-01 | 2027-04-10 | UG-08-S01-A030 SS+2d, UG-08-S01-A030 SF+4d, UG-08-S01-A030 FF+2d | 38d |  | F3 | UG-08 | UG-08-S01 | A050 | 20.521097 |
| UG-08-S01-A060 |  | Excavate and strut to formation |  | 2d | 2027-05-26 | 2027-05-27 | UG-08-S01-A050 SS+9d, UG-08-S01-A050 FF+2d, UG-23-S05-A100, UG-09-S01-A060 SS | 0d |  | F3 | UG-08 | UG-08-S01 | A060 | 482.209442 |
| UG-08-S01-A070 |  | Trim piles, blinding and piled slab (incl. cure) |  | 5d | 2027-05-27 | 2027-06-01 | UG-08-S01-A060 SS+1d, UG-08-S01-A060 FF+2d | 26d |  | F3 | UG-08 | UG-08-S01 | A070 | 20.521097 |
| UG-08-S01-A080 |  | Lay and joint pipe (incl. fittings, tie-in) |  | 6d | 2027-06-29 | 2027-07-05 | UG-08-S01-A070 SS+2d, UG-08-S01-A070 FF+2d, UG-08-S02-A080 | 0d |  | F3 | UG-08 | UG-08-S01 | A080 | 20.521097 |
| UG-08-S01-A090 |  | Surround, joint test and line test |  | 3d | 2027-07-03 | 2027-07-05 | UG-08-S01-A080 SS+3d, UG-08-S01-A080 FF+2d | 9d |  | F3 | UG-08 | UG-08-S01 | A090 | 20.521097 |
| UG-08-S01-A100 |  | Backfill to NG and remove struts |  | 1d | 2027-07-18 | 2027-07-18 | UG-08-S01-A090 SS+2d, UG-08-S01-A090 FF+2d, UG-09-S01-A080, UG-09-S02-A080 | 0d |  | F3 | UG-08 | UG-08-S01 | A100 | 328.125926 |
| UG-08-S01-A110 |  | Dewatering off, extract sheets, reinstate |  | 1d | 2027-07-19 | 2027-07-19 | UG-08-S01-A100 SS+1d, UG-08-S01-A100 FF+2d |  |  | F3 | UG-08 | UG-08-S01 | A110 | 0 |
|  | UG-08-S07 | **UG-08-S07 / GRP-UG08-S07-CH277-SDCC-(-4.99/-4.99)-6m / Tie-in / Sheet piles** |  |  | 2026-12-01 | 2027-03-17 |  |  |  |  |  |  |  |  |
| UG-08-S07-A010 |  | Release: drawings, holds, access and gates | milestone | 0d | 2026-12-01 | 2026-12-01 |  | 30d | start on or after 2026-12-01 | F3 | UG-08 | UG-08-S07 | A010 |  |
| UG-08-S07-A020 |  | Set-out, crossing survey and working platform |  | 1d | 2027-01-05 | 2027-01-05 | UG-08-S07-A010, UG-08-S06-A030 SS | 0d |  | F3 | UG-08 | UG-08-S07 | A020 | 5.999941 |
| UG-08-S07-A030 |  | Pipe-support piling from platform (incl. integrity tests) |  | 2d | 2027-01-06 | 2027-01-07 | UG-08-S07-A020 SS+1d, UG-08-S07-A020 FF+2d | 0d |  | F3 | UG-08 | UG-08-S07 | A030 | 6 |
| UG-08-S07-A040 |  | Install sheet piles (shored lengths) |  | 1d | 2027-01-07 | 2027-01-07 | UG-08-S07-A030 SS+1d, UG-08-S07-A030 FF+2d | 0d |  | F3 | UG-08 | UG-08-S07 | A040 | 11.999883 |
| UG-08-S07-A050 |  | Install dewatering and draw down |  | 8d | 2027-01-09 | 2027-01-17 | UG-08-S07-A040 SS+1d, UG-08-S07-A040 FF+2d | 0d |  | F3 | UG-08 | UG-08-S07 | A050 | 5.999941 |
| UG-08-S07-A060 |  | Excavate and strut to formation |  | 1d | 2027-01-18 | 2027-01-18 | UG-08-S07-A050 SS+9d, UG-08-S07-A050 FF+2d | 0d |  | F3 | UG-08 | UG-08-S07 | A060 | 119.827979 |
| UG-08-S07-A070 |  | Trim piles, blinding and piled slab (incl. cure) |  | 4d | 2027-01-19 | 2027-01-23 | UG-08-S07-A060 SS+1d, UG-08-S07-A060 FF+2d | 42d |  | F3 | UG-08 | UG-08-S07 | A070 | 5.999941 |
| UG-08-S07-A080 |  | Lay and joint pipe (incl. fittings, tie-in) |  | 4d | 2027-03-11 | 2027-03-15 | UG-08-S07-A070 SS+2d, UG-08-S07-A070 FF+2d, UG-08-S06-A080 | 0d |  | F3 | UG-08 | UG-08-S07 | A080 | 5.999941 |
| UG-08-S07-A090 |  | Surround, joint test and line test |  | 3d | 2027-03-13 | 2027-03-15 | UG-08-S07-A080 SS+2d, UG-08-S07-A080 FF+2d | 0d |  | F3 | UG-08 | UG-08-S07 | A090 | 5.999941 |
| UG-08-S07-A100 |  | Backfill to NG and remove struts |  | 1d | 2027-03-15 | 2027-03-15 | UG-08-S07-A090 SS+2d, UG-08-S07-A090 FF+2d | 0d |  | F3 | UG-08 | UG-08-S07 | A100 | 75.589682 |
| UG-08-S07-A110 |  | Dewatering off, extract sheets, reinstate |  | 2d | 2027-03-16 | 2027-03-17 | UG-08-S07-A100 SS+1d, UG-08-S07-A100 FF+2d |  |  | F3 | UG-08 | UG-08-S07 | A110 | 11.999883 |

Notes:
- UG-08-S02-A010: Notes: Front F3 / Line UG-08 / Package UG-08-S02 / Workbook logic: gates: START, D_DLU
- UG-08-S02-A020: Notes: Front F3 / Line UG-08 / Package UG-08-S02 / Quantity 17 m / Workbook logic: FS from A010; UG-08-S03-A030 (SS, set-out one package ahead of piling)
- UG-08-S02-A030: Notes: Front F3 / Line UG-08 / Package UG-08-S02 / Quantity 14 piles / Workbook logic: gate: D_PILEDES
- UG-08-S02-A040: Notes: Front F3 / Line UG-08 / Package UG-08-S02 / Quantity 35 m wall
- UG-08-S02-A050: Notes: Front F3 / Line UG-08 / Package UG-08-S02 / Quantity 17 m / Workbook logic: UG-08-S03-A060 (FS, negative lag = own duration: drawdown complete when the excavation crew is free)
- UG-08-S02-A060: Notes: Front F3 / Line UG-08 / Package UG-08-S02 / Quantity 200 m3 / Workbook logic: UG-11-S04-A100 (FS, deeper first); UG-23-S04-A100 (FS, deeper first); UG-23-S05-A100 (FS, deeper first)
- UG-08-S02-A070: Notes: Front F3 / Line UG-08 / Package UG-08-S02 / Quantity 17 m
- UG-08-S02-A080: Notes: Front F3 / Line UG-08 / Package UG-08-S02 / Quantity 17 m
- UG-08-S02-A090: Notes: Front F3 / Line UG-08 / Package UG-08-S02 / Quantity 17 m
- UG-08-S02-A100: Notes: Front F3 / Line UG-08 / Package UG-08-S02 / Quantity 71 m3 / Workbook logic: UG-09-S01-A080 (FS, shared trench laid); UG-09-S02-A080 (FS, shared trench laid); UG-09-S03-A080 (FS, shared trench laid)
- UG-08-S02-A110: Notes: Front F3 / Line UG-08 / Package UG-08-S02 / Quantity 35 m wall
- UG-08-S01-A010: Notes: Front F3 / Line UG-08 / Package UG-08-S01 / Workbook logic: gates: START, D_DLU, structure ready
- UG-08-S01-A020: Notes: Front F3 / Line UG-08 / Package UG-08-S01 / Quantity 21 m / Workbook logic: FS from A010; UG-08-S02-A030 (SS, tie-in team follows the adjacent run)
- UG-08-S01-A030: Notes: Front F3 / Line UG-08 / Package UG-08-S01 / Quantity 16 piles / Workbook logic: gate: D_PILEDES
- UG-08-S01-A050: Notes: Front F3 / Line UG-08 / Package UG-08-S01 / Quantity 21 m
- UG-08-S01-A060: Notes: Front F3 / Line UG-08 / Package UG-08-S01 / Quantity 482 m3 / Workbook logic: UG-23-S05-A100 (FS, deeper first); UG-09-S01-A060 (SS, shared trench)
- UG-08-S01-A070: Notes: Front F3 / Line UG-08 / Package UG-08-S01 / Quantity 21 m
- UG-08-S01-A080: Notes: Front F3 / Line UG-08 / Package UG-08-S01 / Quantity 21 m / Workbook logic: UG-08-S02-A080 (FS, closure)
- UG-08-S01-A090: Notes: Front F3 / Line UG-08 / Package UG-08-S01 / Quantity 21 m
- UG-08-S01-A100: Notes: Front F3 / Line UG-08 / Package UG-08-S01 / Quantity 328 m3 / Workbook logic: UG-09-S01-A080 (FS, shared trench laid); UG-09-S02-A080 (FS, shared trench laid)
- UG-08-S01-A110: Notes: Front F3 / Line UG-08 / Package UG-08-S01 / Quantity 0 m wall
- UG-08-S07-A010: Notes: Front F3 / Line UG-08 / Package UG-08-S07 / Workbook logic: gates: START, D_DLU, structure ready
- UG-08-S07-A020: Notes: Front F3 / Line UG-08 / Package UG-08-S07 / Quantity 6 m / Workbook logic: FS from A010; UG-08-S06-A030 (SS, tie-in team follows the adjacent run)
- UG-08-S07-A030: Notes: Front F3 / Line UG-08 / Package UG-08-S07 / Quantity 6 piles / Workbook logic: gate: D_PILEDES
- UG-08-S07-A040: Notes: Front F3 / Line UG-08 / Package UG-08-S07 / Quantity 12 m wall
- UG-08-S07-A050: Notes: Front F3 / Line UG-08 / Package UG-08-S07 / Quantity 6 m
- UG-08-S07-A060: Notes: Front F3 / Line UG-08 / Package UG-08-S07 / Quantity 120 m3
- UG-08-S07-A070: Notes: Front F3 / Line UG-08 / Package UG-08-S07 / Quantity 6 m
- UG-08-S07-A080: Notes: Front F3 / Line UG-08 / Package UG-08-S07 / Quantity 6 m / Workbook logic: UG-08-S06-A080 (FS, closure)
- UG-08-S07-A090: Notes: Front F3 / Line UG-08 / Package UG-08-S07 / Quantity 6 m
- UG-08-S07-A100: Notes: Front F3 / Line UG-08 / Package UG-08-S07 / Quantity 76 m3
- UG-08-S07-A110: Notes: Front F3 / Line UG-08 / Package UG-08-S07 / Quantity 12 m wall

| ID | WBS | Activity | Type | Duration | Start | Finish | Predecessors | Free float | Constraint | Text1 | Text2 | Text3 | Text4 | Number1 |
| --- | --- | --- | --- | --- | --- | --- | --- | --- | --- | --- | --- | --- | --- | --- |
|  | UG-09 | **UG-09** |  |  | 2026-12-01 | 2027-07-25 |  |  |  |  |  |  |  |  |
|  | UG-09-S07 | **UG-09-S07 / GRP-UG09-S07-CH231-CH282-(-4.98/-4.98)-51m / Run / Sheet piles** |  |  | 2026-12-01 | 2027-05-29 |  |  |  |  |  |  |  |  |
| UG-09-S07-A010 |  | Release: drawings, holds, access and gates | milestone | 0d | 2026-12-01 | 2026-12-01 |  | 30d | start on or after 2026-12-01 | F3 | UG-09 | UG-09-S07 | A010 |  |
| UG-09-S07-A020 |  | Set-out, crossing survey and working platform |  | 1d | 2027-01-05 | 2027-01-05 | UG-09-S07-A010, UG-08-S06-A030 SS | 8d |  | F3 | UG-09 | UG-09-S07 | A020 | 51.181853 |
| UG-09-S07-A030 |  | Pipe-support piling from platform (incl. integrity tests) |  | 8d | 2027-01-16 | 2027-01-24 | UG-09-S07-A020 SS+1d, UG-09-S07-A020 FF+2d, UG-08-S06-A030 | 0d |  | F3 | UG-09 | UG-09-S07 | A030 | 38 |
| UG-09-S07-A040 |  | Install sheet piles (shored lengths) |  | 5d | 2027-01-18 | 2027-01-23 | UG-09-S07-A030 SS+3d, UG-09-S07-A030 FF+2d, UG-08-S06-A040 | 6d |  | F3 | UG-09 | UG-09-S07 | A040 | 102.363705 |
| UG-09-S07-A050 |  | Install dewatering and draw down |  | 9d | 2027-02-06 | 2027-02-15 | UG-09-S07-A040 SS+2d, UG-09-S07-A040 FF+2d, UG-08-S06-A060 FS-9d | 0d |  | F3 | UG-09 | UG-09-S07 | A050 | 51.181853 |
| UG-09-S07-A060 |  | Excavate and strut to formation |  | 5d | 2027-02-16 | 2027-02-21 | UG-09-S07-A050 SS+9d, UG-09-S07-A050 FF+2d, UG-08-S06-A060 | 0d |  | F3 | UG-09 | UG-09-S07 | A060 | 1019.79509 |
| UG-09-S07-A070 |  | Trim piles, blinding and piled slab (incl. cure) |  | 8d | 2027-03-09 | 2027-03-17 | UG-09-S07-A060 SS+2d, UG-09-S07-A060 FF+2d, UG-08-S06-A070 | 0d |  | F3 | UG-09 | UG-09-S07 | A070 | 51.181853 |
| UG-09-S07-A080 |  | Lay and joint pipe (incl. fittings, tie-in) |  | 3d | 2027-03-13 | 2027-03-15 | UG-09-S07-A070 SS+3d, UG-09-S07-A070 FF+2d, UG-08-S06-A080 | 0d |  | F3 | UG-09 | UG-09-S07 | A080 | 51.181853 |
| UG-09-S07-A090 |  | Surround, joint test and line test |  | 3d | 2027-03-14 | 2027-03-16 | UG-09-S07-A080 SS+2d, UG-09-S07-A080 FF+2d | 58d |  | F3 | UG-09 | UG-09-S07 | A090 | 51.181853 |
| UG-09-S07-A100 |  | Backfill to NG and remove struts |  | 2d | 2027-05-24 | 2027-05-25 | UG-09-S07-A090 SS+2d, UG-09-S07-A090 FF+2d, UG-08-S05-A080, UG-08-S06-A100 | 0d |  | F3 | UG-09 | UG-09-S07 | A100 | 642.425791 |
| UG-09-S07-A110 |  | Dewatering off, extract sheets, reinstate |  | 4d | 2027-05-25 | 2027-05-29 | UG-09-S07-A100 SS+1d, UG-09-S07-A100 FF+2d |  |  | F3 | UG-09 | UG-09-S07 | A110 | 102.363705 |
|  | UG-09-S06 | **UG-09-S06 / GRP-UG09-S06-CH168-CH231-(-3.30/-4.98)-62m / Run / Mixed: 61 m sheet piles** |  |  | 2026-12-01 | 2027-06-28 |  |  |  |  |  |  |  |  |
| UG-09-S06-A010 |  | Release: drawings, holds, access and gates | milestone | 0d | 2026-12-01 | 2026-12-01 |  | 47d | start on or after 2026-12-01 | F3 | UG-09 | UG-09-S06 | A010 |  |
| UG-09-S06-A020 |  | Set-out, crossing survey and working platform |  | 1d | 2027-01-25 | 2027-01-25 | UG-09-S06-A010, UG-08-S05-A030 SS | 15d |  | F3 | UG-09 | UG-09-S06 | A020 | 62.117147 |
| UG-09-S06-A030 |  | Pipe-support piling from platform (incl. integrity tests) |  | 9d | 2027-02-13 | 2027-02-22 | UG-09-S06-A020 SS+1d, UG-09-S06-A020 FF+2d, UG-08-S05-A030 | 0d |  | F3 | UG-09 | UG-09-S06 | A030 | 44 |
| UG-09-S06-A040 |  | Install sheet piles (shored lengths) |  | 5d | 2027-02-17 | 2027-02-22 | UG-09-S06-A030 SS+3d, UG-09-S06-A030 FF+2d, UG-08-S05-A040 | 17d |  | F3 | UG-09 | UG-09-S06 | A040 | 121.234295 |
| UG-09-S06-A050 |  | Install dewatering and draw down |  | 9d | 2027-03-11 | 2027-03-21 | UG-09-S06-A040 SS+2d, UG-09-S06-A040 FF+2d, UG-08-S05-A060 FS-9d | 39d |  | F3 | UG-09 | UG-09-S06 | A050 | 62.117147 |
| UG-09-S06-A060 |  | Excavate and strut to formation |  | 4d | 2027-05-06 | 2027-05-10 | UG-09-S06-A050 SS+9d, UG-09-S06-A050 FF+2d, UG-13B-S08-A100, UG-08-S05-A060 SS, UG-08-S06-A060 SS, UG-08-S05-A060 | 0d |  | F3 | UG-09 | UG-09-S06 | A060 | 1014.737478 |
| UG-09-S06-A070 |  | Trim piles, blinding and piled slab (incl. cure) |  | 9d | 2027-05-08 | 2027-05-17 | UG-09-S06-A060 SS+2d, UG-09-S06-A060 FF+2d, UG-08-S05-A070 | 0d |  | F3 | UG-09 | UG-09-S06 | A070 | 62.117147 |
| UG-09-S06-A080 |  | Lay and joint pipe (incl. fittings, tie-in) |  | 5d | 2027-05-12 | 2027-05-17 | UG-09-S06-A070 SS+3d, UG-09-S06-A070 FF+2d, UG-08-S05-A080 | 0d |  | F3 | UG-09 | UG-09-S06 | A080 | 62.117147 |
| UG-09-S06-A090 |  | Surround, joint test and line test |  | 3d | 2027-05-15 | 2027-05-17 | UG-09-S06-A080 SS+2d, UG-09-S06-A080 FF+2d | 31d |  | F3 | UG-09 | UG-09-S06 | A090 | 62.117147 |
| UG-09-S06-A100 |  | Backfill to NG and remove struts |  | 2d | 2027-06-23 | 2027-06-24 | UG-09-S06-A090 SS+2d, UG-09-S06-A090 FF+2d, UG-08-S05-A080, UG-08-S06-A080, UG-08-S05-A100 | 0d |  | F3 | UG-09 | UG-09-S06 | A100 | 556.740065 |
| UG-09-S06-A110 |  | Dewatering off, extract sheets, reinstate |  | 4d | 2027-06-24 | 2027-06-28 | UG-09-S06-A100 SS+1d, UG-09-S06-A100 FF+2d |  |  | F3 | UG-09 | UG-09-S06 | A110 | 121.234295 |

Notes:
- UG-09-S07-A010: Notes: Front F3 / Line UG-09 / Package UG-09-S07 / Workbook logic: gates: START, D_DLU
- UG-09-S07-A020: Notes: Front F3 / Line UG-09 / Package UG-09-S07 / Quantity 51 m / Workbook logic: FS from A010; UG-08-S06-A030 (SS, set-out one package ahead of piling)
- UG-09-S07-A030: Notes: Front F3 / Line UG-09 / Package UG-09-S07 / Quantity 38 piles / Workbook logic: gate: D_PILEDES
- UG-09-S07-A040: Notes: Front F3 / Line UG-09 / Package UG-09-S07 / Quantity 102 m wall
- UG-09-S07-A050: Notes: Front F3 / Line UG-09 / Package UG-09-S07 / Quantity 51 m / Workbook logic: UG-08-S06-A060 (FS, negative lag = own duration: drawdown complete when the excavation crew is free)
- UG-09-S07-A060: Notes: Front F3 / Line UG-09 / Package UG-09-S07 / Quantity 1,020 m3
- UG-09-S07-A070: Notes: Front F3 / Line UG-09 / Package UG-09-S07 / Quantity 51 m
- UG-09-S07-A080: Notes: Front F3 / Line UG-09 / Package UG-09-S07 / Quantity 51 m
- UG-09-S07-A090: Notes: Front F3 / Line UG-09 / Package UG-09-S07 / Quantity 51 m
- UG-09-S07-A100: Notes: Front F3 / Line UG-09 / Package UG-09-S07 / Quantity 642 m3 / Workbook logic: UG-08-S05-A080 (FS, shared trench laid)
- UG-09-S07-A110: Notes: Front F3 / Line UG-09 / Package UG-09-S07 / Quantity 102 m wall
- UG-09-S06-A010: Notes: Front F3 / Line UG-09 / Package UG-09-S06 / Workbook logic: gates: START, D_DLU
- UG-09-S06-A020: Notes: Front F3 / Line UG-09 / Package UG-09-S06 / Quantity 62 m / Workbook logic: FS from A010; UG-08-S05-A030 (SS, set-out one package ahead of piling)
- UG-09-S06-A030: Notes: Front F3 / Line UG-09 / Package UG-09-S06 / Quantity 44 piles / Workbook logic: gate: D_PILEDES
- UG-09-S06-A040: Notes: Front F3 / Line UG-09 / Package UG-09-S06 / Quantity 121 m wall
- UG-09-S06-A050: Notes: Front F3 / Line UG-09 / Package UG-09-S06 / Quantity 62 m / Workbook logic: UG-08-S05-A060 (FS, negative lag = own duration: drawdown complete when the excavation crew is free)
- UG-09-S06-A060: Notes: Front F3 / Line UG-09 / Package UG-09-S06 / Quantity 1,015 m3 / Workbook logic: UG-13B-S08-A100 (FS, deeper first); UG-08-S05-A060 (SS, shared trench); UG-08-S06-A060 (SS, shared trench)
- UG-09-S06-A070: Notes: Front F3 / Line UG-09 / Package UG-09-S06 / Quantity 62 m
- UG-09-S06-A080: Notes: Front F3 / Line UG-09 / Package UG-09-S06 / Quantity 62 m
- UG-09-S06-A090: Notes: Front F3 / Line UG-09 / Package UG-09-S06 / Quantity 62 m
- UG-09-S06-A100: Notes: Front F3 / Line UG-09 / Package UG-09-S06 / Quantity 557 m3 / Workbook logic: UG-08-S05-A080 (FS, shared trench laid); UG-08-S06-A080 (FS, shared trench laid)
- UG-09-S06-A110: Notes: Front F3 / Line UG-09 / Package UG-09-S06 / Quantity 121 m wall

| ID | WBS | Activity | Type | Duration | Start | Finish | Predecessors | Free float | Constraint | Text1 | Text2 | Text3 | Text4 | Number1 |
| --- | --- | --- | --- | --- | --- | --- | --- | --- | --- | --- | --- | --- | --- | --- |
|  | UG-09-S05 | **UG-09-S05 / GRP-UG09-S05-CH150-CH168-(-3.17/-3.30)-18m / Run / Open cut** |  |  | 2026-12-01 | 2027-06-27 |  |  |  |  |  |  |  |  |
| UG-09-S05-A010 |  | Release: drawings, holds, access and gates | milestone | 0d | 2026-12-01 | 2026-12-01 |  | 63d | start on or after 2026-12-01 | F3 | UG-09 | UG-09-S05 | A010 |  |
| UG-09-S05-A020 |  | Set-out, crossing survey and working platform |  | 1d | 2027-02-13 | 2027-02-13 | UG-09-S05-A010, UG-09-S06-A030 SS | 9d |  | F3 | UG-09 | UG-09-S05 | A020 | 18.1 |
| UG-09-S05-A030 |  | Pipe-support piling from platform (incl. integrity tests) |  | 4d | 2027-02-24 | 2027-02-28 | UG-09-S05-A020 SS+1d, UG-09-S05-A020 FF+2d, UG-09-S06-A030 | 0d |  | F3 | UG-09 | UG-09-S05 | A030 | 16 |
| UG-09-S05-A050 |  | Install dewatering and draw down |  | 8d | 2027-05-01 | 2027-05-09 | UG-09-S06-A060 FS-8d, UG-09-S05-A030 SS+2d, UG-09-S05-A030 SF+4d, UG-09-S05-A030 FF+2d | 0d |  | F3 | UG-09 | UG-09-S05 | A050 | 18.1 |
| UG-09-S05-A060 |  | Excavate and strut to formation |  | 1d | 2027-05-11 | 2027-05-11 | UG-09-S05-A050 SS+9d, UG-09-S05-A050 FF+2d, UG-12-S03-A100, UG-13B-S07-A100, UG-13B-S08-A100, UG-13B-S09-A100, UG-13B-S11-A100, UG-08-S05-A060 SS, UG-09-S06-A060 | 0d |  | F3 | UG-09 | UG-09-S05 | A060 | 430.344239 |
| UG-09-S05-A070 |  | Trim piles, blinding and piled slab (incl. cure) |  | 5d | 2027-05-19 | 2027-05-24 | UG-09-S05-A060 SS+1d, UG-09-S05-A060 FF+2d, UG-09-S06-A070 | 0d |  | F3 | UG-09 | UG-09-S05 | A070 | 18.1 |
| UG-09-S05-A080 |  | Lay and joint pipe (incl. fittings, tie-in) |  | 4d | 2027-05-22 | 2027-05-25 | UG-09-S05-A070 SS+2d, UG-09-S05-A070 FF+2d, UG-09-S06-A080 | 0d |  | F3 | UG-09 | UG-09-S05 | A080 | 18.1 |
| UG-09-S05-A090 |  | Surround, joint test and line test |  | 3d | 2027-05-23 | 2027-05-25 | UG-09-S05-A080 SS+2d, UG-09-S05-A080 FF+2d | 25d |  | F3 | UG-09 | UG-09-S05 | A090 | 18.1 |
| UG-09-S05-A100 |  | Backfill to NG and remove struts |  | 1d | 2027-06-26 | 2027-06-26 | UG-09-S05-A090 SS+2d, UG-09-S05-A090 FF+2d, UG-08-S05-A080, UG-09-S06-A100 | 0d |  | F3 | UG-09 | UG-09-S05 | A100 | 296.464478 |
| UG-09-S05-A110 |  | Dewatering off, extract sheets, reinstate |  | 1d | 2027-06-27 | 2027-06-27 | UG-09-S05-A100 SS+1d, UG-09-S05-A100 FF+2d |  |  | F3 | UG-09 | UG-09-S05 | A110 | 0 |
|  | UG-09-S04 | **UG-09-S04 / GRP-UG09-S04-CH067-CH150-(-3.16/-3.17)-83m / Run / Open cut** |  |  | 2026-12-01 | 2027-07-13 |  |  |  |  |  |  |  |  |
| UG-09-S04-A010 |  | Release: drawings, holds, access and gates | milestone | 0d | 2026-12-01 | 2026-12-01 |  | 77d | start on or after 2026-12-01 | F3 | UG-09 | UG-09-S04 | A010 |  |
| UG-09-S04-A020 |  | Set-out, crossing survey and working platform |  | 2d | 2027-03-01 | 2027-03-02 | UG-09-S04-A010, UG-08-S04-A030 SS | 7d |  | F3 | UG-09 | UG-09-S04 | A020 | 83.2 |
| UG-09-S04-A030 |  | Pipe-support piling from platform (incl. integrity tests) |  | 12d | 2027-03-10 | 2027-03-23 | UG-09-S04-A020 SS+1d, UG-09-S04-A020 FF+2d, UG-08-S04-A030 | 0d |  | F3 | UG-09 | UG-09-S04 | A030 | 58 |
| UG-09-S04-A050 |  | Install dewatering and draw down |  | 10d | 2027-05-05 | 2027-05-16 | UG-08-S04-A060 FS-10d, UG-09-S04-A030 SS+4d, UG-09-S04-A030 SF+6d, UG-09-S04-A030 FF+2d | 1d |  | F3 | UG-09 | UG-09-S04 | A050 | 83.2 |
| UG-09-S04-A060 |  | Excavate and strut to formation |  | 5d | 2027-05-17 | 2027-05-22 | UG-09-S04-A050 SS+9d, UG-09-S04-A050 FF+2d, UG-12-S03-A100, UG-13B-S07-A100, UG-13B-S08-A100, UG-13B-S11-A100, UG-23-S03-A100, UG-23-S04-A100, UG-08-S04-A060 SS, UG-08-S05-A060 SS, UG-08-S04-A060 | 0d |  | F3 | UG-09 | UG-09-S04 | A060 | 1958.307999 |
| UG-09-S04-A070 |  | Trim piles, blinding and piled slab (incl. cure) |  | 10d | 2027-06-03 | 2027-06-14 | UG-09-S04-A060 SS+2d, UG-09-S04-A060 FF+2d, UG-08-S04-A070 | 0d |  | F3 | UG-09 | UG-09-S04 | A070 | 83.2 |
| UG-09-S04-A080 |  | Lay and joint pipe (incl. fittings, tie-in) |  | 7d | 2027-06-07 | 2027-06-14 | UG-09-S04-A070 SS+3d, UG-09-S04-A070 FF+2d, UG-08-S04-A080 | 0d |  | F3 | UG-09 | UG-09-S04 | A080 | 83.2 |
| UG-09-S04-A090 |  | Surround, joint test and line test |  | 3d | 2027-06-10 | 2027-06-13 | UG-09-S04-A080 SS+3d, UG-09-S04-A080 FF+2d | 23d |  | F3 | UG-09 | UG-09-S04 | A090 | 83.2 |
| UG-09-S04-A100 |  | Backfill to NG and remove struts |  | 4d | 2027-07-10 | 2027-07-13 | UG-09-S04-A090 SS+2d, UG-09-S04-A090 FF+2d, UG-08-S03-A080, UG-08-S04-A080, UG-08-S05-A080, UG-08-S04-A100 | 0d |  | F3 | UG-09 | UG-09-S04 | A100 | 1332.026157 |
| UG-09-S04-A110 |  | Dewatering off, extract sheets, reinstate |  | 1d | 2027-07-11 | 2027-07-11 | UG-09-S04-A100 SS+2d, UG-09-S04-A100 FF+2d |  |  | F3 | UG-09 | UG-09-S04 | A110 | 0 |
|  | UG-09-S03 | **UG-09-S03 / GRP-UG09-S03-CH044-CH067-(-3.16/-3.16)-23m / Run / Mixed: 6 m sheet piles** |  |  | 2026-12-01 | 2027-07-22 |  |  |  |  |  |  |  |  |
| UG-09-S03-A010 |  | Release: drawings, holds, access and gates | milestone | 0d | 2026-12-01 | 2026-12-01 |  | 101d | start on or after 2026-12-01 | F3 | UG-09 | UG-09-S03 | A010 |  |
| UG-09-S03-A020 |  | Set-out, crossing survey and working platform |  | 1d | 2027-03-29 | 2027-03-29 | UG-09-S03-A010, UG-08-S02-A030 SS | 3d |  | F3 | UG-09 | UG-09-S03 | A020 | 23.1 |
| UG-09-S03-A030 |  | Pipe-support piling from platform (incl. integrity tests) |  | 4d | 2027-04-03 | 2027-04-06 | UG-09-S03-A020 SS+1d, UG-09-S03-A020 FF+2d, UG-08-S02-A030 | 0d |  | F3 | UG-09 | UG-09-S03 | A030 | 18 |
| UG-09-S03-A040 |  | Install sheet piles (shored lengths) |  | 1d | 2027-04-04 | 2027-04-04 | UG-09-S03-A030 SS+2d, UG-09-S03-A030 FF+2d, UG-08-S02-A040 | 4d |  | F3 | UG-09 | UG-09-S03 | A040 | 11.8 |
| UG-09-S03-A050 |  | Install dewatering and draw down |  | 8d | 2027-05-18 | 2027-05-26 | UG-09-S03-A040 SS+1d, UG-09-S03-A040 FF+2d, UG-08-S02-A060 FS-8d | 0d |  | F3 | UG-09 | UG-09-S03 | A050 | 23.1 |
| UG-09-S03-A060 |  | Excavate and strut to formation |  | 2d | 2027-05-29 | 2027-05-30 | UG-09-S03-A050 SS+9d, UG-09-S03-A050 FF+2d, UG-11-S04-A100, UG-11-S05-A100, UG-23-S03-A100, UG-23-S04-A100, UG-23-S05-A100, UG-08-S02-A060 SS, UG-08-S03-A060 SS, UG-08-S04-A060 SS, UG-08-S02-A060 | 0d |  | F3 | UG-09 | UG-09-S03 | A060 | 466.893845 |
| UG-09-S03-A070 |  | Trim piles, blinding and piled slab (incl. cure) |  | 5d | 2027-06-27 | 2027-07-01 | UG-09-S03-A060 SS+1d, UG-09-S03-A060 FF+2d, UG-08-S02-A070 | 0d |  | F3 | UG-09 | UG-09-S03 | A070 | 23.1 |
| UG-09-S03-A080 |  | Lay and joint pipe (incl. fittings, tie-in) |  | 2d | 2027-06-29 | 2027-06-30 | UG-09-S03-A070 SS+2d, UG-09-S03-A070 FF+2d, UG-08-S02-A080 | 0d |  | F3 | UG-09 | UG-09-S03 | A080 | 23.1 |
| UG-09-S03-A090 |  | Surround, joint test and line test |  | 3d | 2027-06-30 | 2027-07-03 | UG-09-S03-A080 SS+1d, UG-09-S03-A080 FF+2d | 13d |  | F3 | UG-09 | UG-09-S03 | A090 | 23.1 |
| UG-09-S03-A100 |  | Backfill to NG and remove struts |  | 1d | 2027-07-20 | 2027-07-20 | UG-09-S03-A090 SS+2d, UG-09-S03-A090 FF+2d, UG-08-S02-A080, UG-08-S03-A080, UG-08-S04-A080, UG-08-S02-A100 | 0d |  | F3 | UG-09 | UG-09-S03 | A100 | 296.574815 |
| UG-09-S03-A110 |  | Dewatering off, extract sheets, reinstate |  | 2d | 2027-07-21 | 2027-07-22 | UG-09-S03-A100 SS+1d, UG-09-S03-A100 FF+2d |  |  | F3 | UG-09 | UG-09-S03 | A110 | 11.8 |

Notes:
- UG-09-S05-A010: Notes: Front F3 / Line UG-09 / Package UG-09-S05 / Workbook logic: gates: START, D_DLU
- UG-09-S05-A020: Notes: Front F3 / Line UG-09 / Package UG-09-S05 / Quantity 18 m / Workbook logic: FS from A010; UG-09-S06-A030 (SS, set-out one package ahead of piling)
- UG-09-S05-A030: Notes: Front F3 / Line UG-09 / Package UG-09-S05 / Quantity 16 piles / Workbook logic: gate: D_PILEDES
- UG-09-S05-A050: Notes: Front F3 / Line UG-09 / Package UG-09-S05 / Quantity 18 m / Workbook logic: UG-09-S06-A060 (FS, negative lag = own duration: drawdown complete when the excavation crew is free)
- UG-09-S05-A060: Notes: Front F3 / Line UG-09 / Package UG-09-S05 / Quantity 430 m3 / Workbook logic: UG-12-S03-A100 (FS, deeper first); UG-13B-S07-A100 (FS, deeper first); UG-13B-S08-A100 (FS, deeper first); UG-13B-S09-A100 (FS, deeper first); UG-13B-S11-A100 (FS, deeper first); UG-08-S05-A060 (SS, shared trench)
- UG-09-S05-A070: Notes: Front F3 / Line UG-09 / Package UG-09-S05 / Quantity 18 m
- UG-09-S05-A080: Notes: Front F3 / Line UG-09 / Package UG-09-S05 / Quantity 18 m
- UG-09-S05-A090: Notes: Front F3 / Line UG-09 / Package UG-09-S05 / Quantity 18 m
- UG-09-S05-A100: Notes: Front F3 / Line UG-09 / Package UG-09-S05 / Quantity 296 m3 / Workbook logic: UG-08-S05-A080 (FS, shared trench laid)
- UG-09-S05-A110: Notes: Front F3 / Line UG-09 / Package UG-09-S05 / Quantity 0 m wall
- UG-09-S04-A010: Notes: Front F3 / Line UG-09 / Package UG-09-S04 / Workbook logic: gates: START, D_DLU
- UG-09-S04-A020: Notes: Front F3 / Line UG-09 / Package UG-09-S04 / Quantity 83 m / Workbook logic: FS from A010; UG-08-S04-A030 (SS, set-out one package ahead of piling)
- UG-09-S04-A030: Notes: Front F3 / Line UG-09 / Package UG-09-S04 / Quantity 58 piles / Workbook logic: gate: D_PILEDES
- UG-09-S04-A050: Notes: Front F3 / Line UG-09 / Package UG-09-S04 / Quantity 83 m / Workbook logic: UG-08-S04-A060 (FS, negative lag = own duration: drawdown complete when the excavation crew is free)
- UG-09-S04-A060: Notes: Front F3 / Line UG-09 / Package UG-09-S04 / Quantity 1,958 m3 / Workbook logic: UG-12-S03-A100 (FS, deeper first); UG-13B-S07-A100 (FS, deeper first); UG-13B-S08-A100 (FS, deeper first); UG-13B-S11-A100 (FS, deeper first); UG-23-S03-A100 (FS, deeper first); UG-23-S04-A100 (FS, deeper first); UG-08-S04-A060 (SS, shared trench); UG-08-S05-A060 (SS, shared trench)
- UG-09-S04-A070: Notes: Front F3 / Line UG-09 / Package UG-09-S04 / Quantity 83 m
- UG-09-S04-A080: Notes: Front F3 / Line UG-09 / Package UG-09-S04 / Quantity 83 m
- UG-09-S04-A090: Notes: Front F3 / Line UG-09 / Package UG-09-S04 / Quantity 83 m
- UG-09-S04-A100: Notes: Front F3 / Line UG-09 / Package UG-09-S04 / Quantity 1,332 m3 / Workbook logic: UG-08-S03-A080 (FS, shared trench laid); UG-08-S04-A080 (FS, shared trench laid); UG-08-S05-A080 (FS, shared trench laid)
- UG-09-S04-A110: Notes: Front F3 / Line UG-09 / Package UG-09-S04 / Quantity 0 m wall
- UG-09-S03-A010: Notes: Front F3 / Line UG-09 / Package UG-09-S03 / Workbook logic: gates: START, D_DLU
- UG-09-S03-A020: Notes: Front F3 / Line UG-09 / Package UG-09-S03 / Quantity 23 m / Workbook logic: FS from A010; UG-08-S02-A030 (SS, set-out one package ahead of piling)
- UG-09-S03-A030: Notes: Front F3 / Line UG-09 / Package UG-09-S03 / Quantity 18 piles / Workbook logic: gate: D_PILEDES
- UG-09-S03-A040: Notes: Front F3 / Line UG-09 / Package UG-09-S03 / Quantity 12 m wall
- UG-09-S03-A050: Notes: Front F3 / Line UG-09 / Package UG-09-S03 / Quantity 23 m / Workbook logic: UG-08-S02-A060 (FS, negative lag = own duration: drawdown complete when the excavation crew is free)
- UG-09-S03-A060: Notes: Front F3 / Line UG-09 / Package UG-09-S03 / Quantity 467 m3 / Workbook logic: UG-11-S04-A100 (FS, deeper first); UG-11-S05-A100 (FS, deeper first); UG-23-S03-A100 (FS, deeper first); UG-23-S04-A100 (FS, deeper first); UG-23-S05-A100 (FS, deeper first); UG-08-S02-A060 (SS, shared trench); UG-08-S03-A060 (SS, shared trench); UG-08-S04-A060 (SS, shared trench)
- UG-09-S03-A070: Notes: Front F3 / Line UG-09 / Package UG-09-S03 / Quantity 23 m
- UG-09-S03-A080: Notes: Front F3 / Line UG-09 / Package UG-09-S03 / Quantity 23 m
- UG-09-S03-A090: Notes: Front F3 / Line UG-09 / Package UG-09-S03 / Quantity 23 m
- UG-09-S03-A100: Notes: Front F3 / Line UG-09 / Package UG-09-S03 / Quantity 297 m3 / Workbook logic: UG-08-S02-A080 (FS, shared trench laid); UG-08-S03-A080 (FS, shared trench laid); UG-08-S04-A080 (FS, shared trench laid)
- UG-09-S03-A110: Notes: Front F3 / Line UG-09 / Package UG-09-S03 / Quantity 12 m wall

| ID | WBS | Activity | Type | Duration | Start | Finish | Predecessors | Free float | Constraint | Text1 | Text2 | Text3 | Text4 | Number1 |
| --- | --- | --- | --- | --- | --- | --- | --- | --- | --- | --- | --- | --- | --- | --- |
|  | UG-09-S02 | **UG-09-S02 / GRP-UG09-S02-EL024-CH044-(-3.16/-3.16)-20m / Run / Mixed: 14 m sheet piles** |  |  | 2026-12-01 | 2027-07-25 |  |  |  |  |  |  |  |  |
| UG-09-S02-A010 |  | Release: drawings, holds, access and gates | milestone | 0d | 2026-12-01 | 2026-12-01 |  | 105d | start on or after 2026-12-01 | F3 | UG-09 | UG-09-S02 | A010 |  |
| UG-09-S02-A020 |  | Set-out, crossing survey and working platform |  | 1d | 2027-04-03 | 2027-04-03 | UG-09-S02-A010, UG-09-S03-A030 SS | 3d |  | F3 | UG-09 | UG-09-S02 | A020 | 20.237122 |
| UG-09-S02-A030 |  | Pipe-support piling from platform (incl. integrity tests) |  | 4d | 2027-04-07 | 2027-04-11 | UG-09-S02-A020 SS+1d, UG-09-S02-A020 FF+2d, UG-09-S03-A030 | 0d |  | F3 | UG-09 | UG-09-S02 | A030 | 16 |
| UG-09-S02-A040 |  | Install sheet piles (shored lengths) |  | 2d | 2027-04-10 | 2027-04-11 | UG-09-S02-A030 SS+2d, UG-09-S02-A030 FF+2d, UG-09-S03-A040 | 35d |  | F3 | UG-09 | UG-09-S02 | A040 | 28.2 |
| UG-09-S02-A050 |  | Install dewatering and draw down |  | 8d | 2027-05-22 | 2027-05-30 | UG-09-S02-A040 SS+1d, UG-09-S02-A040 FF+2d, UG-09-S03-A060 FS-8d | 0d |  | F3 | UG-09 | UG-09-S02 | A050 | 20.237122 |
| UG-09-S02-A060 |  | Excavate and strut to formation |  | 1d | 2027-05-31 | 2027-05-31 | UG-09-S02-A050 SS+9d, UG-09-S02-A050 FF+2d, UG-23-S04-A100, UG-23-S05-A100, UG-08-S01-A060 SS, UG-08-S02-A060 SS, UG-08-S03-A060 SS, UG-09-S03-A060 | 27d |  | F3 | UG-09 | UG-09-S02 | A060 | 303.923461 |
| UG-09-S02-A070 |  | Trim piles, blinding and piled slab (incl. cure) |  | 5d | 2027-07-03 | 2027-07-07 | UG-09-S02-A060 SS+1d, UG-09-S02-A060 FF+2d, UG-09-S03-A070 | 0d |  | F3 | UG-09 | UG-09-S02 | A070 | 20.237122 |
| UG-09-S02-A080 |  | Lay and joint pipe (incl. fittings, tie-in) |  | 2d | 2027-07-05 | 2027-07-06 | UG-09-S02-A070 SS+2d, UG-09-S02-A070 FF+2d, UG-09-S03-A080 | 0d |  | F3 | UG-09 | UG-09-S02 | A080 | 20.237122 |
| UG-09-S02-A090 |  | Surround, joint test and line test |  | 3d | 2027-07-06 | 2027-07-08 | UG-09-S02-A080 SS+1d, UG-09-S02-A080 FF+2d | 10d |  | F3 | UG-09 | UG-09-S02 | A090 | 20.237122 |
| UG-09-S02-A100 |  | Backfill to NG and remove struts |  | 1d | 2027-07-22 | 2027-07-22 | UG-09-S02-A090 SS+2d, UG-09-S02-A090 FF+2d, UG-08-S01-A080, UG-08-S02-A080, UG-08-S03-A080, UG-09-S03-A100 | 0d |  | F3 | UG-09 | UG-09-S02 | A100 | 154.712771 |
| UG-09-S02-A110 |  | Dewatering off, extract sheets, reinstate |  | 2d | 2027-07-24 | 2027-07-25 | UG-09-S02-A100 SS+1d, UG-09-S02-A100 FF+2d |  |  | F3 | UG-09 | UG-09-S02 | A110 | 28.2 |
|  | UG-09-S01 | **UG-09-S01 / GRP-UG09-S01-AER-EL024-(-3.18/-3.16)-24m / Tie-in / Open cut** |  |  | 2026-12-01 | 2027-07-18 |  |  |  |  |  |  |  |  |
| UG-09-S01-A010 |  | Release: drawings, holds, access and gates | milestone | 0d | 2026-12-01 | 2026-12-01 |  | 109d | start on or after 2026-12-01 | F3 | UG-09 | UG-09-S01 | A010 |  |
| UG-09-S01-A020 |  | Set-out, crossing survey and working platform |  | 1d | 2027-04-07 | 2027-04-07 | UG-09-S01-A010, UG-09-S02-A030 SS | 0d |  | F3 | UG-09 | UG-09-S01 | A020 | 23.862878 |
| UG-09-S01-A030 |  | Pipe-support piling from platform (incl. integrity tests) |  | 4d | 2027-04-08 | 2027-04-12 | UG-09-S01-A020 SS+1d, UG-09-S01-A020 FF+2d | 0d |  | F3 | UG-09 | UG-09-S01 | A030 | 18 |
| UG-09-S01-A050 |  | Install dewatering and draw down |  | 8d | 2027-04-10 | 2027-04-18 | UG-09-S01-A030 SS+2d, UG-09-S01-A030 SF+4d, UG-09-S01-A030 FF+2d | 31d |  | F3 | UG-09 | UG-09-S01 | A050 | 23.862878 |
| UG-09-S01-A060 |  | Excavate and strut to formation |  | 2d | 2027-05-26 | 2027-05-27 | UG-09-S01-A050 SS+9d, UG-09-S01-A050 FF+2d, UG-23-S05-A100, UG-08-S02-A060 SS | 0d |  | F3 | UG-09 | UG-09-S01 | A060 | 560.874235 |
| UG-09-S01-A070 |  | Trim piles, blinding and piled slab (incl. cure) |  | 5d | 2027-05-27 | 2027-06-01 | UG-09-S01-A060 SS+1d, UG-09-S01-A060 FF+2d | 36d |  | F3 | UG-09 | UG-09-S01 | A070 | 23.862878 |
| UG-09-S01-A080 |  | Lay and joint pipe (incl. fittings, tie-in) |  | 6d | 2027-07-11 | 2027-07-17 | UG-09-S01-A070 SS+2d, UG-09-S01-A070 FF+2d, UG-09-S02-A080 | 0d |  | F3 | UG-09 | UG-09-S01 | A080 | 23.862878 |
| UG-09-S01-A090 |  | Surround, joint test and line test |  | 3d | 2027-07-14 | 2027-07-17 | UG-09-S01-A080 SS+3d, UG-09-S01-A080 FF+2d | 0d |  | F3 | UG-09 | UG-09-S01 | A090 | 23.862878 |
| UG-09-S01-A100 |  | Backfill to NG and remove struts |  | 2d | 2027-07-17 | 2027-07-18 | UG-09-S01-A090 SS+2d, UG-09-S01-A090 FF+2d, UG-08-S01-A080, UG-08-S02-A080 | 0d |  | F3 | UG-09 | UG-09-S01 | A100 | 381.631798 |
| UG-09-S01-A110 |  | Dewatering off, extract sheets, reinstate |  | 1d | 2027-07-17 | 2027-07-17 | UG-09-S01-A100 SS+1d, UG-09-S01-A100 FF+2d |  |  | F3 | UG-09 | UG-09-S01 | A110 | 0 |
|  | UG-09-S08 | **UG-09-S08 / GRP-UG09-S08-CH282-SDCB-(-4.98/-4.98)-6m / Tie-in / Sheet piles** |  |  | 2026-12-01 | 2027-03-28 |  |  |  |  |  |  |  |  |
| UG-09-S08-A010 |  | Release: drawings, holds, access and gates | milestone | 0d | 2026-12-01 | 2026-12-01 |  | 39d | start on or after 2026-12-01 | F3 | UG-09 | UG-09-S08 | A010 |  |
| UG-09-S08-A020 |  | Set-out, crossing survey and working platform |  | 1d | 2027-01-16 | 2027-01-16 | UG-09-S08-A010, UG-09-S07-A030 SS | 0d |  | F3 | UG-09 | UG-09-S08 | A020 | 5.999977 |
| UG-09-S08-A030 |  | Pipe-support piling from platform (incl. integrity tests) |  | 2d | 2027-01-16 | 2027-01-17 | UG-09-S08-A020 SS+1d, UG-09-S08-A020 FF+2d | 0d |  | F3 | UG-09 | UG-09-S08 | A030 | 6 |
| UG-09-S08-A040 |  | Install sheet piles (shored lengths) |  | 1d | 2027-01-17 | 2027-01-17 | UG-09-S08-A030 SS+1d, UG-09-S08-A030 FF+2d | 0d |  | F3 | UG-09 | UG-09-S08 | A040 | 11.999955 |
| UG-09-S08-A050 |  | Install dewatering and draw down |  | 8d | 2027-01-18 | 2027-01-26 | UG-09-S08-A040 SS+1d, UG-09-S08-A040 FF+2d | 0d |  | F3 | UG-09 | UG-09-S08 | A050 | 5.999977 |
| UG-09-S08-A060 |  | Excavate and strut to formation |  | 1d | 2027-01-28 | 2027-01-28 | UG-09-S08-A050 SS+9d, UG-09-S08-A050 FF+2d | 0d |  | F3 | UG-09 | UG-09-S08 | A060 | 119.549158 |
| UG-09-S08-A070 |  | Trim piles, blinding and piled slab (incl. cure) |  | 4d | 2027-01-30 | 2027-02-02 | UG-09-S08-A060 SS+1d, UG-09-S08-A060 FF+2d | 41d |  | F3 | UG-09 | UG-09-S08 | A070 | 5.999977 |
| UG-09-S08-A080 |  | Lay and joint pipe (incl. fittings, tie-in) |  | 4d | 2027-03-21 | 2027-03-24 | UG-09-S08-A070 SS+2d, UG-09-S08-A070 FF+2d, UG-09-S07-A080 | 0d |  | F3 | UG-09 | UG-09-S08 | A080 | 5.999977 |
| UG-09-S08-A090 |  | Surround, joint test and line test |  | 3d | 2027-03-23 | 2027-03-25 | UG-09-S08-A080 SS+2d, UG-09-S08-A080 FF+2d | 0d |  | F3 | UG-09 | UG-09-S08 | A090 | 5.999977 |
| UG-09-S08-A100 |  | Backfill to NG and remove struts |  | 1d | 2027-03-25 | 2027-03-25 | UG-09-S08-A090 SS+2d, UG-09-S08-A090 FF+2d | 0d |  | F3 | UG-09 | UG-09-S08 | A100 | 75.31068 |
| UG-09-S08-A110 |  | Dewatering off, extract sheets, reinstate |  | 2d | 2027-03-27 | 2027-03-28 | UG-09-S08-A100 SS+1d, UG-09-S08-A100 FF+2d |  |  | F3 | UG-09 | UG-09-S08 | A110 | 11.999955 |

Notes:
- UG-09-S02-A010: Notes: Front F3 / Line UG-09 / Package UG-09-S02 / Workbook logic: gates: START, D_DLU
- UG-09-S02-A020: Notes: Front F3 / Line UG-09 / Package UG-09-S02 / Quantity 20 m / Workbook logic: FS from A010; UG-09-S03-A030 (SS, set-out one package ahead of piling)
- UG-09-S02-A030: Notes: Front F3 / Line UG-09 / Package UG-09-S02 / Quantity 16 piles / Workbook logic: gate: D_PILEDES
- UG-09-S02-A040: Notes: Front F3 / Line UG-09 / Package UG-09-S02 / Quantity 28 m wall
- UG-09-S02-A050: Notes: Front F3 / Line UG-09 / Package UG-09-S02 / Quantity 20 m / Workbook logic: UG-09-S03-A060 (FS, negative lag = own duration: drawdown complete when the excavation crew is free)
- UG-09-S02-A060: Notes: Front F3 / Line UG-09 / Package UG-09-S02 / Quantity 304 m3 / Workbook logic: UG-23-S04-A100 (FS, deeper first); UG-23-S05-A100 (FS, deeper first); UG-08-S01-A060 (SS, shared trench); UG-08-S02-A060 (SS, shared trench); UG-08-S03-A060 (SS, shared trench)
- UG-09-S02-A070: Notes: Front F3 / Line UG-09 / Package UG-09-S02 / Quantity 20 m
- UG-09-S02-A080: Notes: Front F3 / Line UG-09 / Package UG-09-S02 / Quantity 20 m
- UG-09-S02-A090: Notes: Front F3 / Line UG-09 / Package UG-09-S02 / Quantity 20 m
- UG-09-S02-A100: Notes: Front F3 / Line UG-09 / Package UG-09-S02 / Quantity 155 m3 / Workbook logic: UG-08-S01-A080 (FS, shared trench laid); UG-08-S02-A080 (FS, shared trench laid); UG-08-S03-A080 (FS, shared trench laid)
- UG-09-S02-A110: Notes: Front F3 / Line UG-09 / Package UG-09-S02 / Quantity 28 m wall
- UG-09-S01-A010: Notes: Front F3 / Line UG-09 / Package UG-09-S01 / Workbook logic: gates: START, D_DLU, structure ready
- UG-09-S01-A020: Notes: Front F3 / Line UG-09 / Package UG-09-S01 / Quantity 24 m / Workbook logic: FS from A010; UG-09-S02-A030 (SS, tie-in team follows the adjacent run)
- UG-09-S01-A030: Notes: Front F3 / Line UG-09 / Package UG-09-S01 / Quantity 18 piles / Workbook logic: gate: D_PILEDES
- UG-09-S01-A050: Notes: Front F3 / Line UG-09 / Package UG-09-S01 / Quantity 24 m
- UG-09-S01-A060: Notes: Front F3 / Line UG-09 / Package UG-09-S01 / Quantity 561 m3 / Workbook logic: UG-23-S05-A100 (FS, deeper first); UG-08-S02-A060 (SS, shared trench)
- UG-09-S01-A070: Notes: Front F3 / Line UG-09 / Package UG-09-S01 / Quantity 24 m
- UG-09-S01-A080: Notes: Front F3 / Line UG-09 / Package UG-09-S01 / Quantity 24 m / Workbook logic: UG-09-S02-A080 (FS, closure)
- UG-09-S01-A090: Notes: Front F3 / Line UG-09 / Package UG-09-S01 / Quantity 24 m
- UG-09-S01-A100: Notes: Front F3 / Line UG-09 / Package UG-09-S01 / Quantity 382 m3 / Workbook logic: UG-08-S01-A080 (FS, shared trench laid); UG-08-S02-A080 (FS, shared trench laid)
- UG-09-S01-A110: Notes: Front F3 / Line UG-09 / Package UG-09-S01 / Quantity 0 m wall
- UG-09-S08-A010: Notes: Front F3 / Line UG-09 / Package UG-09-S08 / Workbook logic: gates: START, D_DLU, structure ready
- UG-09-S08-A020: Notes: Front F3 / Line UG-09 / Package UG-09-S08 / Quantity 6 m / Workbook logic: FS from A010; UG-09-S07-A030 (SS, tie-in team follows the adjacent run)
- UG-09-S08-A030: Notes: Front F3 / Line UG-09 / Package UG-09-S08 / Quantity 6 piles / Workbook logic: gate: D_PILEDES
- UG-09-S08-A040: Notes: Front F3 / Line UG-09 / Package UG-09-S08 / Quantity 12 m wall
- UG-09-S08-A050: Notes: Front F3 / Line UG-09 / Package UG-09-S08 / Quantity 6 m
- UG-09-S08-A060: Notes: Front F3 / Line UG-09 / Package UG-09-S08 / Quantity 120 m3
- UG-09-S08-A070: Notes: Front F3 / Line UG-09 / Package UG-09-S08 / Quantity 6 m
- UG-09-S08-A080: Notes: Front F3 / Line UG-09 / Package UG-09-S08 / Quantity 6 m / Workbook logic: UG-09-S07-A080 (FS, closure)
- UG-09-S08-A090: Notes: Front F3 / Line UG-09 / Package UG-09-S08 / Quantity 6 m
- UG-09-S08-A100: Notes: Front F3 / Line UG-09 / Package UG-09-S08 / Quantity 75 m3
- UG-09-S08-A110: Notes: Front F3 / Line UG-09 / Package UG-09-S08 / Quantity 12 m wall

| ID | WBS | Activity | Type | Duration | Start | Finish | Predecessors | Free float | Constraint | Text1 | Text2 | Text3 | Text4 | Number1 |
| --- | --- | --- | --- | --- | --- | --- | --- | --- | --- | --- | --- | --- | --- | --- |
|  | UG-13A | **UG-13A** |  |  | 2026-12-01 | 2027-07-19 |  |  |  |  |  |  |  |  |
|  | UG-13A-S13 | **UG-13A-S13 / HDPE-UG13A-S13-FSTK-EL030-(-4.10/-4.10)-30m / Tie-in / Sheet piles** |  |  | 2026-12-01 | 2027-07-19 |  |  |  |  |  |  |  |  |
| UG-13A-S13-A010 |  | Release: drawings, holds, access and gates | milestone | 0d | 2026-12-01 | 2026-12-01 |  | 108d | start on or after 2026-12-01 | F3 | UG-13A | UG-13A-S13 | A010 |  |
| UG-13A-S13-A020 |  | Set-out, crossing survey and working platform |  | 1d | 2027-04-06 | 2027-04-06 | UG-13A-S13-A010, UG-13A-S14-A030 SS | 0d |  | F3 | UG-13A | UG-13A-S13 | A020 | 30.366546 |
| UG-13A-S13-A030 |  | Pipe-support piling from platform (incl. integrity tests) |  | 3d | 2027-04-07 | 2027-04-10 | UG-13A-S13-A020 SS+1d, UG-13A-S13-A020 FF+2d | 0d |  | F3 | UG-13A | UG-13A-S13 | A030 | 12 |
| UG-13A-S13-A040 |  | Install sheet piles (shored lengths) |  | 3d | 2027-04-10 | 2027-04-12 | UG-13A-S13-A030 SS+2d, UG-13A-S13-A030 FF+2d | 0d |  | F3 | UG-13A | UG-13A-S13 | A040 | 60.733093 |
| UG-13A-S13-A050 |  | Install dewatering and draw down |  | 8d | 2027-04-11 | 2027-04-19 | UG-13A-S13-A040 SS+2d, UG-13A-S13-A040 FF+2d | 0d |  | F3 | UG-13A | UG-13A-S13 | A050 | 30.366546 |
| UG-13A-S13-A060 |  | Excavate and strut to formation |  | 2d | 2027-04-21 | 2027-04-22 | UG-13A-S13-A050 SS+9d, UG-13A-S13-A050 FF+2d | 0d |  | F3 | UG-13A | UG-13A-S13 | A060 | 309.738522 |
| UG-13A-S13-A070 |  | Trim piles, blinding and piled slab (incl. cure) |  | 6d | 2027-04-22 | 2027-04-28 | UG-13A-S13-A060 SS+1d, UG-13A-S13-A060 FF+2d | 66d |  | F3 | UG-13A | UG-13A-S13 | A070 | 30.366546 |
| UG-13A-S13-A080 |  | Lay and joint pipe (incl. fittings, tie-in) |  | 5d | 2027-07-12 | 2027-07-17 | UG-13A-S13-A070 SS+3d, UG-13A-S13-A070 FF+2d, UG-13A-S14-A080 | 0d |  | F3 | UG-13A | UG-13A-S13 | A080 | 30.366546 |
| UG-13A-S13-A090 |  | Surround, joint test and line test |  | 3d | 2027-07-14 | 2027-07-17 | UG-13A-S13-A080 SS+2d, UG-13A-S13-A080 FF+2d | 0d |  | F3 | UG-13A | UG-13A-S13 | A090 | 30.366546 |
| UG-13A-S13-A100 |  | Backfill to NG and remove struts |  | 1d | 2027-07-17 | 2027-07-17 | UG-13A-S13-A090 SS+2d, UG-13A-S13-A090 FF+2d, UG-27K-S01-A080 | 0d |  | F3 | UG-13A | UG-13A-S13 | A100 | 255.522252 |
| UG-13A-S13-A110 |  | Dewatering off, extract sheets, reinstate |  | 3d | 2027-07-17 | 2027-07-19 | UG-13A-S13-A100 SS+1d, UG-13A-S13-A100 FF+2d |  |  | F3 | UG-13A | UG-13A-S13 | A110 | 60.733093 |
|  | UG-27K | **UG-27K** |  |  | 2026-12-01 | 2027-07-21 |  |  |  |  |  |  |  |  |
|  | UG-27K-S01 | **UG-27K-S01 / HDPE-UG27K-S01-SDCC-FSTK-(0.79/-4.00)-38m / Short connection / Mixed: 28 m sheet piles** |  |  | 2026-12-01 | 2027-07-21 |  |  |  |  |  |  |  |  |
| UG-27K-S01-A010 |  | Release: drawings, holds, access and gates | milestone | 0d | 2026-12-01 | 2026-12-01 |  | 0d | start on or after 2026-12-01 | F3 | UG-27K | UG-27K-S01 | A010 |  |
| UG-27K-S01-A020 |  | Set-out, crossing survey and working platform |  | 1d | 2026-12-01 | 2026-12-01 | UG-27K-S01-A010 | 0d |  | F3 | UG-27K | UG-27K-S01 | A020 | 37.724367 |
| UG-27K-S01-A030 |  | Pipe-support piling from platform (incl. integrity tests) |  | 6d | 2026-12-02 | 2026-12-08 | UG-27K-S01-A020 SS+1d, UG-27K-S01-A020 FF+2d | 0d |  | F3 | UG-27K | UG-27K-S01 | A030 | 28 |
| UG-27K-S01-A040 |  | Install sheet piles (shored lengths) |  | 3d | 2026-12-05 | 2026-12-07 | UG-27K-S01-A030 SS+3d, UG-27K-S01-A030 FF+2d | 0d |  | F3 | UG-27K | UG-27K-S01 | A040 | 55.448735 |
| UG-27K-S01-A050 |  | Install dewatering and draw down |  | 8d | 2026-12-07 | 2026-12-15 | UG-27K-S01-A040 SS+2d, UG-27K-S01-A040 FF+2d | 107d |  | F3 | UG-27K | UG-27K-S01 | A050 | 37.724367 |
| UG-27K-S01-A060 |  | Excavate and strut to formation |  | 2d | 2027-04-21 | 2027-04-22 | UG-27K-S01-A050 SS+9d, UG-27K-S01-A050 FF+2d, UG-08-S07-A100, UG-13A-S13-A060 SS | 0d |  | F3 | UG-27K | UG-27K-S01 | A060 | 390.929281 |
| UG-27K-S01-A070 |  | Trim piles, blinding and piled slab (incl. cure) |  | 7d | 2027-04-22 | 2027-04-29 | UG-27K-S01-A060 SS+1d, UG-27K-S01-A060 FF+2d | 0d |  | F3 | UG-27K | UG-27K-S01 | A070 | 37.724367 |
| UG-27K-S01-A080 |  | Lay and joint pipe (incl. fittings, tie-in) |  | 9d | 2027-04-25 | 2027-05-04 | UG-27K-S01-A070 SS+3d, UG-27K-S01-A070 FF+2d | 0d |  | F3 | UG-27K | UG-27K-S01 | A080 | 37.724367 |
| UG-27K-S01-A090 |  | Surround, joint test and line test |  | 3d | 2027-04-29 | 2027-05-02 | UG-27K-S01-A080 SS+3d, UG-27K-S01-A080 FF+2d | 64d |  | F3 | UG-27K | UG-27K-S01 | A090 | 37.724367 |
| UG-27K-S01-A100 |  | Backfill to NG and remove struts |  | 1d | 2027-07-18 | 2027-07-18 | UG-27K-S01-A090 SS+2d, UG-27K-S01-A090 FF+2d, UG-13A-S13-A080 | 0d |  | F3 | UG-27K | UG-27K-S01 | A100 | 276.250604 |
| UG-27K-S01-A110 |  | Dewatering off, extract sheets, reinstate |  | 3d | 2027-07-19 | 2027-07-21 | UG-27K-S01-A100 SS+1d, UG-27K-S01-A100 FF+2d |  |  | F3 | UG-27K | UG-27K-S01 | A110 | 55.448735 |

Notes:
- UG-13A-S13-A010: Notes: Front F3 / Line UG-13A / Package UG-13A-S13 / Workbook logic: gates: START, D_DLU, structure ready
- UG-13A-S13-A020: Notes: Front F3 / Line UG-13A / Package UG-13A-S13 / Quantity 30 m / Workbook logic: FS from A010; UG-13A-S14-A030 (SS, tie-in team follows the adjacent run)
- UG-13A-S13-A030: Notes: Front F3 / Line UG-13A / Package UG-13A-S13 / Quantity 12 piles / Workbook logic: gate: D_PILEDES
- UG-13A-S13-A040: Notes: Front F3 / Line UG-13A / Package UG-13A-S13 / Quantity 61 m wall
- UG-13A-S13-A050: Notes: Front F3 / Line UG-13A / Package UG-13A-S13 / Quantity 30 m
- UG-13A-S13-A060: Notes: Front F3 / Line UG-13A / Package UG-13A-S13 / Quantity 310 m3
- UG-13A-S13-A070: Notes: Front F3 / Line UG-13A / Package UG-13A-S13 / Quantity 30 m
- UG-13A-S13-A080: Notes: Front F3 / Line UG-13A / Package UG-13A-S13 / Quantity 30 m / Workbook logic: UG-13A-S14-A080 (FS, closure)
- UG-13A-S13-A090: Notes: Front F3 / Line UG-13A / Package UG-13A-S13 / Quantity 30 m
- UG-13A-S13-A100: Notes: Front F3 / Line UG-13A / Package UG-13A-S13 / Quantity 256 m3 / Workbook logic: UG-27K-S01-A080 (FS, shared trench laid)
- UG-13A-S13-A110: Notes: Front F3 / Line UG-13A / Package UG-13A-S13 / Quantity 61 m wall
- UG-27K-S01-A010: Notes: Front F3 / Line UG-27K / Package UG-27K-S01 / Workbook logic: gates: START, D_DLU, structure ready
- UG-27K-S01-A020: Notes: Front F3 / Line UG-27K / Package UG-27K-S01 / Quantity 38 m / Workbook logic: FS from A010
- UG-27K-S01-A030: Notes: Front F3 / Line UG-27K / Package UG-27K-S01 / Quantity 28 piles / Workbook logic: gate: D_PILEDES
- UG-27K-S01-A040: Notes: Front F3 / Line UG-27K / Package UG-27K-S01 / Quantity 55 m wall
- UG-27K-S01-A050: Notes: Front F3 / Line UG-27K / Package UG-27K-S01 / Quantity 38 m
- UG-27K-S01-A060: Notes: Front F3 / Line UG-27K / Package UG-27K-S01 / Quantity 391 m3 / Workbook logic: UG-08-S07-A100 (FS, deeper first); UG-13A-S13-A060 (SS, shared trench)
- UG-27K-S01-A070: Notes: Front F3 / Line UG-27K / Package UG-27K-S01 / Quantity 38 m
- UG-27K-S01-A080: Notes: Front F3 / Line UG-27K / Package UG-27K-S01 / Quantity 38 m
- UG-27K-S01-A090: Notes: Front F3 / Line UG-27K / Package UG-27K-S01 / Quantity 38 m
- UG-27K-S01-A100: Notes: Front F3 / Line UG-27K / Package UG-27K-S01 / Quantity 276 m3 / Workbook logic: UG-13A-S13-A080 (FS, shared trench laid)
- UG-27K-S01-A110: Notes: Front F3 / Line UG-27K / Package UG-27K-S01 / Quantity 55 m wall

| ID | WBS | Activity | Type | Duration | Start | Finish | Predecessors | Free float | Constraint | Text1 | Text2 | Text3 | Text4 | Number1 |
| --- | --- | --- | --- | --- | --- | --- | --- | --- | --- | --- | --- | --- | --- | --- |
|  | UG-13B | **UG-13B** |  |  | 2026-12-01 | 2027-05-27 |  |  |  |  |  |  |  |  |
|  | UG-13B-S01 | **UG-13B-S01 / HDPE-UG13B-S01-FSTE-EL031-(-4.10/-4.10)-31m / Tie-in / Sheet piles** |  |  | 2026-12-01 | 2027-05-27 |  |  |  |  |  |  |  |  |
| UG-13B-S01-A010 |  | Release: drawings, holds, access and gates | milestone | 0d | 2026-12-01 | 2026-12-01 |  | 76d | start on or after 2026-12-01 | F3 | UG-13B | UG-13B-S01 | A010 |  |
| UG-13B-S01-A020 |  | Set-out, crossing survey and working platform |  | 1d | 2027-02-28 | 2027-02-28 | UG-13B-S01-A010, UG-13B-S02-A030 SS | 0d |  | F3 | UG-13B | UG-13B-S01 | A020 | 30.743176 |
| UG-13B-S01-A030 |  | Pipe-support piling from platform (incl. integrity tests) |  | 5d | 2027-03-01 | 2027-03-06 | UG-13B-S01-A020 SS+1d, UG-13B-S01-A020 FF+2d | 0d |  | F3 | UG-13B | UG-13B-S01 | A030 | 24 |
| UG-13B-S01-A040 |  | Install sheet piles (shored lengths) |  | 3d | 2027-03-03 | 2027-03-06 | UG-13B-S01-A030 SS+2d, UG-13B-S01-A030 FF+2d | 0d |  | F3 | UG-13B | UG-13B-S01 | A040 | 61.486352 |
| UG-13B-S01-A050 |  | Install dewatering and draw down |  | 8d | 2027-03-06 | 2027-03-14 | UG-13B-S01-A040 SS+2d, UG-13B-S01-A040 FF+2d | 0d |  | F3 | UG-13B | UG-13B-S01 | A050 | 30.743176 |
| UG-13B-S01-A060 |  | Excavate and strut to formation |  | 2d | 2027-03-15 | 2027-03-16 | UG-13B-S01-A050 SS+9d, UG-13B-S01-A050 FF+2d | 0d |  | F3 | UG-13B | UG-13B-S01 | A060 | 313.579567 |
| UG-13B-S01-A070 |  | Trim piles, blinding and piled slab (incl. cure) |  | 6d | 2027-03-16 | 2027-03-22 | UG-13B-S01-A060 SS+1d, UG-13B-S01-A060 FF+2d | 53d |  | F3 | UG-13B | UG-13B-S01 | A070 | 30.743176 |
| UG-13B-S01-A080 |  | Lay and joint pipe (incl. fittings, tie-in) |  | 5d | 2027-05-20 | 2027-05-25 | UG-13B-S01-A070 SS+3d, UG-13B-S01-A070 FF+2d, UG-13B-S02-A080 | 0d |  | F3 | UG-13B | UG-13B-S01 | A080 | 30.743176 |
| UG-13B-S01-A090 |  | Surround, joint test and line test |  | 3d | 2027-05-22 | 2027-05-24 | UG-13B-S01-A080 SS+2d, UG-13B-S01-A080 FF+2d | 0d |  | F3 | UG-13B | UG-13B-S01 | A090 | 30.743176 |
| UG-13B-S01-A100 |  | Backfill to NG and remove struts |  | 1d | 2027-05-24 | 2027-05-24 | UG-13B-S01-A090 SS+2d, UG-13B-S01-A090 FF+2d, UG-14E-S01-A080 | 0d |  | F3 | UG-13B | UG-13B-S01 | A100 | 258.691107 |
| UG-13B-S01-A110 |  | Dewatering off, extract sheets, reinstate |  | 3d | 2027-05-25 | 2027-05-27 | UG-13B-S01-A100 SS+1d, UG-13B-S01-A100 FF+2d |  |  | F3 | UG-13B | UG-13B-S01 | A110 | 61.486352 |
|  | UG-14E | **UG-14E** |  |  | 2026-12-01 | 2027-05-29 |  |  |  |  |  |  |  |  |
|  | UG-14E-S01 | **UG-14E-S01 / HDPE-UG14E-S01-SDCB-FSTE-(0.80/-4.00)-38m / Short connection / Open cut** |  |  | 2026-12-01 | 2027-05-29 |  |  |  |  |  |  |  |  |
| UG-14E-S01-A010 |  | Release: drawings, holds, access and gates | milestone | 0d | 2026-12-01 | 2026-12-01 |  | 0d | start on or after 2026-12-01 | F3 | UG-14E | UG-14E-S01 | A010 |  |
| UG-14E-S01-A020 |  | Set-out, crossing survey and working platform |  | 1d | 2026-12-01 | 2026-12-01 | UG-14E-S01-A010 | 0d |  | F3 | UG-14E | UG-14E-S01 | A020 | 37.587573 |
| UG-14E-S01-A030 |  | Pipe-support piling from platform (incl. integrity tests) |  | 6d | 2026-12-02 | 2026-12-08 | UG-14E-S01-A020 SS+1d, UG-14E-S01-A020 FF+2d | 0d |  | F3 | UG-14E | UG-14E-S01 | A030 | 28 |
| UG-14E-S01-A050 |  | Install dewatering and draw down |  | 8d | 2026-12-05 | 2026-12-13 | UG-14E-S01-A030 SS+3d, UG-14E-S01-A030 SF+5d, UG-14E-S01-A030 FF+2d | 90d |  | F3 | UG-14E | UG-14E-S01 | A050 | 37.587573 |
| UG-14E-S01-A060 |  | Excavate and strut to formation |  | 3d | 2027-03-30 | 2027-04-01 | UG-14E-S01-A050 SS+9d, UG-14E-S01-A050 FF+2d, UG-09-S08-A100, UG-13B-S01-A060 SS | 0d |  | F3 | UG-14E | UG-14E-S01 | A060 | 1001.067622 |
| UG-14E-S01-A070 |  | Trim piles, blinding and piled slab (incl. cure) |  | 7d | 2027-04-01 | 2027-04-08 | UG-14E-S01-A060 SS+2d, UG-14E-S01-A060 FF+2d | 0d |  | F3 | UG-14E | UG-14E-S01 | A070 | 37.587573 |
| UG-14E-S01-A080 |  | Lay and joint pipe (incl. fittings, tie-in) |  | 9d | 2027-04-04 | 2027-04-13 | UG-14E-S01-A070 SS+3d, UG-14E-S01-A070 FF+2d | 0d |  | F3 | UG-14E | UG-14E-S01 | A080 | 37.587573 |
| UG-14E-S01-A090 |  | Surround, joint test and line test |  | 3d | 2027-04-08 | 2027-04-11 | UG-14E-S01-A080 SS+3d, UG-14E-S01-A080 FF+2d | 39d |  | F3 | UG-14E | UG-14E-S01 | A090 | 37.587573 |
| UG-14E-S01-A100 |  | Backfill to NG and remove struts |  | 3d | 2027-05-26 | 2027-05-29 | UG-14E-S01-A090 SS+2d, UG-14E-S01-A090 FF+2d, UG-13B-S01-A080 | 0d |  | F3 | UG-14E | UG-14E-S01 | A100 | 887.165777 |
| UG-14E-S01-A110 |  | Dewatering off, extract sheets, reinstate |  | 1d | 2027-05-29 | 2027-05-29 | UG-14E-S01-A100 SS+2d, UG-14E-S01-A100 FF+2d |  |  | F3 | UG-14E | UG-14E-S01 | A110 | 0 |

Notes:
- UG-13B-S01-A010: Notes: Front F3 / Line UG-13B / Package UG-13B-S01 / Workbook logic: gates: START, D_DLU, structure ready
- UG-13B-S01-A020: Notes: Front F3 / Line UG-13B / Package UG-13B-S01 / Quantity 31 m / Workbook logic: FS from A010; UG-13B-S02-A030 (SS, tie-in team follows the adjacent run)
- UG-13B-S01-A030: Notes: Front F3 / Line UG-13B / Package UG-13B-S01 / Quantity 24 piles / Workbook logic: gate: D_PILEDES
- UG-13B-S01-A040: Notes: Front F3 / Line UG-13B / Package UG-13B-S01 / Quantity 61 m wall
- UG-13B-S01-A050: Notes: Front F3 / Line UG-13B / Package UG-13B-S01 / Quantity 31 m
- UG-13B-S01-A060: Notes: Front F3 / Line UG-13B / Package UG-13B-S01 / Quantity 314 m3
- UG-13B-S01-A070: Notes: Front F3 / Line UG-13B / Package UG-13B-S01 / Quantity 31 m
- UG-13B-S01-A080: Notes: Front F3 / Line UG-13B / Package UG-13B-S01 / Quantity 31 m / Workbook logic: UG-13B-S02-A080 (FS, closure)
- UG-13B-S01-A090: Notes: Front F3 / Line UG-13B / Package UG-13B-S01 / Quantity 31 m
- UG-13B-S01-A100: Notes: Front F3 / Line UG-13B / Package UG-13B-S01 / Quantity 259 m3 / Workbook logic: UG-14E-S01-A080 (FS, shared trench laid)
- UG-13B-S01-A110: Notes: Front F3 / Line UG-13B / Package UG-13B-S01 / Quantity 61 m wall
- UG-14E-S01-A010: Notes: Front F3 / Line UG-14E / Package UG-14E-S01 / Workbook logic: gates: START, D_DLU, structure ready
- UG-14E-S01-A020: Notes: Front F3 / Line UG-14E / Package UG-14E-S01 / Quantity 38 m / Workbook logic: FS from A010
- UG-14E-S01-A030: Notes: Front F3 / Line UG-14E / Package UG-14E-S01 / Quantity 28 piles / Workbook logic: gate: D_PILEDES
- UG-14E-S01-A050: Notes: Front F3 / Line UG-14E / Package UG-14E-S01 / Quantity 38 m
- UG-14E-S01-A060: Notes: Front F3 / Line UG-14E / Package UG-14E-S01 / Quantity 1,001 m3 / Workbook logic: UG-09-S08-A100 (FS, deeper first); UG-13B-S01-A060 (SS, shared trench)
- UG-14E-S01-A070: Notes: Front F3 / Line UG-14E / Package UG-14E-S01 / Quantity 38 m
- UG-14E-S01-A080: Notes: Front F3 / Line UG-14E / Package UG-14E-S01 / Quantity 38 m
- UG-14E-S01-A090: Notes: Front F3 / Line UG-14E / Package UG-14E-S01 / Quantity 38 m
- UG-14E-S01-A100: Notes: Front F3 / Line UG-14E / Package UG-14E-S01 / Quantity 887 m3 / Workbook logic: UG-13B-S01-A080 (FS, shared trench laid)
- UG-14E-S01-A110: Notes: Front F3 / Line UG-14E / Package UG-14E-S01 / Quantity 0 m wall

| ID | WBS | Activity | Type | Duration | Start | Finish | Predecessors | Free float | Constraint | Text1 | Text2 | Text3 | Text4 | Number1 |
| --- | --- | --- | --- | --- | --- | --- | --- | --- | --- | --- | --- | --- | --- | --- |
|  | UG-11B | **UG-11B** |  |  | 2026-12-01 | 2027-05-09 |  |  |  |  |  |  |  |  |
|  | UG-11B-S08 | **UG-11B-S08 / HDPE-UG11B-S08-EL339-FSTB-(-4.10/-4.10)-29m / Tie-in / Sheet piles** |  |  | 2026-12-01 | 2027-05-09 |  |  |  |  |  |  |  |  |
| UG-11B-S08-A010 |  | Release: drawings, holds, access and gates | milestone | 0d | 2026-12-01 | 2026-12-01 |  | 58d | start on or after 2026-12-01 | F3 | UG-11B | UG-11B-S08 | A010 |  |
| UG-11B-S08-A020 |  | Set-out, crossing survey and working platform |  | 1d | 2027-02-07 | 2027-02-07 | UG-11B-S08-A010, UG-11B-S07-A030 SS | 0d |  | F3 | UG-11B | UG-11B-S08 | A020 | 29.45704 |
| UG-11B-S08-A030 |  | Pipe-support piling from platform (incl. integrity tests) |  | 5d | 2027-02-08 | 2027-02-13 | UG-11B-S08-A020 SS+1d, UG-11B-S08-A020 FF+2d | 0d |  | F3 | UG-11B | UG-11B-S08 | A030 | 22 |
| UG-11B-S08-A040 |  | Install sheet piles (shored lengths) |  | 3d | 2027-02-10 | 2027-02-13 | UG-11B-S08-A030 SS+2d, UG-11B-S08-A030 FF+2d | 0d |  | F3 | UG-11B | UG-11B-S08 | A040 | 58.91408 |
| UG-11B-S08-A050 |  | Install dewatering and draw down |  | 8d | 2027-02-13 | 2027-02-21 | UG-11B-S08-A040 SS+2d, UG-11B-S08-A040 FF+2d | 0d |  | F3 | UG-11B | UG-11B-S08 | A050 | 29.45704 |
| UG-11B-S08-A060 |  | Excavate and strut to formation |  | 2d | 2027-02-22 | 2027-02-23 | UG-11B-S08-A050 SS+9d, UG-11B-S08-A050 FF+2d | 0d |  | F3 | UG-11B | UG-11B-S08 | A060 | 300.462256 |
| UG-11B-S08-A070 |  | Trim piles, blinding and piled slab (incl. cure) |  | 6d | 2027-02-23 | 2027-03-01 | UG-11B-S08-A060 SS+1d, UG-11B-S08-A060 FF+2d | 53d |  | F3 | UG-11B | UG-11B-S08 | A070 | 29.45704 |
| UG-11B-S08-A080 |  | Lay and joint pipe (incl. fittings, tie-in) |  | 4d | 2027-05-01 | 2027-05-04 | UG-11B-S08-A070 SS+3d, UG-11B-S08-A070 FF+2d, UG-11B-S07-A080 | 0d |  | F3 | UG-11B | UG-11B-S08 | A080 | 29.45704 |
| UG-11B-S08-A090 |  | Surround, joint test and line test |  | 3d | 2027-05-03 | 2027-05-05 | UG-11B-S08-A080 SS+2d, UG-11B-S08-A080 FF+2d | 0d |  | F3 | UG-11B | UG-11B-S08 | A090 | 29.45704 |
| UG-11B-S08-A100 |  | Backfill to NG and remove struts |  | 1d | 2027-05-05 | 2027-05-05 | UG-11B-S08-A090 SS+2d, UG-11B-S08-A090 FF+2d, UG-16B-S01-A080 | 0d |  | F3 | UG-11B | UG-11B-S08 | A100 | 247.869522 |
| UG-11B-S08-A110 |  | Dewatering off, extract sheets, reinstate |  | 3d | 2027-05-06 | 2027-05-09 | UG-11B-S08-A100 SS+1d, UG-11B-S08-A100 FF+2d |  |  | F3 | UG-11B | UG-11B-S08 | A110 | 58.91408 |
|  | UG-16B | **UG-16B** |  |  | 2026-12-01 | 2027-05-10 |  |  |  |  |  |  |  |  |
|  | UG-16B-S01 | **UG-16B-S01 / HDPE-UG16B-S01-SDCA-FSTB-(0.79/-4.00)-38m / Short connection / Mixed: 28 m sheet piles** |  |  | 2026-12-01 | 2027-05-10 |  |  |  |  |  |  |  |  |
| UG-16B-S01-A010 |  | Release: drawings, holds, access and gates | milestone | 0d | 2026-12-01 | 2026-12-01 |  | 0d | start on or after 2026-12-01 | F3 | UG-16B | UG-16B-S01 | A010 |  |
| UG-16B-S01-A020 |  | Set-out, crossing survey and working platform |  | 1d | 2026-12-01 | 2026-12-01 | UG-16B-S01-A010 | 0d |  | F3 | UG-16B | UG-16B-S01 | A020 | 38.123415 |
| UG-16B-S01-A030 |  | Pipe-support piling from platform (incl. integrity tests) |  | 6d | 2026-12-02 | 2026-12-08 | UG-16B-S01-A020 SS+1d, UG-16B-S01-A020 FF+2d | 0d |  | F3 | UG-16B | UG-16B-S01 | A030 | 28 |
| UG-16B-S01-A040 |  | Install sheet piles (shored lengths) |  | 3d | 2026-12-05 | 2026-12-07 | UG-16B-S01-A030 SS+3d, UG-16B-S01-A030 FF+2d | 0d |  | F3 | UG-16B | UG-16B-S01 | A040 | 56.008 |
| UG-16B-S01-A050 |  | Install dewatering and draw down |  | 8d | 2026-12-07 | 2026-12-15 | UG-16B-S01-A040 SS+2d, UG-16B-S01-A040 FF+2d | 57d |  | F3 | UG-16B | UG-16B-S01 | A050 | 38.123415 |
| UG-16B-S01-A060 |  | Excavate and strut to formation |  | 2d | 2027-02-22 | 2027-02-23 | UG-16B-S01-A050 SS+9d, UG-16B-S01-A050 FF+2d, UG-10-S05-A100, UG-11B-S08-A060 SS | 0d |  | F3 | UG-16B | UG-16B-S01 | A060 | 399.963871 |
| UG-16B-S01-A070 |  | Trim piles, blinding and piled slab (incl. cure) |  | 7d | 2027-02-23 | 2027-03-02 | UG-16B-S01-A060 SS+1d, UG-16B-S01-A060 FF+2d | 0d |  | F3 | UG-16B | UG-16B-S01 | A070 | 38.123415 |
| UG-16B-S01-A080 |  | Lay and joint pipe (incl. fittings, tie-in) |  | 9d | 2027-02-27 | 2027-03-08 | UG-16B-S01-A070 SS+3d, UG-16B-S01-A070 FF+2d | 0d |  | F3 | UG-16B | UG-16B-S01 | A080 | 38.123415 |
| UG-16B-S01-A090 |  | Surround, joint test and line test |  | 3d | 2027-03-02 | 2027-03-04 | UG-16B-S01-A080 SS+3d, UG-16B-S01-A080 FF+2d | 52d |  | F3 | UG-16B | UG-16B-S01 | A090 | 38.123415 |
| UG-16B-S01-A100 |  | Backfill to NG and remove struts |  | 1d | 2027-05-06 | 2027-05-06 | UG-16B-S01-A090 SS+2d, UG-16B-S01-A090 FF+2d, UG-11B-S08-A080 | 0d |  | F3 | UG-16B | UG-16B-S01 | A100 | 285.276066 |
| UG-16B-S01-A110 |  | Dewatering off, extract sheets, reinstate |  | 3d | 2027-05-08 | 2027-05-10 | UG-16B-S01-A100 SS+1d, UG-16B-S01-A100 FF+2d |  |  | F3 | UG-16B | UG-16B-S01 | A110 | 56.008 |

Notes:
- UG-11B-S08-A010: Notes: Front F3 / Line UG-11B / Package UG-11B-S08 / Workbook logic: gates: START, D_DLU, structure ready
- UG-11B-S08-A020: Notes: Front F3 / Line UG-11B / Package UG-11B-S08 / Quantity 29 m / Workbook logic: FS from A010; UG-11B-S07-A030 (SS, tie-in team follows the adjacent run)
- UG-11B-S08-A030: Notes: Front F3 / Line UG-11B / Package UG-11B-S08 / Quantity 22 piles / Workbook logic: gate: D_PILEDES
- UG-11B-S08-A040: Notes: Front F3 / Line UG-11B / Package UG-11B-S08 / Quantity 59 m wall
- UG-11B-S08-A050: Notes: Front F3 / Line UG-11B / Package UG-11B-S08 / Quantity 29 m
- UG-11B-S08-A060: Notes: Front F3 / Line UG-11B / Package UG-11B-S08 / Quantity 300 m3
- UG-11B-S08-A070: Notes: Front F3 / Line UG-11B / Package UG-11B-S08 / Quantity 29 m
- UG-11B-S08-A080: Notes: Front F3 / Line UG-11B / Package UG-11B-S08 / Quantity 29 m / Workbook logic: UG-11B-S07-A080 (FS, closure)
- UG-11B-S08-A090: Notes: Front F3 / Line UG-11B / Package UG-11B-S08 / Quantity 29 m
- UG-11B-S08-A100: Notes: Front F3 / Line UG-11B / Package UG-11B-S08 / Quantity 248 m3 / Workbook logic: UG-16B-S01-A080 (FS, shared trench laid)
- UG-11B-S08-A110: Notes: Front F3 / Line UG-11B / Package UG-11B-S08 / Quantity 59 m wall
- UG-16B-S01-A010: Notes: Front F3 / Line UG-16B / Package UG-16B-S01 / Workbook logic: gates: START, D_DLU, structure ready
- UG-16B-S01-A020: Notes: Front F3 / Line UG-16B / Package UG-16B-S01 / Quantity 38 m / Workbook logic: FS from A010
- UG-16B-S01-A030: Notes: Front F3 / Line UG-16B / Package UG-16B-S01 / Quantity 28 piles / Workbook logic: gate: D_PILEDES
- UG-16B-S01-A040: Notes: Front F3 / Line UG-16B / Package UG-16B-S01 / Quantity 56 m wall
- UG-16B-S01-A050: Notes: Front F3 / Line UG-16B / Package UG-16B-S01 / Quantity 38 m
- UG-16B-S01-A060: Notes: Front F3 / Line UG-16B / Package UG-16B-S01 / Quantity 400 m3 / Workbook logic: UG-10-S05-A100 (FS, deeper first); UG-11B-S08-A060 (SS, shared trench)
- UG-16B-S01-A070: Notes: Front F3 / Line UG-16B / Package UG-16B-S01 / Quantity 38 m
- UG-16B-S01-A080: Notes: Front F3 / Line UG-16B / Package UG-16B-S01 / Quantity 38 m
- UG-16B-S01-A090: Notes: Front F3 / Line UG-16B / Package UG-16B-S01 / Quantity 38 m
- UG-16B-S01-A100: Notes: Front F3 / Line UG-16B / Package UG-16B-S01 / Quantity 285 m3 / Workbook logic: UG-11B-S08-A080 (FS, shared trench laid)
- UG-16B-S01-A110: Notes: Front F3 / Line UG-16B / Package UG-16B-S01 / Quantity 56 m wall

| ID | WBS | Activity | Type | Duration | Start | Finish | Predecessors | Free float | Constraint | Text1 | Text2 | Text3 | Text4 | Number1 |
| --- | --- | --- | --- | --- | --- | --- | --- | --- | --- | --- | --- | --- | --- | --- |
|  | UG-14F | **UG-14F** |  |  | 2026-12-01 | 2027-05-17 |  |  |  |  |  |  |  |  |
|  | UG-14F-S01 | **UG-14F-S01 / HDPE-UG14F-S01-SDCB-FSTF-(0.80/-4.00)-38m / Short connection / Mixed: 28 m sheet piles** |  |  | 2026-12-01 | 2027-05-17 |  |  |  |  |  |  |  |  |
| UG-14F-S01-A010 |  | Release: drawings, holds, access and gates | milestone | 0d | 2026-12-01 | 2026-12-01 |  | 0d | start on or after 2026-12-01 | F3 | UG-14F | UG-14F-S01 | A010 |  |
| UG-14F-S01-A020 |  | Set-out, crossing survey and working platform |  | 1d | 2026-12-01 | 2026-12-01 | UG-14F-S01-A010 | 0d |  | F3 | UG-14F | UG-14F-S01 | A020 | 38.088481 |
| UG-14F-S01-A030 |  | Pipe-support piling from platform (incl. integrity tests) |  | 6d | 2026-12-02 | 2026-12-08 | UG-14F-S01-A020 SS+1d, UG-14F-S01-A020 FF+2d | 0d |  | F3 | UG-14F | UG-14F-S01 | A030 | 28 |
| UG-14F-S01-A040 |  | Install sheet piles (shored lengths) |  | 3d | 2026-12-05 | 2026-12-07 | UG-14F-S01-A030 SS+3d, UG-14F-S01-A030 FF+2d | 0d |  | F3 | UG-14F | UG-14F-S01 | A040 | 56.075 |
| UG-14F-S01-A050 |  | Install dewatering and draw down |  | 8d | 2026-12-07 | 2026-12-15 | UG-14F-S01-A040 SS+2d, UG-14F-S01-A040 FF+2d | 118d |  | F3 | UG-14F | UG-14F-S01 | A050 | 38.088481 |
| UG-14F-S01-A060 |  | Excavate and strut to formation |  | 2d | 2027-05-04 | 2027-05-05 | UG-14F-S01-A050 SS+9d, UG-14F-S01-A050 FF+2d, UG-09-S08-A100, UG-13B-S09-A100, UG-13B-S10-A100 | 0d |  | F3 | UG-14F | UG-14F-S01 | A060 | 417.586381 |
| UG-14F-S01-A070 |  | Trim piles, blinding and piled slab (incl. cure) |  | 7d | 2027-05-05 | 2027-05-12 | UG-14F-S01-A060 SS+1d, UG-14F-S01-A060 FF+2d | 0d |  | F3 | UG-14F | UG-14F-S01 | A070 | 38.088481 |
| UG-14F-S01-A080 |  | Lay and joint pipe (incl. fittings, tie-in) |  | 9d | 2027-05-08 | 2027-05-17 | UG-14F-S01-A070 SS+3d, UG-14F-S01-A070 FF+2d | 0d |  | F3 | UG-14F | UG-14F-S01 | A080 | 38.088481 |
| UG-14F-S01-A090 |  | Surround, joint test and line test |  | 3d | 2027-05-12 | 2027-05-15 | UG-14F-S01-A080 SS+3d, UG-14F-S01-A080 FF+2d | 0d |  | F3 | UG-14F | UG-14F-S01 | A090 | 38.088481 |
| UG-14F-S01-A100 |  | Backfill to NG and remove struts |  | 1d | 2027-05-15 | 2027-05-15 | UG-14F-S01-A090 SS+2d, UG-14F-S01-A090 FF+2d | 0d |  | F3 | UG-14F | UG-14F-S01 | A100 | 302.696909 |
| UG-14F-S01-A110 |  | Dewatering off, extract sheets, reinstate |  | 3d | 2027-05-15 | 2027-05-17 | UG-14F-S01-A100 SS+1d, UG-14F-S01-A100 FF+2d |  |  | F3 | UG-14F | UG-14F-S01 | A110 | 56.075 |
|  | UG-27J | **UG-27J** |  |  | 2026-12-01 | 2027-07-10 |  |  |  |  |  |  |  |  |
|  | UG-27J-S02 | **UG-27J-S02 / HDPE-UG27J-S02-CH016-FSTJ-(-4.00/-4.00)-22m / Short connection / Open cut** |  |  | 2026-12-01 | 2027-07-01 |  |  |  |  |  |  |  |  |
| UG-27J-S02-A010 |  | Release: drawings, holds, access and gates | milestone | 0d | 2026-12-01 | 2026-12-01 |  | 0d | start on or after 2026-12-01 | F3 | UG-27J | UG-27J-S02 | A010 |  |
| UG-27J-S02-A020 |  | Set-out, crossing survey and working platform |  | 1d | 2026-12-01 | 2026-12-01 | UG-27J-S02-A010 | 0d |  | F3 | UG-27J | UG-27J-S02 | A020 | 22.064561 |
| UG-27J-S02-A030 |  | Pipe-support piling from platform (incl. integrity tests) |  | 4d | 2026-12-02 | 2026-12-06 | UG-27J-S02-A020 SS+1d, UG-27J-S02-A020 FF+2d | 0d |  | F3 | UG-27J | UG-27J-S02 | A030 | 18 |
| UG-27J-S02-A050 |  | Install dewatering and draw down |  | 8d | 2026-12-05 | 2026-12-13 | UG-27J-S02-A030 SS+2d, UG-27J-S02-A030 SF+4d, UG-27J-S02-A030 FF+2d | 163d |  | F3 | UG-27J | UG-27J-S02 | A050 | 22.064561 |
| UG-27J-S02-A060 |  | Excavate and strut to formation |  | 2d | 2027-06-23 | 2027-06-24 | UG-27J-S02-A050 SS+9d, UG-27J-S02-A050 FF+2d, UG-13A-S15-A100 | 0d |  | F3 | UG-27J | UG-27J-S02 | A060 | 735.631925 |
| UG-27J-S02-A070 |  | Trim piles, blinding and piled slab (incl. cure) |  | 5d | 2027-06-24 | 2027-06-29 | UG-27J-S02-A060 SS+1d, UG-27J-S02-A060 FF+2d | 0d |  | F3 | UG-27J | UG-27J-S02 | A070 | 22.064561 |
| UG-27J-S02-A080 |  | Lay and joint pipe (incl. fittings, tie-in) |  | 4d | 2027-06-26 | 2027-06-29 | UG-27J-S02-A070 SS+2d, UG-27J-S02-A070 FF+2d | 0d |  | F3 | UG-27J | UG-27J-S02 | A080 | 22.064561 |
| UG-27J-S02-A090 |  | Surround, joint test and line test |  | 3d | 2027-06-28 | 2027-06-30 | UG-27J-S02-A080 SS+2d, UG-27J-S02-A080 FF+2d | 0d |  | F3 | UG-27J | UG-27J-S02 | A090 | 22.064561 |
| UG-27J-S02-A100 |  | Backfill to NG and remove struts |  | 2d | 2027-06-30 | 2027-07-01 | UG-27J-S02-A090 SS+2d, UG-27J-S02-A090 FF+2d | 0d |  | F3 | UG-27J | UG-27J-S02 | A100 | 662.584702 |
| UG-27J-S02-A110 |  | Dewatering off, extract sheets, reinstate |  | 1d | 2027-07-01 | 2027-07-01 | UG-27J-S02-A100 SS+1d, UG-27J-S02-A100 FF+2d |  |  | F3 | UG-27J | UG-27J-S02 | A110 | 0 |

Notes:
- UG-14F-S01-A010: Notes: Front F3 / Line UG-14F / Package UG-14F-S01 / Workbook logic: gates: START, D_DLU, structure ready
- UG-14F-S01-A020: Notes: Front F3 / Line UG-14F / Package UG-14F-S01 / Quantity 38 m / Workbook logic: FS from A010
- UG-14F-S01-A030: Notes: Front F3 / Line UG-14F / Package UG-14F-S01 / Quantity 28 piles / Workbook logic: gate: D_PILEDES
- UG-14F-S01-A040: Notes: Front F3 / Line UG-14F / Package UG-14F-S01 / Quantity 56 m wall
- UG-14F-S01-A050: Notes: Front F3 / Line UG-14F / Package UG-14F-S01 / Quantity 38 m
- UG-14F-S01-A060: Notes: Front F3 / Line UG-14F / Package UG-14F-S01 / Quantity 418 m3 / Workbook logic: UG-09-S08-A100 (FS, deeper first); UG-13B-S09-A100 (FS, deeper first); UG-13B-S10-A100 (FS, deeper first)
- UG-14F-S01-A070: Notes: Front F3 / Line UG-14F / Package UG-14F-S01 / Quantity 38 m
- UG-14F-S01-A080: Notes: Front F3 / Line UG-14F / Package UG-14F-S01 / Quantity 38 m
- UG-14F-S01-A090: Notes: Front F3 / Line UG-14F / Package UG-14F-S01 / Quantity 38 m
- UG-14F-S01-A100: Notes: Front F3 / Line UG-14F / Package UG-14F-S01 / Quantity 303 m3
- UG-14F-S01-A110: Notes: Front F3 / Line UG-14F / Package UG-14F-S01 / Quantity 56 m wall
- UG-27J-S02-A010: Notes: Front F3 / Line UG-27J / Package UG-27J-S02 / Workbook logic: gates: START, D_DLU, structure ready
- UG-27J-S02-A020: Notes: Front F3 / Line UG-27J / Package UG-27J-S02 / Quantity 22 m / Workbook logic: FS from A010
- UG-27J-S02-A030: Notes: Front F3 / Line UG-27J / Package UG-27J-S02 / Quantity 18 piles / Workbook logic: gate: D_PILEDES
- UG-27J-S02-A050: Notes: Front F3 / Line UG-27J / Package UG-27J-S02 / Quantity 22 m
- UG-27J-S02-A060: Notes: Front F3 / Line UG-27J / Package UG-27J-S02 / Quantity 736 m3 / Workbook logic: UG-13A-S15-A100 (FS, deeper first)
- UG-27J-S02-A070: Notes: Front F3 / Line UG-27J / Package UG-27J-S02 / Quantity 22 m
- UG-27J-S02-A080: Notes: Front F3 / Line UG-27J / Package UG-27J-S02 / Quantity 22 m
- UG-27J-S02-A090: Notes: Front F3 / Line UG-27J / Package UG-27J-S02 / Quantity 22 m
- UG-27J-S02-A100: Notes: Front F3 / Line UG-27J / Package UG-27J-S02 / Quantity 663 m3
- UG-27J-S02-A110: Notes: Front F3 / Line UG-27J / Package UG-27J-S02 / Quantity 0 m wall

| ID | WBS | Activity | Type | Duration | Start | Finish | Predecessors | Free float | Constraint | Text1 | Text2 | Text3 | Text4 | Number1 |
| --- | --- | --- | --- | --- | --- | --- | --- | --- | --- | --- | --- | --- | --- | --- |
|  | UG-27J-S01 | **UG-27J-S01 / HDPE-UG27J-S01-SDCC-CH016-(0.79/-4.00)-16m / Short connection / Mixed: 0 m sheet piles** |  |  | 2026-12-01 | 2027-07-10 |  |  |  |  |  |  |  |  |
| UG-27J-S01-A010 |  | Release: drawings, holds, access and gates | milestone | 0d | 2026-12-01 | 2026-12-01 |  | 0d | start on or after 2026-12-01 | F3 | UG-27J | UG-27J-S01 | A010 |  |
| UG-27J-S01-A020 |  | Set-out, crossing survey and working platform |  | 1d | 2026-12-01 | 2026-12-01 | UG-27J-S01-A010 | 0d |  | F3 | UG-27J | UG-27J-S01 | A020 | 16 |
| UG-27J-S01-A030 |  | Pipe-support piling from platform (incl. integrity tests) |  | 3d | 2026-12-02 | 2026-12-05 | UG-27J-S01-A020 SS+1d, UG-27J-S01-A020 FF+2d | 0d |  | F3 | UG-27J | UG-27J-S01 | A030 | 14 |
| UG-27J-S01-A040 |  | Install sheet piles (shored lengths) |  | 1d | 2026-12-05 | 2026-12-05 | UG-27J-S01-A030 SS+2d, UG-27J-S01-A030 FF+2d | 0d |  | F3 | UG-27J | UG-27J-S01 | A040 | 0.242882 |
| UG-27J-S01-A050 |  | Install dewatering and draw down |  | 8d | 2026-12-05 | 2026-12-13 | UG-27J-S01-A040 SS+1d, UG-27J-S01-A040 FF+2d | 167d |  | F3 | UG-27J | UG-27J-S01 | A050 | 16 |
| UG-27J-S01-A060 |  | Excavate and strut to formation |  | 1d | 2027-06-28 | 2027-06-28 | UG-27J-S01-A050 SS+9d, UG-27J-S01-A050 FF+2d, UG-13A-S06-A100, UG-13A-S07-A100 | 0d |  | F3 | UG-27J | UG-27J-S01 | A060 | 261.0618 |
| UG-27J-S01-A070 |  | Trim piles, blinding and piled slab (incl. cure) |  | 5d | 2027-06-29 | 2027-07-04 | UG-27J-S01-A060 SS+1d, UG-27J-S01-A060 FF+2d | 0d |  | F3 | UG-27J | UG-27J-S01 | A070 | 16 |
| UG-27J-S01-A080 |  | Lay and joint pipe (incl. fittings, tie-in) |  | 8d | 2027-07-01 | 2027-07-10 | UG-27J-S01-A070 SS+2d, UG-27J-S01-A070 FF+2d | 0d |  | F3 | UG-27J | UG-27J-S01 | A080 | 16 |
| UG-27J-S01-A090 |  | Surround, joint test and line test |  | 3d | 2027-07-04 | 2027-07-06 | UG-27J-S01-A080 SS+3d, UG-27J-S01-A080 FF+2d | 0d |  | F3 | UG-27J | UG-27J-S01 | A090 | 16 |
| UG-27J-S01-A100 |  | Backfill to NG and remove struts |  | 1d | 2027-07-06 | 2027-07-06 | UG-27J-S01-A090 SS+2d, UG-27J-S01-A090 FF+2d | 0d |  | F3 | UG-27J | UG-27J-S01 | A100 | 219.442344 |
| UG-27J-S01-A110 |  | Dewatering off, extract sheets, reinstate |  | 2d | 2027-07-07 | 2027-07-08 | UG-27J-S01-A100 SS+1d, UG-27J-S01-A100 FF+2d |  |  | F3 | UG-27J | UG-27J-S01 | A110 | 0.242882 |
|  | UG-27L | **UG-27L** |  |  | 2026-12-01 | 2027-07-04 |  |  |  |  |  |  |  |  |
|  | UG-27L-S01 | **UG-27L-S01 / HDPE-UG27L-S01-SDCC-FSTL-(0.79/-4.00)-38m / Short connection / Open cut** |  |  | 2026-12-01 | 2027-07-04 |  |  |  |  |  |  |  |  |
| UG-27L-S01-A010 |  | Release: drawings, holds, access and gates | milestone | 0d | 2026-12-01 | 2026-12-01 |  | 0d | start on or after 2026-12-01 | F3 | UG-27L | UG-27L-S01 | A010 |  |
| UG-27L-S01-A020 |  | Set-out, crossing survey and working platform |  | 1d | 2026-12-01 | 2026-12-01 | UG-27L-S01-A010 | 0d |  | F3 | UG-27L | UG-27L-S01 | A020 | 38.111486 |
| UG-27L-S01-A030 |  | Pipe-support piling from platform (incl. integrity tests) |  | 6d | 2026-12-02 | 2026-12-08 | UG-27L-S01-A020 SS+1d, UG-27L-S01-A020 FF+2d | 0d |  | F3 | UG-27L | UG-27L-S01 | A030 | 28 |
| UG-27L-S01-A050 |  | Install dewatering and draw down |  | 8d | 2026-12-05 | 2026-12-13 | UG-27L-S01-A030 SS+3d, UG-27L-S01-A030 SF+5d, UG-27L-S01-A030 FF+2d | 159d |  | F3 | UG-27L | UG-27L-S01 | A050 | 38.111486 |
| UG-27L-S01-A060 |  | Excavate and strut to formation |  | 3d | 2027-06-19 | 2027-06-21 | UG-27L-S01-A050 SS+9d, UG-27L-S01-A050 FF+2d, UG-08-S07-A100, UG-13A-S01-A100, UG-13A-S02-A100 | 0d |  | F3 | UG-27L | UG-27L-S01 | A060 | 998.259785 |
| UG-27L-S01-A070 |  | Trim piles, blinding and piled slab (incl. cure) |  | 7d | 2027-06-21 | 2027-06-28 | UG-27L-S01-A060 SS+2d, UG-27L-S01-A060 FF+2d | 0d |  | F3 | UG-27L | UG-27L-S01 | A070 | 38.111486 |
| UG-27L-S01-A080 |  | Lay and joint pipe (incl. fittings, tie-in) |  | 9d | 2027-06-24 | 2027-07-04 | UG-27L-S01-A070 SS+3d, UG-27L-S01-A070 FF+2d | 0d |  | F3 | UG-27L | UG-27L-S01 | A080 | 38.111486 |
| UG-27L-S01-A090 |  | Surround, joint test and line test |  | 3d | 2027-06-28 | 2027-06-30 | UG-27L-S01-A080 SS+3d, UG-27L-S01-A080 FF+2d | 0d |  | F3 | UG-27L | UG-27L-S01 | A090 | 38.111486 |
| UG-27L-S01-A100 |  | Backfill to NG and remove struts |  | 3d | 2027-06-30 | 2027-07-03 | UG-27L-S01-A090 SS+2d, UG-27L-S01-A090 FF+2d | 0d |  | F3 | UG-27L | UG-27L-S01 | A100 | 883.660395 |
| UG-27L-S01-A110 |  | Dewatering off, extract sheets, reinstate |  | 1d | 2027-07-03 | 2027-07-03 | UG-27L-S01-A100 SS+2d, UG-27L-S01-A100 FF+2d |  |  | F3 | UG-27L | UG-27L-S01 | A110 | 0 |

Notes:
- UG-27J-S01-A010: Notes: Front F3 / Line UG-27J / Package UG-27J-S01 / Workbook logic: gates: START, D_DLU, structure ready
- UG-27J-S01-A020: Notes: Front F3 / Line UG-27J / Package UG-27J-S01 / Quantity 16 m / Workbook logic: FS from A010
- UG-27J-S01-A030: Notes: Front F3 / Line UG-27J / Package UG-27J-S01 / Quantity 14 piles / Workbook logic: gate: D_PILEDES
- UG-27J-S01-A040: Notes: Front F3 / Line UG-27J / Package UG-27J-S01 / Quantity 0 m wall
- UG-27J-S01-A050: Notes: Front F3 / Line UG-27J / Package UG-27J-S01 / Quantity 16 m
- UG-27J-S01-A060: Notes: Front F3 / Line UG-27J / Package UG-27J-S01 / Quantity 261 m3 / Workbook logic: UG-13A-S06-A100 (FS, deeper first); UG-13A-S07-A100 (FS, deeper first)
- UG-27J-S01-A070: Notes: Front F3 / Line UG-27J / Package UG-27J-S01 / Quantity 16 m
- UG-27J-S01-A080: Notes: Front F3 / Line UG-27J / Package UG-27J-S01 / Quantity 16 m
- UG-27J-S01-A090: Notes: Front F3 / Line UG-27J / Package UG-27J-S01 / Quantity 16 m
- UG-27J-S01-A100: Notes: Front F3 / Line UG-27J / Package UG-27J-S01 / Quantity 219 m3
- UG-27J-S01-A110: Notes: Front F3 / Line UG-27J / Package UG-27J-S01 / Quantity 0 m wall
- UG-27L-S01-A010: Notes: Front F3 / Line UG-27L / Package UG-27L-S01 / Workbook logic: gates: START, D_DLU, structure ready
- UG-27L-S01-A020: Notes: Front F3 / Line UG-27L / Package UG-27L-S01 / Quantity 38 m / Workbook logic: FS from A010
- UG-27L-S01-A030: Notes: Front F3 / Line UG-27L / Package UG-27L-S01 / Quantity 28 piles / Workbook logic: gate: D_PILEDES
- UG-27L-S01-A050: Notes: Front F3 / Line UG-27L / Package UG-27L-S01 / Quantity 38 m
- UG-27L-S01-A060: Notes: Front F3 / Line UG-27L / Package UG-27L-S01 / Quantity 998 m3 / Workbook logic: UG-08-S07-A100 (FS, deeper first); UG-13A-S01-A100 (FS, deeper first); UG-13A-S02-A100 (FS, deeper first)
- UG-27L-S01-A070: Notes: Front F3 / Line UG-27L / Package UG-27L-S01 / Quantity 38 m
- UG-27L-S01-A080: Notes: Front F3 / Line UG-27L / Package UG-27L-S01 / Quantity 38 m
- UG-27L-S01-A090: Notes: Front F3 / Line UG-27L / Package UG-27L-S01 / Quantity 38 m
- UG-27L-S01-A100: Notes: Front F3 / Line UG-27L / Package UG-27L-S01 / Quantity 884 m3
- UG-27L-S01-A110: Notes: Front F3 / Line UG-27L / Package UG-27L-S01 / Quantity 0 m wall

| ID | WBS | Activity | Type | Duration | Start | Finish | Predecessors | Free float | Constraint | Text1 | Text2 | Text3 | Text4 | Number1 |
| --- | --- | --- | --- | --- | --- | --- | --- | --- | --- | --- | --- | --- | --- | --- |
|  | F4 | **F4 FCT effluent A-H to CCT** |  |  | 2026-12-01 | 2027-08-15 |  |  |  |  |  |  |  |  |
|  | UG-15 | **UG-15** |  |  | 2026-12-01 | 2027-01-21 |  |  |  |  |  |  |  |  |
|  | UG-15-S05 | **UG-15-S05 / GRP-UG15-S05-CH139-EL155-(-5.32/-5.33)-16m / Run / Sheet piles** |  |  | 2026-12-01 | 2027-01-07 |  |  |  |  |  |  |  |  |
| UG-15-S05-A010 |  | Release: drawings, holds, access and gates | milestone | 0d | 2026-12-01 | 2026-12-01 |  | 0d | start on or after 2026-12-01 | F4 | UG-15 | UG-15-S05 | A010 |  |
| UG-15-S05-A020 |  | Set-out, crossing survey and working platform |  | 1d | 2026-12-01 | 2026-12-01 | UG-15-S05-A010 | 0d |  | F4 | UG-15 | UG-15-S05 | A020 | 16.227995 |
| UG-15-S05-A030 |  | Pipe-support piling from platform (incl. integrity tests) |  | 3d | 2026-12-02 | 2026-12-05 | UG-15-S05-A020 SS+1d, UG-15-S05-A020 FF+2d | 0d |  | F4 | UG-15 | UG-15-S05 | A030 | 14 |
| UG-15-S05-A040 |  | Install sheet piles (shored lengths) |  | 2d | 2026-12-05 | 2026-12-06 | UG-15-S05-A030 SS+2d, UG-15-S05-A030 FF+2d | 0d |  | F4 | UG-15 | UG-15-S05 | A040 | 32.455989 |
| UG-15-S05-A050 |  | Install dewatering and draw down |  | 8d | 2026-12-05 | 2026-12-13 | UG-15-S05-A040 SS+1d, UG-15-S05-A040 FF+2d | 0d |  | F4 | UG-15 | UG-15-S05 | A050 | 16.227995 |
| UG-15-S05-A060 |  | Excavate and strut to formation |  | 2d | 2026-12-15 | 2026-12-16 | UG-15-S05-A050 SS+9d, UG-15-S05-A050 FF+2d | 0d |  | F4 | UG-15 | UG-15-S05 | A060 | 303.622583 |
| UG-15-S05-A070 |  | Trim piles, blinding and piled slab (incl. cure) |  | 5d | 2026-12-16 | 2026-12-21 | UG-15-S05-A060 SS+1d, UG-15-S05-A060 FF+2d | 0d |  | F4 | UG-15 | UG-15-S05 | A070 | 16.227995 |
| UG-15-S05-A080 |  | Lay and joint pipe (incl. fittings, tie-in) |  | 2d | 2026-12-19 | 2026-12-20 | UG-15-S05-A070 SS+2d, UG-15-S05-A070 FF+2d | 0d |  | F4 | UG-15 | UG-15-S05 | A080 | 16.227995 |
| UG-15-S05-A090 |  | Surround, joint test and line test |  | 3d | 2026-12-19 | 2026-12-21 | UG-15-S05-A080 SS+1d, UG-15-S05-A080 FF+2d | 11d |  | F4 | UG-15 | UG-15-S05 | A090 | 16.227995 |
| UG-15-S05-A100 |  | Backfill to NG and remove struts |  | 1d | 2027-01-05 | 2027-01-05 | UG-15-S05-A090 SS+2d, UG-15-S05-A090 FF+2d, UG-15A-S02-A080 | 0d |  | F4 | UG-15 | UG-15-S05 | A100 | 225.514058 |
| UG-15-S05-A110 |  | Dewatering off, extract sheets, reinstate |  | 2d | 2027-01-06 | 2027-01-07 | UG-15-S05-A100 SS+1d, UG-15-S05-A100 FF+2d |  |  | F4 | UG-15 | UG-15-S05 | A110 | 32.455989 |
|  | UG-15-S04 | **UG-15-S04 / GRP-UG15-S04-CH123-CH139-(-5.32/-5.32)-16m / Run / Sheet piles** |  |  | 2026-12-01 | 2027-01-10 |  |  |  |  |  |  |  |  |
| UG-15-S04-A010 |  | Release: drawings, holds, access and gates | milestone | 0d | 2026-12-01 | 2026-12-01 |  | 1d | start on or after 2026-12-01 | F4 | UG-15 | UG-15-S04 | A010 |  |
| UG-15-S04-A020 |  | Set-out, crossing survey and working platform |  | 1d | 2026-12-02 | 2026-12-02 | UG-15-S04-A010, UG-15-S05-A030 SS | 2d |  | F4 | UG-15 | UG-15-S04 | A020 | 16.1 |
| UG-15-S04-A030 |  | Pipe-support piling from platform (incl. integrity tests) |  | 3d | 2026-12-06 | 2026-12-08 | UG-15-S04-A020 SS+1d, UG-15-S04-A020 FF+2d, UG-15-S05-A030 | 0d |  | F4 | UG-15 | UG-15-S04 | A030 | 14 |
| UG-15-S04-A040 |  | Install sheet piles (shored lengths) |  | 2d | 2026-12-08 | 2026-12-09 | UG-15-S04-A030 SS+2d, UG-15-S04-A030 FF+2d, UG-15-S05-A040 | 0d |  | F4 | UG-15 | UG-15-S04 | A040 | 32.2 |
| UG-15-S04-A050 |  | Install dewatering and draw down |  | 8d | 2026-12-09 | 2026-12-17 | UG-15-S04-A040 SS+1d, UG-15-S04-A040 FF+2d, UG-15-S05-A060 FS-8d | 0d |  | F4 | UG-15 | UG-15-S04 | A050 | 16.1 |
| UG-15-S04-A060 |  | Excavate and strut to formation |  | 2d | 2026-12-19 | 2026-12-20 | UG-15-S04-A050 SS+9d, UG-15-S04-A050 FF+2d, UG-15-S05-A060 | 1d |  | F4 | UG-15 | UG-15-S04 | A060 | 300.718307 |
| UG-15-S04-A070 |  | Trim piles, blinding and piled slab (incl. cure) |  | 5d | 2026-12-22 | 2026-12-27 | UG-15-S04-A060 SS+1d, UG-15-S04-A060 FF+2d, UG-15-S05-A070 | 0d |  | F4 | UG-15 | UG-15-S04 | A070 | 16.1 |
| UG-15-S04-A080 |  | Lay and joint pipe (incl. fittings, tie-in) |  | 1d | 2026-12-24 | 2026-12-24 | UG-15-S04-A070 SS+2d, UG-15-S04-A070 FF+2d, UG-15-S05-A080 | 0d |  | F4 | UG-15 | UG-15-S04 | A080 | 16.1 |
| UG-15-S04-A090 |  | Surround, joint test and line test |  | 3d | 2026-12-26 | 2026-12-28 | UG-15-S04-A080 SS+1d, UG-15-S04-A080 FF+2d | 7d |  | F4 | UG-15 | UG-15-S04 | A090 | 16.1 |
| UG-15-S04-A100 |  | Backfill to NG and remove struts |  | 1d | 2027-01-07 | 2027-01-07 | UG-15-S04-A090 SS+2d, UG-15-S04-A090 FF+2d, UG-15A-S02-A080, UG-15-S05-A100 | 0d |  | F4 | UG-15 | UG-15-S04 | A100 | 223.551074 |
| UG-15-S04-A110 |  | Dewatering off, extract sheets, reinstate |  | 2d | 2027-01-09 | 2027-01-10 | UG-15-S04-A100 SS+1d, UG-15-S04-A100 FF+2d |  |  | F4 | UG-15 | UG-15-S04 | A110 | 32.2 |

Notes:
- UG-15-S05-A010: Notes: Front F4 / Line UG-15 / Package UG-15-S05 / Workbook logic: gates: START, D_DLU
- UG-15-S05-A020: Notes: Front F4 / Line UG-15 / Package UG-15-S05 / Quantity 16 m / Workbook logic: FS from A010
- UG-15-S05-A030: Notes: Front F4 / Line UG-15 / Package UG-15-S05 / Quantity 14 piles / Workbook logic: gate: D_PILEDES
- UG-15-S05-A040: Notes: Front F4 / Line UG-15 / Package UG-15-S05 / Quantity 32 m wall
- UG-15-S05-A050: Notes: Front F4 / Line UG-15 / Package UG-15-S05 / Quantity 16 m
- UG-15-S05-A060: Notes: Front F4 / Line UG-15 / Package UG-15-S05 / Quantity 304 m3
- UG-15-S05-A070: Notes: Front F4 / Line UG-15 / Package UG-15-S05 / Quantity 16 m
- UG-15-S05-A080: Notes: Front F4 / Line UG-15 / Package UG-15-S05 / Quantity 16 m
- UG-15-S05-A090: Notes: Front F4 / Line UG-15 / Package UG-15-S05 / Quantity 16 m
- UG-15-S05-A100: Notes: Front F4 / Line UG-15 / Package UG-15-S05 / Quantity 226 m3 / Workbook logic: UG-15A-S02-A080 (FS, shared trench laid)
- UG-15-S05-A110: Notes: Front F4 / Line UG-15 / Package UG-15-S05 / Quantity 32 m wall
- UG-15-S04-A010: Notes: Front F4 / Line UG-15 / Package UG-15-S04 / Workbook logic: gates: START, D_DLU
- UG-15-S04-A020: Notes: Front F4 / Line UG-15 / Package UG-15-S04 / Quantity 16 m / Workbook logic: FS from A010; UG-15-S05-A030 (SS, set-out one package ahead of piling)
- UG-15-S04-A030: Notes: Front F4 / Line UG-15 / Package UG-15-S04 / Quantity 14 piles / Workbook logic: gate: D_PILEDES
- UG-15-S04-A040: Notes: Front F4 / Line UG-15 / Package UG-15-S04 / Quantity 32 m wall
- UG-15-S04-A050: Notes: Front F4 / Line UG-15 / Package UG-15-S04 / Quantity 16 m / Workbook logic: UG-15-S05-A060 (FS, negative lag = own duration: drawdown complete when the excavation crew is free)
- UG-15-S04-A060: Notes: Front F4 / Line UG-15 / Package UG-15-S04 / Quantity 301 m3
- UG-15-S04-A070: Notes: Front F4 / Line UG-15 / Package UG-15-S04 / Quantity 16 m
- UG-15-S04-A080: Notes: Front F4 / Line UG-15 / Package UG-15-S04 / Quantity 16 m
- UG-15-S04-A090: Notes: Front F4 / Line UG-15 / Package UG-15-S04 / Quantity 16 m
- UG-15-S04-A100: Notes: Front F4 / Line UG-15 / Package UG-15-S04 / Quantity 224 m3 / Workbook logic: UG-15A-S02-A080 (FS, shared trench laid)
- UG-15-S04-A110: Notes: Front F4 / Line UG-15 / Package UG-15-S04 / Quantity 32 m wall

| ID | WBS | Activity | Type | Duration | Start | Finish | Predecessors | Free float | Constraint | Text1 | Text2 | Text3 | Text4 | Number1 |
| --- | --- | --- | --- | --- | --- | --- | --- | --- | --- | --- | --- | --- | --- | --- |
|  | UG-15-S06 | **UG-15-S06 / GRP-UG15-S06-EL155-CCT-(-5.33/-5.33)-13m / Tie-in / Sheet piles** |  |  | 2026-12-01 | 2026-12-30 |  |  |  |  |  |  |  |  |
| UG-15-S06-A010 |  | Release: drawings, holds, access and gates | milestone | 0d | 2026-12-01 | 2026-12-01 |  | 1d | start on or after 2026-12-01 | F4 | UG-15 | UG-15-S06 | A010 |  |
| UG-15-S06-A020 |  | Set-out, crossing survey and working platform |  | 1d | 2026-12-02 | 2026-12-02 | UG-15-S06-A010, UG-15-S05-A030 SS | 0d |  | F4 | UG-15 | UG-15-S06 | A020 | 12.96962 |
| UG-15-S06-A030 |  | Pipe-support piling from platform (incl. integrity tests) |  | 3d | 2026-12-03 | 2026-12-06 | UG-15-S06-A020 SS+1d, UG-15-S06-A020 FF+2d | 0d |  | F4 | UG-15 | UG-15-S06 | A030 | 12 |
| UG-15-S06-A040 |  | Install sheet piles (shored lengths) |  | 2d | 2026-12-05 | 2026-12-06 | UG-15-S06-A030 SS+2d, UG-15-S06-A030 FF+2d | 0d |  | F4 | UG-15 | UG-15-S06 | A040 | 25.93924 |
| UG-15-S06-A050 |  | Install dewatering and draw down |  | 8d | 2026-12-06 | 2026-12-14 | UG-15-S06-A040 SS+1d, UG-15-S06-A040 FF+2d | 0d |  | F4 | UG-15 | UG-15-S06 | A050 | 12.96962 |
| UG-15-S06-A060 |  | Excavate and strut to formation |  | 1d | 2026-12-16 | 2026-12-16 | UG-15-S06-A050 SS+9d, UG-15-S06-A050 FF+2d | 0d |  | F4 | UG-15 | UG-15-S06 | A060 | 244.63057 |
| UG-15-S06-A070 |  | Trim piles, blinding and piled slab (incl. cure) |  | 5d | 2026-12-17 | 2026-12-22 | UG-15-S06-A060 SS+1d, UG-15-S06-A060 FF+2d | 3d |  | F4 | UG-15 | UG-15-S06 | A070 | 12.96962 |
| UG-15-S06-A080 |  | Lay and joint pipe (incl. fittings, tie-in) |  | 4d | 2026-12-24 | 2026-12-28 | UG-15-S06-A070 SS+2d, UG-15-S06-A070 FF+2d, UG-15-S05-A080 | 0d |  | F4 | UG-15 | UG-15-S06 | A080 | 12.96962 |
| UG-15-S06-A090 |  | Surround, joint test and line test |  | 3d | 2026-12-26 | 2026-12-28 | UG-15-S06-A080 SS+2d, UG-15-S06-A080 FF+2d | 0d |  | F4 | UG-15 | UG-15-S06 | A090 | 12.96962 |
| UG-15-S06-A100 |  | Backfill to NG and remove struts |  | 1d | 2026-12-28 | 2026-12-28 | UG-15-S06-A090 SS+2d, UG-15-S06-A090 FF+2d | 0d |  | F4 | UG-15 | UG-15-S06 | A100 | 181.094082 |
| UG-15-S06-A110 |  | Dewatering off, extract sheets, reinstate |  | 2d | 2026-12-29 | 2026-12-30 | UG-15-S06-A100 SS+1d, UG-15-S06-A100 FF+2d |  |  | F4 | UG-15 | UG-15-S06 | A110 | 25.93924 |
|  | UG-15-S03 | **UG-15-S03 / GRP-UG15-S03-CH065-CH123-(-5.33/-5.32)-57m / Run / Sheet piles** |  |  | 2026-12-01 | 2027-01-17 |  |  |  |  |  |  |  |  |
| UG-15-S03-A010 |  | Release: drawings, holds, access and gates | milestone | 0d | 2026-12-01 | 2026-12-01 |  | 8d | start on or after 2026-12-01 | F4 | UG-15 | UG-15-S03 | A010 |  |
| UG-15-S03-A020 |  | Set-out, crossing survey and working platform |  | 1d | 2026-12-10 | 2026-12-10 | UG-15-S03-A010, UG-15A-S02-A030 SS | 2d |  | F4 | UG-15 | UG-15-S03 | A020 | 57.3 |
| UG-15-S03-A030 |  | Pipe-support piling from platform (incl. integrity tests) |  | 9d | 2026-12-14 | 2026-12-23 | UG-15-S03-A020 SS+1d, UG-15-S03-A020 FF+2d, UG-15A-S02-A030 | 0d |  | F4 | UG-15 | UG-15-S03 | A030 | 42 |
| UG-15-S03-A040 |  | Install sheet piles (shored lengths) |  | 5d | 2026-12-19 | 2026-12-23 | UG-15-S03-A030 SS+3d, UG-15-S03-A030 FF+2d, UG-15A-S02-A040 | 0d |  | F4 | UG-15 | UG-15-S03 | A040 | 114.6 |
| UG-15-S03-A050 |  | Install dewatering and draw down |  | 9d | 2026-12-20 | 2026-12-29 | UG-15-S03-A040 SS+2d, UG-15-S03-A040 FF+2d, UG-15A-S02-A060 FS-9d | 0d |  | F4 | UG-15 | UG-15-S03 | A050 | 57.3 |
| UG-15-S03-A060 |  | Excavate and strut to formation |  | 5d | 2026-12-30 | 2027-01-04 | UG-15-S03-A050 SS+9d, UG-15-S03-A050 FF+2d, UG-15A-S02-A060 | 1d |  | F4 | UG-15 | UG-15-S03 | A060 | 1070.878924 |
| UG-15-S03-A070 |  | Trim piles, blinding and piled slab (incl. cure) |  | 8d | 2027-01-03 | 2027-01-11 | UG-15-S03-A060 SS+2d, UG-15-S03-A060 FF+2d, UG-15A-S02-A070 | 0d |  | F4 | UG-15 | UG-15-S03 | A070 | 57.3 |
| UG-15-S03-A080 |  | Lay and joint pipe (incl. fittings, tie-in) |  | 3d | 2027-01-06 | 2027-01-09 | UG-15-S03-A070 SS+3d, UG-15-S03-A070 FF+2d, UG-15A-S02-A080 | 0d |  | F4 | UG-15 | UG-15-S03 | A080 | 57.3 |
| UG-15-S03-A090 |  | Surround, joint test and line test |  | 3d | 2027-01-09 | 2027-01-11 | UG-15-S03-A080 SS+2d, UG-15-S03-A080 FF+2d | 0d |  | F4 | UG-15 | UG-15-S03 | A090 | 57.3 |
| UG-15-S03-A100 |  | Backfill to NG and remove struts |  | 3d | 2027-01-11 | 2027-01-13 | UG-15-S03-A090 SS+2d, UG-15-S03-A090 FF+2d, UG-15A-S02-A100 | 0d |  | F4 | UG-15 | UG-15-S03 | A100 | 796.240262 |
| UG-15-S03-A110 |  | Dewatering off, extract sheets, reinstate |  | 4d | 2027-01-13 | 2027-01-17 | UG-15-S03-A100 SS+2d, UG-15-S03-A100 FF+2d |  |  | F4 | UG-15 | UG-15-S03 | A110 | 114.6 |

Notes:
- UG-15-S06-A010: Notes: Front F4 / Line UG-15 / Package UG-15-S06 / Workbook logic: gates: START, D_DLU, structure ready
- UG-15-S06-A020: Notes: Front F4 / Line UG-15 / Package UG-15-S06 / Quantity 13 m / Workbook logic: FS from A010; UG-15-S05-A030 (SS, tie-in team follows the adjacent run)
- UG-15-S06-A030: Notes: Front F4 / Line UG-15 / Package UG-15-S06 / Quantity 12 piles / Workbook logic: gate: D_PILEDES
- UG-15-S06-A040: Notes: Front F4 / Line UG-15 / Package UG-15-S06 / Quantity 26 m wall
- UG-15-S06-A050: Notes: Front F4 / Line UG-15 / Package UG-15-S06 / Quantity 13 m
- UG-15-S06-A060: Notes: Front F4 / Line UG-15 / Package UG-15-S06 / Quantity 245 m3
- UG-15-S06-A070: Notes: Front F4 / Line UG-15 / Package UG-15-S06 / Quantity 13 m
- UG-15-S06-A080: Notes: Front F4 / Line UG-15 / Package UG-15-S06 / Quantity 13 m / Workbook logic: UG-15-S05-A080 (FS, closure)
- UG-15-S06-A090: Notes: Front F4 / Line UG-15 / Package UG-15-S06 / Quantity 13 m
- UG-15-S06-A100: Notes: Front F4 / Line UG-15 / Package UG-15-S06 / Quantity 181 m3
- UG-15-S06-A110: Notes: Front F4 / Line UG-15 / Package UG-15-S06 / Quantity 26 m wall
- UG-15-S03-A010: Notes: Front F4 / Line UG-15 / Package UG-15-S03 / Workbook logic: gates: START, D_DLU
- UG-15-S03-A020: Notes: Front F4 / Line UG-15 / Package UG-15-S03 / Quantity 57 m / Workbook logic: FS from A010; UG-15A-S02-A030 (SS, set-out one package ahead of piling)
- UG-15-S03-A030: Notes: Front F4 / Line UG-15 / Package UG-15-S03 / Quantity 42 piles / Workbook logic: gate: D_PILEDES
- UG-15-S03-A040: Notes: Front F4 / Line UG-15 / Package UG-15-S03 / Quantity 115 m wall
- UG-15-S03-A050: Notes: Front F4 / Line UG-15 / Package UG-15-S03 / Quantity 57 m / Workbook logic: UG-15A-S02-A060 (FS, negative lag = own duration: drawdown complete when the excavation crew is free)
- UG-15-S03-A060: Notes: Front F4 / Line UG-15 / Package UG-15-S03 / Quantity 1,071 m3
- UG-15-S03-A070: Notes: Front F4 / Line UG-15 / Package UG-15-S03 / Quantity 57 m
- UG-15-S03-A080: Notes: Front F4 / Line UG-15 / Package UG-15-S03 / Quantity 57 m
- UG-15-S03-A090: Notes: Front F4 / Line UG-15 / Package UG-15-S03 / Quantity 57 m
- UG-15-S03-A100: Notes: Front F4 / Line UG-15 / Package UG-15-S03 / Quantity 796 m3
- UG-15-S03-A110: Notes: Front F4 / Line UG-15 / Package UG-15-S03 / Quantity 115 m wall

| ID | WBS | Activity | Type | Duration | Start | Finish | Predecessors | Free float | Constraint | Text1 | Text2 | Text3 | Text4 | Number1 |
| --- | --- | --- | --- | --- | --- | --- | --- | --- | --- | --- | --- | --- | --- | --- |
|  | UG-15-S02 | **UG-15-S02 / GRP-UG15-S02-CH049-CH065-(-5.33/-5.33)-16m / Run / Sheet piles** |  |  | 2026-12-01 | 2027-01-21 |  |  |  |  |  |  |  |  |
| UG-15-S02-A010 |  | Release: drawings, holds, access and gates | milestone | 0d | 2026-12-01 | 2026-12-01 |  | 11d | start on or after 2026-12-01 | F4 | UG-15 | UG-15-S02 | A010 |  |
| UG-15-S02-A020 |  | Set-out, crossing survey and working platform |  | 1d | 2026-12-14 | 2026-12-14 | UG-15-S02-A010, UG-15-S03-A030 SS | 9d |  | F4 | UG-15 | UG-15-S02 | A020 | 16.1 |
| UG-15-S02-A030 |  | Pipe-support piling from platform (incl. integrity tests) |  | 3d | 2026-12-26 | 2026-12-28 | UG-15-S02-A020 SS+1d, UG-15-S02-A020 FF+2d, UG-15-S03-A030 | 0d |  | F4 | UG-15 | UG-15-S02 | A030 | 14 |
| UG-15-S02-A040 |  | Install sheet piles (shored lengths) |  | 2d | 2026-12-27 | 2026-12-28 | UG-15-S02-A030 SS+2d, UG-15-S02-A030 FF+2d, UG-15-S03-A040 | 0d |  | F4 | UG-15 | UG-15-S02 | A040 | 32.2 |
| UG-15-S02-A050 |  | Install dewatering and draw down |  | 8d | 2026-12-28 | 2027-01-05 | UG-15-S02-A040 SS+1d, UG-15-S02-A040 FF+2d, UG-15-S03-A060 FS-8d | 0d |  | F4 | UG-15 | UG-15-S02 | A050 | 16.1 |
| UG-15-S02-A060 |  | Excavate and strut to formation |  | 2d | 2027-01-07 | 2027-01-09 | UG-15-S02-A050 SS+9d, UG-15-S02-A050 FF+2d, UG-15-S03-A060 | 2d |  | F4 | UG-15 | UG-15-S02 | A060 | 301.067085 |
| UG-15-S02-A070 |  | Trim piles, blinding and piled slab (incl. cure) |  | 5d | 2027-01-13 | 2027-01-18 | UG-15-S02-A060 SS+1d, UG-15-S02-A060 FF+2d, UG-15-S03-A070 | 0d |  | F4 | UG-15 | UG-15-S02 | A070 | 16.1 |
| UG-15-S02-A080 |  | Lay and joint pipe (incl. fittings, tie-in) |  | 1d | 2027-01-16 | 2027-01-16 | UG-15-S02-A070 SS+2d, UG-15-S02-A070 FF+2d, UG-15-S03-A080 | 0d |  | F4 | UG-15 | UG-15-S02 | A080 | 16.1 |
| UG-15-S02-A090 |  | Surround, joint test and line test |  | 3d | 2027-01-16 | 2027-01-18 | UG-15-S02-A080 SS+1d, UG-15-S02-A080 FF+2d | 0d |  | F4 | UG-15 | UG-15-S02 | A090 | 16.1 |
| UG-15-S02-A100 |  | Backfill to NG and remove struts |  | 1d | 2027-01-19 | 2027-01-19 | UG-15-S02-A090 SS+2d, UG-15-S02-A090 FF+2d, UG-15-S03-A100 | 0d |  | F4 | UG-15 | UG-15-S02 | A100 | 223.899852 |
| UG-15-S02-A110 |  | Dewatering off, extract sheets, reinstate |  | 2d | 2027-01-20 | 2027-01-21 | UG-15-S02-A100 SS+1d, UG-15-S02-A100 FF+2d |  |  | F4 | UG-15 | UG-15-S02 | A110 | 32.2 |
|  | UG-15A | **UG-15A** |  |  | 2026-12-01 | 2027-06-29 |  |  |  |  |  |  |  |  |
|  | UG-15A-S02 | **UG-15A-S02 / HDPE-UG15A-S02-EL006-CCT-(-4.90/-4.91)-12m / Run / Sheet piles** |  |  | 2026-12-01 | 2027-01-11 |  |  |  |  |  |  |  |  |
| UG-15A-S02-A010 |  | Release: drawings, holds, access and gates | milestone | 0d | 2026-12-01 | 2026-12-01 |  | 4d | start on or after 2026-12-01 | F4 | UG-15A | UG-15A-S02 | A010 |  |
| UG-15A-S02-A020 |  | Set-out, crossing survey and working platform |  | 1d | 2026-12-06 | 2026-12-06 | UG-15A-S02-A010, UG-15-S04-A030 SS | 3d |  | F4 | UG-15A | UG-15A-S02 | A020 | 12.066296 |
| UG-15A-S02-A030 |  | Pipe-support piling from platform (incl. integrity tests) |  | 3d | 2026-12-10 | 2026-12-13 | UG-15A-S02-A020 SS+1d, UG-15A-S02-A020 FF+2d, UG-15-S04-A030 | 0d |  | F4 | UG-15A | UG-15A-S02 | A030 | 12 |
| UG-15A-S02-A040 |  | Install sheet piles (shored lengths) |  | 1d | 2026-12-12 | 2026-12-12 | UG-15A-S02-A030 SS+2d, UG-15A-S02-A030 FF+2d, UG-15-S04-A040 | 0d |  | F4 | UG-15A | UG-15A-S02 | A040 | 24.132591 |
| UG-15A-S02-A050 |  | Install dewatering and draw down |  | 8d | 2026-12-13 | 2026-12-21 | UG-15A-S02-A040 SS+1d, UG-15A-S02-A040 FF+2d, UG-15-S04-A060 FS-8d | 0d |  | F4 | UG-15A | UG-15A-S02 | A050 | 12.066296 |
| UG-15A-S02-A060 |  | Excavate and strut to formation |  | 1d | 2026-12-23 | 2026-12-23 | UG-15A-S02-A050 SS+9d, UG-15A-S02-A050 FF+2d, UG-15-S04-A060 SS, UG-15-S05-A060 SS, UG-15-S04-A060 | 3d |  | F4 | UG-15A | UG-15A-S02 | A060 | 162.803604 |
| UG-15A-S02-A070 |  | Trim piles, blinding and piled slab (incl. cure) |  | 5d | 2026-12-28 | 2027-01-02 | UG-15A-S02-A060 SS+1d, UG-15A-S02-A060 FF+2d, UG-15-S04-A070 | 0d |  | F4 | UG-15A | UG-15A-S02 | A070 | 12.066296 |
| UG-15A-S02-A080 |  | Lay and joint pipe (incl. fittings, tie-in) |  | 3d | 2026-12-30 | 2027-01-02 | UG-15A-S02-A070 SS+2d, UG-15A-S02-A070 FF+2d, UG-15-S04-A080 | 0d |  | F4 | UG-15A | UG-15A-S02 | A080 | 12.066296 |
| UG-15A-S02-A090 |  | Surround, joint test and line test |  | 3d | 2027-01-02 | 2027-01-04 | UG-15A-S02-A080 SS+2d, UG-15A-S02-A080 FF+2d | 2d |  | F4 | UG-15A | UG-15A-S02 | A090 | 12.066296 |
| UG-15A-S02-A100 |  | Backfill to NG and remove struts |  | 1d | 2027-01-09 | 2027-01-09 | UG-15A-S02-A090 SS+2d, UG-15A-S02-A090 FF+2d, UG-15-S04-A080, UG-15-S05-A080, UG-15-S04-A100 | 0d |  | F4 | UG-15A | UG-15A-S02 | A100 | 135.642336 |
| UG-15A-S02-A110 |  | Dewatering off, extract sheets, reinstate |  | 2d | 2027-01-10 | 2027-01-11 | UG-15A-S02-A100 SS+1d, UG-15A-S02-A100 FF+2d |  |  | F4 | UG-15A | UG-15A-S02 | A110 | 24.132591 |

Notes:
- UG-15-S02-A010: Notes: Front F4 / Line UG-15 / Package UG-15-S02 / Workbook logic: gates: START, D_DLU
- UG-15-S02-A020: Notes: Front F4 / Line UG-15 / Package UG-15-S02 / Quantity 16 m / Workbook logic: FS from A010; UG-15-S03-A030 (SS, set-out one package ahead of piling)
- UG-15-S02-A030: Notes: Front F4 / Line UG-15 / Package UG-15-S02 / Quantity 14 piles / Workbook logic: gate: D_PILEDES
- UG-15-S02-A040: Notes: Front F4 / Line UG-15 / Package UG-15-S02 / Quantity 32 m wall
- UG-15-S02-A050: Notes: Front F4 / Line UG-15 / Package UG-15-S02 / Quantity 16 m / Workbook logic: UG-15-S03-A060 (FS, negative lag = own duration: drawdown complete when the excavation crew is free)
- UG-15-S02-A060: Notes: Front F4 / Line UG-15 / Package UG-15-S02 / Quantity 301 m3
- UG-15-S02-A070: Notes: Front F4 / Line UG-15 / Package UG-15-S02 / Quantity 16 m
- UG-15-S02-A080: Notes: Front F4 / Line UG-15 / Package UG-15-S02 / Quantity 16 m
- UG-15-S02-A090: Notes: Front F4 / Line UG-15 / Package UG-15-S02 / Quantity 16 m
- UG-15-S02-A100: Notes: Front F4 / Line UG-15 / Package UG-15-S02 / Quantity 224 m3
- UG-15-S02-A110: Notes: Front F4 / Line UG-15 / Package UG-15-S02 / Quantity 32 m wall
- UG-15A-S02-A010: Notes: Front F4 / Line UG-15A / Package UG-15A-S02 / Workbook logic: gates: START, D_DLU
- UG-15A-S02-A020: Notes: Front F4 / Line UG-15A / Package UG-15A-S02 / Quantity 12 m / Workbook logic: FS from A010; UG-15-S04-A030 (SS, set-out one package ahead of piling)
- UG-15A-S02-A030: Notes: Front F4 / Line UG-15A / Package UG-15A-S02 / Quantity 12 piles / Workbook logic: gate: D_PILEDES
- UG-15A-S02-A040: Notes: Front F4 / Line UG-15A / Package UG-15A-S02 / Quantity 24 m wall
- UG-15A-S02-A050: Notes: Front F4 / Line UG-15A / Package UG-15A-S02 / Quantity 12 m / Workbook logic: UG-15-S04-A060 (FS, negative lag = own duration: drawdown complete when the excavation crew is free)
- UG-15A-S02-A060: Notes: Front F4 / Line UG-15A / Package UG-15A-S02 / Quantity 163 m3 / Workbook logic: UG-15-S04-A060 (SS, shared trench); UG-15-S05-A060 (SS, shared trench)
- UG-15A-S02-A070: Notes: Front F4 / Line UG-15A / Package UG-15A-S02 / Quantity 12 m
- UG-15A-S02-A080: Notes: Front F4 / Line UG-15A / Package UG-15A-S02 / Quantity 12 m
- UG-15A-S02-A090: Notes: Front F4 / Line UG-15A / Package UG-15A-S02 / Quantity 12 m
- UG-15A-S02-A100: Notes: Front F4 / Line UG-15A / Package UG-15A-S02 / Quantity 136 m3 / Workbook logic: UG-15-S04-A080 (FS, shared trench laid); UG-15-S05-A080 (FS, shared trench laid)
- UG-15A-S02-A110: Notes: Front F4 / Line UG-15A / Package UG-15A-S02 / Quantity 24 m wall

| ID | WBS | Activity | Type | Duration | Start | Finish | Predecessors | Free float | Constraint | Text1 | Text2 | Text3 | Text4 | Number1 |
| --- | --- | --- | --- | --- | --- | --- | --- | --- | --- | --- | --- | --- | --- | --- |
|  | UG-15A-S01 | **UG-15A-S01 / HDPE-UG15A-S01-FSTA-EL006-(-4.90/-4.88)-6m / Tie-in / Sheet piles** |  |  | 2026-12-01 | 2027-01-11 |  |  |  |  |  |  |  |  |
| UG-15A-S01-A010 |  | Release: drawings, holds, access and gates | milestone | 0d | 2026-12-01 | 2026-12-01 |  | 8d | start on or after 2026-12-01 | F4 | UG-15A | UG-15A-S01 | A010 |  |
| UG-15A-S01-A020 |  | Set-out, crossing survey and working platform |  | 1d | 2026-12-10 | 2026-12-10 | UG-15A-S01-A010, UG-15A-S02-A030 SS | 0d |  | F4 | UG-15A | UG-15A-S01 | A020 | 6.033045 |
| UG-15A-S01-A030 |  | Pipe-support piling from platform (incl. integrity tests) |  | 2d | 2026-12-12 | 2026-12-13 | UG-15A-S01-A020 SS+1d, UG-15A-S01-A020 FF+2d | 0d |  | F4 | UG-15A | UG-15A-S01 | A030 | 8 |
| UG-15A-S01-A040 |  | Install sheet piles (shored lengths) |  | 1d | 2026-12-12 | 2026-12-12 | UG-15A-S01-A030 SS+1d, UG-15A-S01-A030 FF+2d | 0d |  | F4 | UG-15A | UG-15A-S01 | A040 | 12.06609 |
| UG-15A-S01-A050 |  | Install dewatering and draw down |  | 8d | 2026-12-13 | 2026-12-21 | UG-15A-S01-A040 SS+1d, UG-15A-S01-A040 FF+2d | 0d |  | F4 | UG-15A | UG-15A-S01 | A050 | 6.033045 |
| UG-15A-S01-A060 |  | Excavate and strut to formation |  | 1d | 2026-12-23 | 2026-12-23 | UG-15A-S01-A050 SS+9d, UG-15A-S01-A050 FF+2d | 0d |  | F4 | UG-15A | UG-15A-S01 | A060 | 81.019595 |
| UG-15A-S01-A070 |  | Trim piles, blinding and piled slab (incl. cure) |  | 4d | 2026-12-24 | 2026-12-28 | UG-15A-S01-A060 SS+1d, UG-15A-S01-A060 FF+2d | 8d |  | F4 | UG-15A | UG-15A-S01 | A070 | 6.033045 |
| UG-15A-S01-A080 |  | Lay and joint pipe (incl. fittings, tie-in) |  | 4d | 2027-01-05 | 2027-01-09 | UG-15A-S01-A070 SS+2d, UG-15A-S01-A070 FF+2d, UG-15A-S02-A080 | 0d |  | F4 | UG-15A | UG-15A-S01 | A080 | 6.033045 |
| UG-15A-S01-A090 |  | Surround, joint test and line test |  | 3d | 2027-01-07 | 2027-01-10 | UG-15A-S01-A080 SS+2d, UG-15A-S01-A080 FF+2d | 0d |  | F4 | UG-15A | UG-15A-S01 | A090 | 6.033045 |
| UG-15A-S01-A100 |  | Backfill to NG and remove struts |  | 1d | 2027-01-09 | 2027-01-09 | UG-15A-S01-A090 SS+2d, UG-15A-S01-A090 FF+2d | 0d |  | F4 | UG-15A | UG-15A-S01 | A100 | 67.596567 |
| UG-15A-S01-A110 |  | Dewatering off, extract sheets, reinstate |  | 2d | 2027-01-10 | 2027-01-11 | UG-15A-S01-A100 SS+1d, UG-15A-S01-A100 FF+2d |  |  | F4 | UG-15A | UG-15A-S01 | A110 | 12.06609 |
|  | UG-15A-S03 | **UG-15A-S03 / HDPE-UG15A-S03-FSTC-EL017-(-2.72/-2.72)-17m / Tie-in / Open cut** |  |  | 2026-12-01 | 2027-06-29 |  |  |  |  |  |  |  |  |
| UG-15A-S03-A010 |  | Release: drawings, holds, access and gates | milestone | 0d | 2026-12-01 | 2026-12-01 |  | 104d | start on or after 2026-12-01 | F4 | UG-15A | UG-15A-S03 | A010 |  |
| UG-15A-S03-A020 |  | Set-out, crossing survey and working platform |  | 1d | 2027-04-01 | 2027-04-01 | UG-15A-S03-A010, UG-15A-S04-A030 SS | 0d |  | F4 | UG-15A | UG-15A-S03 | A020 | 17.450426 |
| UG-15A-S03-A030 |  | Pipe-support piling from platform (incl. integrity tests) |  | 3d | 2027-04-03 | 2027-04-05 | UG-15A-S03-A020 SS+1d, UG-15A-S03-A020 FF+2d | 0d |  | F4 | UG-15A | UG-15A-S03 | A030 | 14 |
| UG-15A-S03-A050 |  | Install dewatering and draw down |  | 8d | 2027-04-04 | 2027-04-12 | UG-15A-S03-A030 SS+2d, UG-15A-S03-A030 SF+4d, UG-15A-S03-A030 FF+2d | 58d |  | F4 | UG-15A | UG-15A-S03 | A050 | 17.450426 |
| UG-15A-S03-A060 |  | Excavate and strut to formation |  | 1d | 2027-06-21 | 2027-06-21 | UG-15A-S03-A050 SS+9d, UG-15A-S03-A050 FF+2d, UG-11B-S05-A100, UG-11B-S06-A100, UG-17-S03-A100, UG-17-S04-A100 | 0d |  | F4 | UG-15A | UG-15A-S03 | A060 | 249.624976 |
| UG-15A-S03-A070 |  | Trim piles, blinding and piled slab (incl. cure) |  | 5d | 2027-06-22 | 2027-06-27 | UG-15A-S03-A060 SS+1d, UG-15A-S03-A060 FF+2d | 0d |  | F4 | UG-15A | UG-15A-S03 | A070 | 17.450426 |
| UG-15A-S03-A080 |  | Lay and joint pipe (incl. fittings, tie-in) |  | 5d | 2027-06-24 | 2027-06-29 | UG-15A-S03-A070 SS+2d, UG-15A-S03-A070 FF+2d, UG-15A-S04-A080 | 0d |  | F4 | UG-15A | UG-15A-S03 | A080 | 17.450426 |
| UG-15A-S03-A090 |  | Surround, joint test and line test |  | 3d | 2027-06-26 | 2027-06-28 | UG-15A-S03-A080 SS+2d, UG-15A-S03-A080 FF+2d | 0d |  | F4 | UG-15A | UG-15A-S03 | A090 | 17.450426 |
| UG-15A-S03-A100 |  | Backfill to NG and remove struts |  | 1d | 2027-06-28 | 2027-06-28 | UG-15A-S03-A090 SS+2d, UG-15A-S03-A090 FF+2d | 0d |  | F4 | UG-15A | UG-15A-S03 | A100 | 210.693502 |
| UG-15A-S03-A110 |  | Dewatering off, extract sheets, reinstate |  | 1d | 2027-06-29 | 2027-06-29 | UG-15A-S03-A100 SS+1d, UG-15A-S03-A100 FF+2d |  |  | F4 | UG-15A | UG-15A-S03 | A110 | 0 |
|  | UG-15A-S07 | **UG-15A-S07 / HDPE-UG15A-S07-FSTD-EL011-(-4.70/-4.70)-11m / Tie-in / Sheet piles** |  |  | 2026-12-01 | 2027-02-22 |  |  |  |  |  |  |  |  |
| UG-15A-S07-A010 |  | Release: drawings, holds, access and gates | milestone | 0d | 2026-12-01 | 2026-12-01 |  | 34d | start on or after 2026-12-01 | F4 | UG-15A | UG-15A-S07 | A010 |  |
| UG-15A-S07-A020 |  | Set-out, crossing survey and working platform |  | 1d | 2027-01-10 | 2027-01-10 | UG-15A-S07-A010, UG-15A-S08-A030 SS | 0d |  | F4 | UG-15A | UG-15A-S07 | A020 | 10.712849 |
| UG-15A-S07-A030 |  | Pipe-support piling from platform (incl. integrity tests) |  | 2d | 2027-01-11 | 2027-01-12 | UG-15A-S07-A020 SS+1d, UG-15A-S07-A020 FF+2d | 0d |  | F4 | UG-15A | UG-15A-S07 | A030 | 10 |
| UG-15A-S07-A040 |  | Install sheet piles (shored lengths) |  | 1d | 2027-01-12 | 2027-01-12 | UG-15A-S07-A030 SS+1d, UG-15A-S07-A030 FF+2d | 0d |  | F4 | UG-15A | UG-15A-S07 | A040 | 21.425698 |
| UG-15A-S07-A050 |  | Install dewatering and draw down |  | 8d | 2027-01-13 | 2027-01-21 | UG-15A-S07-A040 SS+1d, UG-15A-S07-A040 FF+2d | 0d |  | F4 | UG-15A | UG-15A-S07 | A050 | 10.712849 |
| UG-15A-S07-A060 |  | Excavate and strut to formation |  | 1d | 2027-01-23 | 2027-01-23 | UG-15A-S07-A050 SS+9d, UG-15A-S07-A050 FF+2d | 0d |  | F4 | UG-15A | UG-15A-S07 | A060 | 137.119487 |
| UG-15A-S07-A070 |  | Trim piles, blinding and piled slab (incl. cure) |  | 4d | 2027-01-24 | 2027-01-27 | UG-15A-S07-A060 SS+1d, UG-15A-S07-A060 FF+2d | 18d |  | F4 | UG-15A | UG-15A-S07 | A070 | 10.712849 |
| UG-15A-S07-A080 |  | Lay and joint pipe (incl. fittings, tie-in) |  | 4d | 2027-02-16 | 2027-02-20 | UG-15A-S07-A070 SS+2d, UG-15A-S07-A070 FF+2d, UG-15A-S08-A080 | 0d |  | F4 | UG-15A | UG-15A-S07 | A080 | 10.712849 |
| UG-15A-S07-A090 |  | Surround, joint test and line test |  | 3d | 2027-02-18 | 2027-02-21 | UG-15A-S07-A080 SS+2d, UG-15A-S07-A080 FF+2d | 0d |  | F4 | UG-15A | UG-15A-S07 | A090 | 10.712849 |
| UG-15A-S07-A100 |  | Backfill to NG and remove struts |  | 1d | 2027-02-20 | 2027-02-20 | UG-15A-S07-A090 SS+2d, UG-15A-S07-A090 FF+2d | 0d |  | F4 | UG-15A | UG-15A-S07 | A100 | 113.221525 |
| UG-15A-S07-A110 |  | Dewatering off, extract sheets, reinstate |  | 2d | 2027-02-21 | 2027-02-22 | UG-15A-S07-A100 SS+1d, UG-15A-S07-A100 FF+2d |  |  | F4 | UG-15A | UG-15A-S07 | A110 | 21.425698 |

Notes:
- UG-15A-S01-A010: Notes: Front F4 / Line UG-15A / Package UG-15A-S01 / Workbook logic: gates: START, D_DLU, structure ready
- UG-15A-S01-A020: Notes: Front F4 / Line UG-15A / Package UG-15A-S01 / Quantity 6 m / Workbook logic: FS from A010; UG-15A-S02-A030 (SS, tie-in team follows the adjacent run)
- UG-15A-S01-A030: Notes: Front F4 / Line UG-15A / Package UG-15A-S01 / Quantity 8 piles / Workbook logic: gate: D_PILEDES
- UG-15A-S01-A040: Notes: Front F4 / Line UG-15A / Package UG-15A-S01 / Quantity 12 m wall
- UG-15A-S01-A050: Notes: Front F4 / Line UG-15A / Package UG-15A-S01 / Quantity 6 m
- UG-15A-S01-A060: Notes: Front F4 / Line UG-15A / Package UG-15A-S01 / Quantity 81 m3
- UG-15A-S01-A070: Notes: Front F4 / Line UG-15A / Package UG-15A-S01 / Quantity 6 m
- UG-15A-S01-A080: Notes: Front F4 / Line UG-15A / Package UG-15A-S01 / Quantity 6 m / Workbook logic: UG-15A-S02-A080 (FS, closure)
- UG-15A-S01-A090: Notes: Front F4 / Line UG-15A / Package UG-15A-S01 / Quantity 6 m
- UG-15A-S01-A100: Notes: Front F4 / Line UG-15A / Package UG-15A-S01 / Quantity 68 m3
- UG-15A-S01-A110: Notes: Front F4 / Line UG-15A / Package UG-15A-S01 / Quantity 12 m wall
- UG-15A-S03-A010: Notes: Front F4 / Line UG-15A / Package UG-15A-S03 / Workbook logic: gates: START, D_DLU, structure ready
- UG-15A-S03-A020: Notes: Front F4 / Line UG-15A / Package UG-15A-S03 / Quantity 17 m / Workbook logic: FS from A010; UG-15A-S04-A030 (SS, tie-in team follows the adjacent run)
- UG-15A-S03-A030: Notes: Front F4 / Line UG-15A / Package UG-15A-S03 / Quantity 14 piles / Workbook logic: gate: D_PILEDES
- UG-15A-S03-A050: Notes: Front F4 / Line UG-15A / Package UG-15A-S03 / Quantity 17 m
- UG-15A-S03-A060: Notes: Front F4 / Line UG-15A / Package UG-15A-S03 / Quantity 250 m3 / Workbook logic: UG-11B-S05-A100 (FS, deeper first); UG-11B-S06-A100 (FS, deeper first); UG-17-S03-A100 (FS, deeper first); UG-17-S04-A100 (FS, deeper first)
- UG-15A-S03-A070: Notes: Front F4 / Line UG-15A / Package UG-15A-S03 / Quantity 17 m
- UG-15A-S03-A080: Notes: Front F4 / Line UG-15A / Package UG-15A-S03 / Quantity 17 m / Workbook logic: UG-15A-S04-A080 (FS, closure)
- UG-15A-S03-A090: Notes: Front F4 / Line UG-15A / Package UG-15A-S03 / Quantity 17 m
- UG-15A-S03-A100: Notes: Front F4 / Line UG-15A / Package UG-15A-S03 / Quantity 211 m3
- UG-15A-S03-A110: Notes: Front F4 / Line UG-15A / Package UG-15A-S03 / Quantity 0 m wall
- UG-15A-S07-A010: Notes: Front F4 / Line UG-15A / Package UG-15A-S07 / Workbook logic: gates: START, D_DLU, structure ready
- UG-15A-S07-A020: Notes: Front F4 / Line UG-15A / Package UG-15A-S07 / Quantity 11 m / Workbook logic: FS from A010; UG-15A-S08-A030 (SS, tie-in team follows the adjacent run)
- UG-15A-S07-A030: Notes: Front F4 / Line UG-15A / Package UG-15A-S07 / Quantity 10 piles / Workbook logic: gate: D_PILEDES
- UG-15A-S07-A040: Notes: Front F4 / Line UG-15A / Package UG-15A-S07 / Quantity 21 m wall
- UG-15A-S07-A050: Notes: Front F4 / Line UG-15A / Package UG-15A-S07 / Quantity 11 m
- UG-15A-S07-A060: Notes: Front F4 / Line UG-15A / Package UG-15A-S07 / Quantity 137 m3
- UG-15A-S07-A070: Notes: Front F4 / Line UG-15A / Package UG-15A-S07 / Quantity 11 m
- UG-15A-S07-A080: Notes: Front F4 / Line UG-15A / Package UG-15A-S07 / Quantity 11 m / Workbook logic: UG-15A-S08-A080 (FS, closure)
- UG-15A-S07-A090: Notes: Front F4 / Line UG-15A / Package UG-15A-S07 / Quantity 11 m
- UG-15A-S07-A100: Notes: Front F4 / Line UG-15A / Package UG-15A-S07 / Quantity 113 m3
- UG-15A-S07-A110: Notes: Front F4 / Line UG-15A / Package UG-15A-S07 / Quantity 21 m wall

| ID | WBS | Activity | Type | Duration | Start | Finish | Predecessors | Free float | Constraint | Text1 | Text2 | Text3 | Text4 | Number1 |
| --- | --- | --- | --- | --- | --- | --- | --- | --- | --- | --- | --- | --- | --- | --- |
|  | UG-07 | **UG-07** |  |  | 2026-12-01 | 2027-04-19 |  |  |  |  |  |  |  |  |
|  | UG-07-S02 | **UG-07-S02 / GRP-UG07-S02-CH020-CH056-(-3.62/-4.58)-35m / Run / Mixed: 33 m sheet piles** |  |  | 2026-12-01 | 2027-04-15 |  |  |  |  |  |  |  |  |
| UG-07-S02-A010 |  | Release: drawings, holds, access and gates | milestone | 0d | 2026-12-01 | 2026-12-01 |  | 21d | start on or after 2026-12-01 | F4 | UG-07 | UG-07-S02 | A010 |  |
| UG-07-S02-A020 |  | Set-out, crossing survey and working platform |  | 1d | 2026-12-26 | 2026-12-26 | UG-07-S02-A010, UG-15-S02-A030 SS | 2d |  | F4 | UG-07 | UG-07-S02 | A020 | 35.265815 |
| UG-07-S02-A030 |  | Pipe-support piling from platform (incl. integrity tests) |  | 6d | 2026-12-29 | 2027-01-04 | UG-07-S02-A020 SS+1d, UG-07-S02-A020 FF+2d, UG-15-S02-A030 | 0d |  | F4 | UG-07 | UG-07-S02 | A030 | 26 |
| UG-07-S02-A040 |  | Install sheet piles (shored lengths) |  | 3d | 2027-01-02 | 2027-01-04 | UG-07-S02-A030 SS+3d, UG-07-S02-A030 FF+2d, UG-15-S02-A040 | 0d |  | F4 | UG-07 | UG-07-S02 | A040 | 66.477291 |
| UG-07-S02-A050 |  | Install dewatering and draw down |  | 8d | 2027-01-03 | 2027-01-11 | UG-07-S02-A040 SS+2d, UG-07-S02-A040 FF+2d, UG-15-S02-A060 FS-8d | 50d |  | F4 | UG-07 | UG-07-S02 | A050 | 35.265815 |
| UG-07-S02-A060 |  | Excavate and strut to formation |  | 3d | 2027-03-13 | 2027-03-15 | UG-07-S02-A050 SS+9d, UG-07-S02-A050 FF+2d, UG-12-S05-A100, UG-12-S06-A100, UG-15-S02-A060 | 0d |  | F4 | UG-07 | UG-07-S02 | A060 | 544.60322 |
| UG-07-S02-A070 |  | Trim piles, blinding and piled slab (incl. cure) |  | 6d | 2027-03-15 | 2027-03-21 | UG-07-S02-A060 SS+2d, UG-07-S02-A060 FF+2d, UG-15-S02-A070 | 0d |  | F4 | UG-07 | UG-07-S02 | A070 | 35.265815 |
| UG-07-S02-A080 |  | Lay and joint pipe (incl. fittings, tie-in) |  | 3d | 2027-03-18 | 2027-03-21 | UG-07-S02-A070 SS+3d, UG-07-S02-A070 FF+2d, UG-15-S02-A080 | 0d |  | F4 | UG-07 | UG-07-S02 | A080 | 35.265815 |
| UG-07-S02-A090 |  | Surround, joint test and line test |  | 3d | 2027-03-20 | 2027-03-22 | UG-07-S02-A080 SS+2d, UG-07-S02-A080 FF+2d | 17d |  | F4 | UG-07 | UG-07-S02 | A090 | 35.265815 |
| UG-07-S02-A100 |  | Backfill to NG and remove struts |  | 2d | 2027-04-12 | 2027-04-13 | UG-07-S02-A090 SS+2d, UG-07-S02-A090 FF+2d, UG-07A-S09-A080, UG-07A-S12-A080, UG-15-S02-A100 | 0d |  | F4 | UG-07 | UG-07-S02 | A100 | 371.841462 |
| UG-07-S02-A110 |  | Dewatering off, extract sheets, reinstate |  | 3d | 2027-04-13 | 2027-04-15 | UG-07-S02-A100 SS+1d, UG-07-S02-A100 FF+2d |  |  | F4 | UG-07 | UG-07-S02 | A110 | 66.477291 |
|  | UG-07-S01 | **UG-07-S01 / GRP-UG07-S01-FSTE-CH020-(-3.22/-3.62)-20m / Run / Open cut** |  |  | 2026-12-01 | 2027-04-19 |  |  |  |  |  |  |  |  |
| UG-07-S01-A010 |  | Release: drawings, holds, access and gates | milestone | 0d | 2026-12-01 | 2026-12-01 |  | 30d | start on or after 2026-12-01 | F4 | UG-07 | UG-07-S01 | A010 |  |
| UG-07-S01-A020 |  | Set-out, crossing survey and working platform |  | 1d | 2027-01-05 | 2027-01-05 | UG-07-S01-A010, UG-07A-S12-A030 SS | 4d |  | F4 | UG-07 | UG-07-S01 | A020 | 20.234185 |
| UG-07-S01-A030 |  | Pipe-support piling from platform (incl. integrity tests) |  | 4d | 2027-01-11 | 2027-01-14 | UG-07-S01-A020 SS+1d, UG-07-S01-A020 FF+2d, UG-07A-S12-A030 | 0d |  | F4 | UG-07 | UG-07-S01 | A030 | 16 |
| UG-07-S01-A050 |  | Install dewatering and draw down |  | 8d | 2027-03-10 | 2027-03-18 | UG-07A-S12-A060 FS-8d, UG-07-S01-A030 SS+2d, UG-07-S01-A030 SF+4d, UG-07-S01-A030 FF+2d | 0d |  | F4 | UG-07 | UG-07-S01 | A050 | 20.234185 |
| UG-07-S01-A060 |  | Excavate and strut to formation |  | 2d | 2027-03-20 | 2027-03-21 | UG-07-S01-A050 SS+9d, UG-07-S01-A050 FF+2d, UG-12-S06-A100, UG-07A-S12-A060 SS, UG-07A-S12-A060 | 0d |  | F4 | UG-07 | UG-07-S01 | A060 | 497.814332 |
| UG-07-S01-A070 |  | Trim piles, blinding and piled slab (incl. cure) |  | 5d | 2027-03-29 | 2027-04-03 | UG-07-S01-A060 SS+1d, UG-07-S01-A060 FF+2d, UG-07A-S12-A070 | 0d |  | F4 | UG-07 | UG-07-S01 | A070 | 20.234185 |
| UG-07-S01-A080 |  | Lay and joint pipe (incl. fittings, tie-in) |  | 4d | 2027-03-31 | 2027-04-04 | UG-07-S01-A070 SS+2d, UG-07-S01-A070 FF+2d, UG-07A-S12-A080 | 0d |  | F4 | UG-07 | UG-07-S01 | A080 | 20.234185 |
| UG-07-S01-A090 |  | Surround, joint test and line test |  | 3d | 2027-04-03 | 2027-04-05 | UG-07-S01-A080 SS+2d, UG-07-S01-A080 FF+2d | 10d |  | F4 | UG-07 | UG-07-S01 | A090 | 20.234185 |
| UG-07-S01-A100 |  | Backfill to NG and remove struts |  | 2d | 2027-04-18 | 2027-04-19 | UG-07-S01-A090 SS+2d, UG-07-S01-A090 FF+2d, UG-07A-S05-A080, UG-07A-S09-A080, UG-07A-S12-A080, UG-07A-S12-A100 | 0d |  | F4 | UG-07 | UG-07-S01 | A100 | 398.965864 |
| UG-07-S01-A110 |  | Dewatering off, extract sheets, reinstate |  | 1d | 2027-04-19 | 2027-04-19 | UG-07-S01-A100 SS+1d, UG-07-S01-A100 FF+2d |  |  | F4 | UG-07 | UG-07-S01 | A110 | 0 |

Notes:
- UG-07-S02-A010: Notes: Front F4 / Line UG-07 / Package UG-07-S02 / Workbook logic: gates: START, D_DLU
- UG-07-S02-A020: Notes: Front F4 / Line UG-07 / Package UG-07-S02 / Quantity 35 m / Workbook logic: FS from A010; UG-15-S02-A030 (SS, set-out one package ahead of piling)
- UG-07-S02-A030: Notes: Front F4 / Line UG-07 / Package UG-07-S02 / Quantity 26 piles / Workbook logic: gate: D_PILEDES
- UG-07-S02-A040: Notes: Front F4 / Line UG-07 / Package UG-07-S02 / Quantity 66 m wall
- UG-07-S02-A050: Notes: Front F4 / Line UG-07 / Package UG-07-S02 / Quantity 35 m / Workbook logic: UG-15-S02-A060 (FS, negative lag = own duration: drawdown complete when the excavation crew is free)
- UG-07-S02-A060: Notes: Front F4 / Line UG-07 / Package UG-07-S02 / Quantity 545 m3 / Workbook logic: UG-12-S05-A100 (FS, deeper first); UG-12-S06-A100 (FS, deeper first)
- UG-07-S02-A070: Notes: Front F4 / Line UG-07 / Package UG-07-S02 / Quantity 35 m
- UG-07-S02-A080: Notes: Front F4 / Line UG-07 / Package UG-07-S02 / Quantity 35 m
- UG-07-S02-A090: Notes: Front F4 / Line UG-07 / Package UG-07-S02 / Quantity 35 m
- UG-07-S02-A100: Notes: Front F4 / Line UG-07 / Package UG-07-S02 / Quantity 372 m3 / Workbook logic: UG-07A-S09-A080 (FS, shared trench laid); UG-07A-S12-A080 (FS, shared trench laid)
- UG-07-S02-A110: Notes: Front F4 / Line UG-07 / Package UG-07-S02 / Quantity 66 m wall
- UG-07-S01-A010: Notes: Front F4 / Line UG-07 / Package UG-07-S01 / Workbook logic: gates: START, D_DLU
- UG-07-S01-A020: Notes: Front F4 / Line UG-07 / Package UG-07-S01 / Quantity 20 m / Workbook logic: FS from A010; UG-07A-S12-A030 (SS, set-out one package ahead of piling)
- UG-07-S01-A030: Notes: Front F4 / Line UG-07 / Package UG-07-S01 / Quantity 16 piles / Workbook logic: gate: D_PILEDES
- UG-07-S01-A050: Notes: Front F4 / Line UG-07 / Package UG-07-S01 / Quantity 20 m / Workbook logic: UG-07A-S12-A060 (FS, negative lag = own duration: drawdown complete when the excavation crew is free)
- UG-07-S01-A060: Notes: Front F4 / Line UG-07 / Package UG-07-S01 / Quantity 498 m3 / Workbook logic: UG-12-S06-A100 (FS, deeper first); UG-07A-S12-A060 (SS, shared trench)
- UG-07-S01-A070: Notes: Front F4 / Line UG-07 / Package UG-07-S01 / Quantity 20 m
- UG-07-S01-A080: Notes: Front F4 / Line UG-07 / Package UG-07-S01 / Quantity 20 m
- UG-07-S01-A090: Notes: Front F4 / Line UG-07 / Package UG-07-S01 / Quantity 20 m
- UG-07-S01-A100: Notes: Front F4 / Line UG-07 / Package UG-07-S01 / Quantity 399 m3 / Workbook logic: UG-07A-S05-A080 (FS, shared trench laid); UG-07A-S09-A080 (FS, shared trench laid); UG-07A-S12-A080 (FS, shared trench laid)
- UG-07-S01-A110: Notes: Front F4 / Line UG-07 / Package UG-07-S01 / Quantity 0 m wall

| ID | WBS | Activity | Type | Duration | Start | Finish | Predecessors | Free float | Constraint | Text1 | Text2 | Text3 | Text4 | Number1 |
| --- | --- | --- | --- | --- | --- | --- | --- | --- | --- | --- | --- | --- | --- | --- |
|  | UG-07A | **UG-07A** |  |  | 2026-12-01 | 2027-08-15 |  |  |  |  |  |  |  |  |
|  | UG-07A-S12 | **UG-07A-S12 / HDPE-UG07A-S12-CH050-CCT-(-4.74/-3.62)-32m / Run / Mixed: 30 m sheet piles** |  |  | 2026-12-01 | 2027-04-19 |  |  |  |  |  |  |  |  |
| UG-07A-S12-A010 |  | Release: drawings, holds, access and gates | milestone | 0d | 2026-12-01 | 2026-12-01 |  | 24d | start on or after 2026-12-01 | F4 | UG-07A | UG-07A-S12 | A010 |  |
| UG-07A-S12-A020 |  | Set-out, crossing survey and working platform |  | 1d | 2026-12-29 | 2026-12-29 | UG-07A-S12-A010, UG-07-S02-A030 SS | 5d |  | F4 | UG-07A | UG-07A-S12 | A020 | 32.069041 |
| UG-07A-S12-A030 |  | Pipe-support piling from platform (incl. integrity tests) |  | 5d | 2027-01-05 | 2027-01-10 | UG-07A-S12-A020 SS+1d, UG-07A-S12-A020 FF+2d, UG-07-S02-A030 | 0d |  | F4 | UG-07A | UG-07A-S12 | A030 | 24 |
| UG-07A-S12-A040 |  | Install sheet piles (shored lengths) |  | 3d | 2027-01-07 | 2027-01-10 | UG-07A-S12-A030 SS+2d, UG-07A-S12-A030 FF+2d, UG-07-S02-A040 | 21d |  | F4 | UG-07A | UG-07A-S12 | A040 | 59.8 |
| UG-07A-S12-A050 |  | Install dewatering and draw down |  | 8d | 2027-03-07 | 2027-03-15 | UG-07A-S12-A040 SS+2d, UG-07A-S12-A040 FF+2d, UG-07-S02-A060 FS-8d | 0d |  | F4 | UG-07A | UG-07A-S12 | A050 | 32.069041 |
| UG-07A-S12-A060 |  | Excavate and strut to formation |  | 2d | 2027-03-17 | 2027-03-18 | UG-07A-S12-A050 SS+9d, UG-07A-S12-A050 FF+2d, UG-12-S04-A100, UG-12-S05-A100, UG-12-S06-A100, UG-07-S02-A060 SS, UG-07-S02-A060 | 0d |  | F4 | UG-07A | UG-07A-S12 | A060 | 422.932968 |
| UG-07A-S12-A070 |  | Trim piles, blinding and piled slab (incl. cure) |  | 6d | 2027-03-22 | 2027-03-28 | UG-07A-S12-A060 SS+1d, UG-07A-S12-A060 FF+2d, UG-07-S02-A070 | 0d |  | F4 | UG-07A | UG-07A-S12 | A070 | 32.069041 |
| UG-07A-S12-A080 |  | Lay and joint pipe (incl. fittings, tie-in) |  | 3d | 2027-03-25 | 2027-03-28 | UG-07A-S12-A070 SS+3d, UG-07A-S12-A070 FF+2d, UG-07-S02-A080 | 0d |  | F4 | UG-07A | UG-07A-S12 | A080 | 32.069041 |
| UG-07A-S12-A090 |  | Surround, joint test and line test |  | 3d | 2027-03-27 | 2027-03-29 | UG-07A-S12-A080 SS+2d, UG-07A-S12-A080 FF+2d | 14d |  | F4 | UG-07A | UG-07A-S12 | A090 | 32.069041 |
| UG-07A-S12-A100 |  | Backfill to NG and remove struts |  | 2d | 2027-04-15 | 2027-04-17 | UG-07A-S12-A090 SS+2d, UG-07A-S12-A090 FF+2d, UG-07-S01-A080, UG-07-S02-A080, UG-07-S02-A100 | 0d |  | F4 | UG-07A | UG-07A-S12 | A100 | 350.995551 |
| UG-07A-S12-A110 |  | Dewatering off, extract sheets, reinstate |  | 3d | 2027-04-17 | 2027-04-19 | UG-07A-S12-A100 SS+1d, UG-07A-S12-A100 FF+2d |  |  | F4 | UG-07A | UG-07A-S12 | A110 | 59.8 |
|  | UG-07A-S09 | **UG-07A-S09 / HDPE-UG07A-S09-EL003-CCT-(-2.97/-2.98)-12m / Run / Open cut** |  |  | 2026-12-01 | 2027-04-22 |  |  |  |  |  |  |  |  |
| UG-07A-S09-A010 |  | Release: drawings, holds, access and gates | milestone | 0d | 2026-12-01 | 2026-12-01 |  | 35d | start on or after 2026-12-01 | F4 | UG-07A | UG-07A-S09 | A010 |  |
| UG-07A-S09-A020 |  | Set-out, crossing survey and working platform |  | 1d | 2027-01-11 | 2027-01-11 | UG-07A-S09-A010, UG-07-S01-A030 SS | 3d |  | F4 | UG-07A | UG-07A-S09 | A020 | 12.16564 |
| UG-07A-S09-A030 |  | Pipe-support piling from platform (incl. integrity tests) |  | 3d | 2027-01-16 | 2027-01-18 | UG-07A-S09-A020 SS+1d, UG-07A-S09-A020 FF+2d, UG-07-S01-A030 | 0d |  | F4 | UG-07A | UG-07A-S09 | A030 | 12 |
| UG-07A-S09-A050 |  | Install dewatering and draw down |  | 8d | 2027-03-13 | 2027-03-21 | UG-07-S01-A060 FS-8d, UG-07A-S09-A030 SS+2d, UG-07A-S09-A030 SF+4d, UG-07A-S09-A030 FF+2d | 0d |  | F4 | UG-07A | UG-07A-S09 | A050 | 12.16564 |
| UG-07A-S09-A060 |  | Excavate and strut to formation |  | 1d | 2027-03-23 | 2027-03-23 | UG-07A-S09-A050 SS+9d, UG-07A-S09-A050 FF+2d, UG-07-S01-A060 SS, UG-07-S02-A060 SS, UG-07-S01-A060 | 0d |  | F4 | UG-07A | UG-07A-S09 | A060 | 211.005226 |
| UG-07A-S09-A070 |  | Trim piles, blinding and piled slab (incl. cure) |  | 5d | 2027-04-04 | 2027-04-08 | UG-07A-S09-A060 SS+1d, UG-07A-S09-A060 FF+2d, UG-07-S01-A070 | 0d |  | F4 | UG-07A | UG-07A-S09 | A070 | 12.16564 |
| UG-07A-S09-A080 |  | Lay and joint pipe (incl. fittings, tie-in) |  | 1d | 2027-04-06 | 2027-04-06 | UG-07A-S09-A070 SS+2d, UG-07A-S09-A070 FF+2d, UG-07-S01-A080 | 0d |  | F4 | UG-07A | UG-07A-S09 | A080 | 12.16564 |
| UG-07A-S09-A090 |  | Surround, joint test and line test |  | 3d | 2027-04-07 | 2027-04-10 | UG-07A-S09-A080 SS+1d, UG-07A-S09-A080 FF+2d | 8d |  | F4 | UG-07A | UG-07A-S09 | A090 | 12.16564 |
| UG-07A-S09-A100 |  | Backfill to NG and remove struts |  | 1d | 2027-04-21 | 2027-04-21 | UG-07A-S09-A090 SS+2d, UG-07A-S09-A090 FF+2d, UG-07-S01-A080, UG-07-S02-A080, UG-07-S01-A100 | 0d |  | F4 | UG-07A | UG-07A-S09 | A100 | 183.49457 |
| UG-07A-S09-A110 |  | Dewatering off, extract sheets, reinstate |  | 1d | 2027-04-22 | 2027-04-22 | UG-07A-S09-A100 SS+1d, UG-07A-S09-A100 FF+2d |  |  | F4 | UG-07A | UG-07A-S09 | A110 | 0 |

Notes:
- UG-07A-S12-A010: Notes: Front F4 / Line UG-07A / Package UG-07A-S12 / Workbook logic: gates: START, D_DLU
- UG-07A-S12-A020: Notes: Front F4 / Line UG-07A / Package UG-07A-S12 / Quantity 32 m / Workbook logic: FS from A010; UG-07-S02-A030 (SS, set-out one package ahead of piling)
- UG-07A-S12-A030: Notes: Front F4 / Line UG-07A / Package UG-07A-S12 / Quantity 24 piles / Workbook logic: gate: D_PILEDES
- UG-07A-S12-A040: Notes: Front F4 / Line UG-07A / Package UG-07A-S12 / Quantity 60 m wall
- UG-07A-S12-A050: Notes: Front F4 / Line UG-07A / Package UG-07A-S12 / Quantity 32 m / Workbook logic: UG-07-S02-A060 (FS, negative lag = own duration: drawdown complete when the excavation crew is free)
- UG-07A-S12-A060: Notes: Front F4 / Line UG-07A / Package UG-07A-S12 / Quantity 423 m3 / Workbook logic: UG-12-S04-A100 (FS, deeper first); UG-12-S05-A100 (FS, deeper first); UG-12-S06-A100 (FS, deeper first); UG-07-S02-A060 (SS, shared trench)
- UG-07A-S12-A070: Notes: Front F4 / Line UG-07A / Package UG-07A-S12 / Quantity 32 m
- UG-07A-S12-A080: Notes: Front F4 / Line UG-07A / Package UG-07A-S12 / Quantity 32 m
- UG-07A-S12-A090: Notes: Front F4 / Line UG-07A / Package UG-07A-S12 / Quantity 32 m
- UG-07A-S12-A100: Notes: Front F4 / Line UG-07A / Package UG-07A-S12 / Quantity 351 m3 / Workbook logic: UG-07-S01-A080 (FS, shared trench laid); UG-07-S02-A080 (FS, shared trench laid)
- UG-07A-S12-A110: Notes: Front F4 / Line UG-07A / Package UG-07A-S12 / Quantity 60 m wall
- UG-07A-S09-A010: Notes: Front F4 / Line UG-07A / Package UG-07A-S09 / Workbook logic: gates: START, D_DLU
- UG-07A-S09-A020: Notes: Front F4 / Line UG-07A / Package UG-07A-S09 / Quantity 12 m / Workbook logic: FS from A010; UG-07-S01-A030 (SS, set-out one package ahead of piling)
- UG-07A-S09-A030: Notes: Front F4 / Line UG-07A / Package UG-07A-S09 / Quantity 12 piles / Workbook logic: gate: D_PILEDES
- UG-07A-S09-A050: Notes: Front F4 / Line UG-07A / Package UG-07A-S09 / Quantity 12 m / Workbook logic: UG-07-S01-A060 (FS, negative lag = own duration: drawdown complete when the excavation crew is free)
- UG-07A-S09-A060: Notes: Front F4 / Line UG-07A / Package UG-07A-S09 / Quantity 211 m3 / Workbook logic: UG-07-S01-A060 (SS, shared trench); UG-07-S02-A060 (SS, shared trench)
- UG-07A-S09-A070: Notes: Front F4 / Line UG-07A / Package UG-07A-S09 / Quantity 12 m
- UG-07A-S09-A080: Notes: Front F4 / Line UG-07A / Package UG-07A-S09 / Quantity 12 m
- UG-07A-S09-A090: Notes: Front F4 / Line UG-07A / Package UG-07A-S09 / Quantity 12 m
- UG-07A-S09-A100: Notes: Front F4 / Line UG-07A / Package UG-07A-S09 / Quantity 183 m3 / Workbook logic: UG-07-S01-A080 (FS, shared trench laid); UG-07-S02-A080 (FS, shared trench laid)
- UG-07A-S09-A110: Notes: Front F4 / Line UG-07A / Package UG-07A-S09 / Quantity 0 m wall

| ID | WBS | Activity | Type | Duration | Start | Finish | Predecessors | Free float | Constraint | Text1 | Text2 | Text3 | Text4 | Number1 |
| --- | --- | --- | --- | --- | --- | --- | --- | --- | --- | --- | --- | --- | --- | --- |
|  | UG-07A-S05 | **UG-07A-S05 / HDPE-UG07A-S05-CH222-CCT-(-2.73/-3.03)-23m / Run / Open cut** |  |  | 2026-12-01 | 2027-04-24 |  |  |  |  |  |  |  |  |
| UG-07A-S05-A010 |  | Release: drawings, holds, access and gates | milestone | 0d | 2026-12-01 | 2026-12-01 |  | 39d | start on or after 2026-12-01 | F4 | UG-07A | UG-07A-S05 | A010 |  |
| UG-07A-S05-A020 |  | Set-out, crossing survey and working platform |  | 1d | 2027-01-16 | 2027-01-16 | UG-07A-S05-A010, UG-07A-S09-A030 SS | 3d |  | F4 | UG-07A | UG-07A-S05 | A020 | 23.491331 |
| UG-07A-S05-A030 |  | Pipe-support piling from platform (incl. integrity tests) |  | 4d | 2027-01-20 | 2027-01-24 | UG-07A-S05-A020 SS+1d, UG-07A-S05-A020 FF+2d, UG-07A-S09-A030 | 0d |  | F4 | UG-07A | UG-07A-S05 | A030 | 18 |
| UG-07A-S05-A050 |  | Install dewatering and draw down |  | 8d | 2027-03-15 | 2027-03-23 | UG-07A-S09-A060 FS-8d, UG-07A-S05-A030 SS+2d, UG-07A-S05-A030 SF+4d, UG-07A-S05-A030 FF+2d | 0d |  | F4 | UG-07A | UG-07A-S05 | A050 | 23.491331 |
| UG-07A-S05-A060 |  | Excavate and strut to formation |  | 1d | 2027-03-25 | 2027-03-25 | UG-07A-S05-A050 SS+9d, UG-07A-S05-A050 FF+2d, UG-07-S01-A060 SS, UG-07A-S09-A060 | 0d |  | F4 | UG-07A | UG-07A-S05 | A060 | 397.787381 |
| UG-07A-S05-A070 |  | Trim piles, blinding and piled slab (incl. cure) |  | 5d | 2027-04-10 | 2027-04-14 | UG-07A-S05-A060 SS+1d, UG-07A-S05-A060 FF+2d, UG-07A-S09-A070 | 0d |  | F4 | UG-07A | UG-07A-S05 | A070 | 23.491331 |
| UG-07A-S05-A080 |  | Lay and joint pipe (incl. fittings, tie-in) |  | 2d | 2027-04-12 | 2027-04-13 | UG-07A-S05-A070 SS+2d, UG-07A-S05-A070 FF+2d, UG-07A-S09-A080 | 0d |  | F4 | UG-07A | UG-07A-S05 | A080 | 23.491331 |
| UG-07A-S05-A090 |  | Surround, joint test and line test |  | 3d | 2027-04-13 | 2027-04-15 | UG-07A-S05-A080 SS+1d, UG-07A-S05-A080 FF+2d | 5d |  | F4 | UG-07A | UG-07A-S05 | A090 | 23.491331 |
| UG-07A-S05-A100 |  | Backfill to NG and remove struts |  | 1d | 2027-04-24 | 2027-04-24 | UG-07A-S05-A090 SS+2d, UG-07A-S05-A090 FF+2d, UG-07-S01-A080, UG-07A-S09-A100 | 0d |  | F4 | UG-07A | UG-07A-S05 | A100 | 319.679153 |
| UG-07A-S05-A110 |  | Dewatering off, extract sheets, reinstate |  | 1d | 2027-04-24 | 2027-04-24 | UG-07A-S05-A100 SS+1d, UG-07A-S05-A100 FF+2d |  |  | F4 | UG-07A | UG-07A-S05 | A110 | 0 |
|  | UG-07A-S03 | **UG-07A-S03 / HDPE-UG07A-S03-TEE151-CH157-(-2.70/-2.70)-6m / Run / Open cut** |  |  | 2026-12-01 | 2027-04-26 |  |  |  |  |  |  |  |  |
| UG-07A-S03-A010 |  | Release: drawings, holds, access and gates | milestone | 0d | 2026-12-01 | 2026-12-01 |  | 43d | start on or after 2026-12-01 | F4 | UG-07A | UG-07A-S03 | A010 |  |
| UG-07A-S03-A020 |  | Set-out, crossing survey and working platform |  | 1d | 2027-01-20 | 2027-01-20 | UG-07A-S03-A010, UG-07A-S05-A030 SS | 3d |  | F4 | UG-07A | UG-07A-S03 | A020 | 6.126359 |
| UG-07A-S03-A030 |  | Pipe-support piling from platform (incl. integrity tests) |  | 2d | 2027-01-25 | 2027-01-26 | UG-07A-S03-A020 SS+1d, UG-07A-S03-A020 FF+2d, UG-07A-S05-A030 | 0d |  | F4 | UG-07A | UG-07A-S03 | A030 | 8 |
| UG-07A-S03-A050 |  | Install dewatering and draw down |  | 8d | 2027-03-17 | 2027-03-25 | UG-07A-S05-A060 FS-8d, UG-07A-S03-A030 SS+1d, UG-07A-S03-A030 SF+3d, UG-07A-S03-A030 FF+2d | 0d |  | F4 | UG-07A | UG-07A-S03 | A050 | 6.126359 |
| UG-07A-S03-A060 |  | Excavate and strut to formation |  | 1d | 2027-03-27 | 2027-03-27 | UG-07A-S03-A050 SS+9d, UG-07A-S03-A050 FF+2d, UG-07A-S05-A060 | 1d |  | F4 | UG-07A | UG-07A-S03 | A060 | 91.06972 |
| UG-07A-S03-A070 |  | Trim piles, blinding and piled slab (incl. cure) |  | 4d | 2027-04-17 | 2027-04-20 | UG-07A-S03-A060 SS+1d, UG-07A-S03-A060 FF+2d, UG-07A-S05-A070 | 0d |  | F4 | UG-07A | UG-07A-S03 | A070 | 6.126359 |
| UG-07A-S03-A080 |  | Lay and joint pipe (incl. fittings, tie-in) |  | 1d | 2027-04-18 | 2027-04-18 | UG-07A-S03-A070 SS+2d, UG-07A-S03-A070 FF+2d, UG-07A-S05-A080 | 0d |  | F4 | UG-07A | UG-07A-S03 | A080 | 6.126359 |
| UG-07A-S03-A090 |  | Surround, joint test and line test |  | 3d | 2027-04-19 | 2027-04-21 | UG-07A-S03-A080 SS+1d, UG-07A-S03-A080 FF+2d | 1d |  | F4 | UG-07A | UG-07A-S03 | A090 | 6.126359 |
| UG-07A-S03-A100 |  | Backfill to NG and remove struts |  | 1d | 2027-04-25 | 2027-04-25 | UG-07A-S03-A090 SS+2d, UG-07A-S03-A090 FF+2d, UG-07A-S05-A100 | 0d |  | F4 | UG-07A | UG-07A-S03 | A100 | 70.787652 |
| UG-07A-S03-A110 |  | Dewatering off, extract sheets, reinstate |  | 1d | 2027-04-26 | 2027-04-26 | UG-07A-S03-A100 SS+1d, UG-07A-S03-A100 FF+2d |  |  | F4 | UG-07A | UG-07A-S03 | A110 | 0 |
|  | UG-07A-S02 | **UG-07A-S02 / HDPE-UG07A-S02-EL019-TEE151-(-2.50/-2.70)-132m / Run / Mixed: 68 m sheet piles** |  |  | 2026-12-01 | 2027-05-09 |  |  |  |  |  |  |  |  |
| UG-07A-S02-A010 |  | Release: drawings, holds, access and gates | milestone | 0d | 2026-12-01 | 2026-12-01 |  | 47d | start on or after 2026-12-01 | F4 | UG-07A | UG-07A-S02 | A010 |  |
| UG-07A-S02-A020 |  | Set-out, crossing survey and working platform |  | 2d | 2027-01-25 | 2027-01-26 | UG-07A-S02-A010, UG-07A-S03-A030 SS | 2d |  | F4 | UG-07A | UG-07A-S02 | A020 | 132.376983 |
| UG-07A-S02-A030 |  | Pipe-support piling from platform (incl. integrity tests) |  | 19d | 2027-01-28 | 2027-02-18 | UG-07A-S02-A020 SS+1d, UG-07A-S02-A020 FF+2d, UG-07A-S03-A030 | 0d |  | F4 | UG-07A | UG-07A-S02 | A030 | 92 |
| UG-07A-S02-A040 |  | Install sheet piles (shored lengths) |  | 6d | 2027-02-04 | 2027-02-10 | UG-07A-S02-A030 SS+6d, UG-07A-S02-A030 FF+2d, UG-07A-S12-A040 | 15d |  | F4 | UG-07A | UG-07A-S02 | A040 | 135.567166 |
| UG-07A-S02-A050 |  | Install dewatering and draw down |  | 11d | 2027-03-16 | 2027-03-28 | UG-07A-S02-A040 SS+3d, UG-07A-S02-A040 FF+2d, UG-07A-S03-A060 FS-11d | 2d |  | F4 | UG-07A | UG-07A-S02 | A050 | 132.376983 |
| UG-07A-S02-A060 |  | Excavate and strut to formation |  | 4d | 2027-03-29 | 2027-04-01 | UG-07A-S02-A050 SS+9d, UG-07A-S02-A050 FF+2d, UG-07A-S03-A060 | 0d |  | F4 | UG-07A | UG-07A-S02 | A060 | 1182.871121 |
| UG-07A-S02-A070 |  | Trim piles, blinding and piled slab (incl. cure) |  | 15d | 2027-04-21 | 2027-05-08 | UG-07A-S02-A060 SS+2d, UG-07A-S02-A060 FF+2d, UG-07A-S03-A070 | 0d |  | F4 | UG-07A | UG-07A-S02 | A070 | 132.376983 |
| UG-07A-S02-A080 |  | Lay and joint pipe (incl. fittings, tie-in) |  | 9d | 2027-04-27 | 2027-05-06 | UG-07A-S02-A070 SS+5d, UG-07A-S02-A070 FF+2d, UG-07A-S03-A080 | 0d |  | F4 | UG-07A | UG-07A-S02 | A080 | 132.376983 |
| UG-07A-S02-A090 |  | Surround, joint test and line test |  | 3d | 2027-05-01 | 2027-05-03 | UG-07A-S02-A080 SS+3d, UG-07A-S02-A080 FF+2d | 0d |  | F4 | UG-07A | UG-07A-S02 | A090 | 132.376983 |
| UG-07A-S02-A100 |  | Backfill to NG and remove struts |  | 3d | 2027-05-03 | 2027-05-05 | UG-07A-S02-A090 SS+2d, UG-07A-S02-A090 FF+2d, UG-07A-S03-A100 | 0d |  | F4 | UG-07A | UG-07A-S02 | A100 | 877.387984 |
| UG-07A-S02-A110 |  | Dewatering off, extract sheets, reinstate |  | 4d | 2027-05-05 | 2027-05-09 | UG-07A-S02-A100 SS+2d, UG-07A-S02-A100 FF+2d |  |  | F4 | UG-07A | UG-07A-S02 | A110 | 135.567166 |

Notes:
- UG-07A-S05-A010: Notes: Front F4 / Line UG-07A / Package UG-07A-S05 / Workbook logic: gates: START, D_DLU
- UG-07A-S05-A020: Notes: Front F4 / Line UG-07A / Package UG-07A-S05 / Quantity 23 m / Workbook logic: FS from A010; UG-07A-S09-A030 (SS, set-out one package ahead of piling)
- UG-07A-S05-A030: Notes: Front F4 / Line UG-07A / Package UG-07A-S05 / Quantity 18 piles / Workbook logic: gate: D_PILEDES
- UG-07A-S05-A050: Notes: Front F4 / Line UG-07A / Package UG-07A-S05 / Quantity 23 m / Workbook logic: UG-07A-S09-A060 (FS, negative lag = own duration: drawdown complete when the excavation crew is free)
- UG-07A-S05-A060: Notes: Front F4 / Line UG-07A / Package UG-07A-S05 / Quantity 398 m3 / Workbook logic: UG-07-S01-A060 (SS, shared trench)
- UG-07A-S05-A070: Notes: Front F4 / Line UG-07A / Package UG-07A-S05 / Quantity 23 m
- UG-07A-S05-A080: Notes: Front F4 / Line UG-07A / Package UG-07A-S05 / Quantity 23 m
- UG-07A-S05-A090: Notes: Front F4 / Line UG-07A / Package UG-07A-S05 / Quantity 23 m
- UG-07A-S05-A100: Notes: Front F4 / Line UG-07A / Package UG-07A-S05 / Quantity 320 m3 / Workbook logic: UG-07-S01-A080 (FS, shared trench laid)
- UG-07A-S05-A110: Notes: Front F4 / Line UG-07A / Package UG-07A-S05 / Quantity 0 m wall
- UG-07A-S03-A010: Notes: Front F4 / Line UG-07A / Package UG-07A-S03 / Workbook logic: gates: START, D_DLU
- UG-07A-S03-A020: Notes: Front F4 / Line UG-07A / Package UG-07A-S03 / Quantity 6 m / Workbook logic: FS from A010; UG-07A-S05-A030 (SS, set-out one package ahead of piling)
- UG-07A-S03-A030: Notes: Front F4 / Line UG-07A / Package UG-07A-S03 / Quantity 8 piles / Workbook logic: gate: D_PILEDES
- UG-07A-S03-A050: Notes: Front F4 / Line UG-07A / Package UG-07A-S03 / Quantity 6 m / Workbook logic: UG-07A-S05-A060 (FS, negative lag = own duration: drawdown complete when the excavation crew is free)
- UG-07A-S03-A060: Notes: Front F4 / Line UG-07A / Package UG-07A-S03 / Quantity 91 m3
- UG-07A-S03-A070: Notes: Front F4 / Line UG-07A / Package UG-07A-S03 / Quantity 6 m
- UG-07A-S03-A080: Notes: Front F4 / Line UG-07A / Package UG-07A-S03 / Quantity 6 m
- UG-07A-S03-A090: Notes: Front F4 / Line UG-07A / Package UG-07A-S03 / Quantity 6 m
- UG-07A-S03-A100: Notes: Front F4 / Line UG-07A / Package UG-07A-S03 / Quantity 71 m3
- UG-07A-S03-A110: Notes: Front F4 / Line UG-07A / Package UG-07A-S03 / Quantity 0 m wall
- UG-07A-S02-A010: Notes: Front F4 / Line UG-07A / Package UG-07A-S02 / Workbook logic: gates: START, D_DLU
- UG-07A-S02-A020: Notes: Front F4 / Line UG-07A / Package UG-07A-S02 / Quantity 132 m / Workbook logic: FS from A010; UG-07A-S03-A030 (SS, set-out one package ahead of piling)
- UG-07A-S02-A030: Notes: Front F4 / Line UG-07A / Package UG-07A-S02 / Quantity 92 piles / Workbook logic: gate: D_PILEDES
- UG-07A-S02-A040: Notes: Front F4 / Line UG-07A / Package UG-07A-S02 / Quantity 136 m wall
- UG-07A-S02-A050: Notes: Front F4 / Line UG-07A / Package UG-07A-S02 / Quantity 132 m / Workbook logic: UG-07A-S03-A060 (FS, negative lag = own duration: drawdown complete when the excavation crew is free)
- UG-07A-S02-A060: Notes: Front F4 / Line UG-07A / Package UG-07A-S02 / Quantity 1,183 m3
- UG-07A-S02-A070: Notes: Front F4 / Line UG-07A / Package UG-07A-S02 / Quantity 132 m
- UG-07A-S02-A080: Notes: Front F4 / Line UG-07A / Package UG-07A-S02 / Quantity 132 m
- UG-07A-S02-A090: Notes: Front F4 / Line UG-07A / Package UG-07A-S02 / Quantity 132 m
- UG-07A-S02-A100: Notes: Front F4 / Line UG-07A / Package UG-07A-S02 / Quantity 877 m3
- UG-07A-S02-A110: Notes: Front F4 / Line UG-07A / Package UG-07A-S02 / Quantity 136 m wall

| ID | WBS | Activity | Type | Duration | Start | Finish | Predecessors | Free float | Constraint | Text1 | Text2 | Text3 | Text4 | Number1 |
| --- | --- | --- | --- | --- | --- | --- | --- | --- | --- | --- | --- | --- | --- | --- |
|  | UG-07A-S01 | **UG-07A-S01 / HDPE-UG07A-S01-FSTE-EL019-(-2.50/-2.50)-19m / Tie-in / Open cut** |  |  | 2026-12-01 | 2027-05-16 |  |  |  |  |  |  |  |  |
| UG-07A-S01-A010 |  | Release: drawings, holds, access and gates | milestone | 0d | 2026-12-01 | 2026-12-01 |  | 50d | start on or after 2026-12-01 | F4 | UG-07A | UG-07A-S01 | A010 |  |
| UG-07A-S01-A020 |  | Set-out, crossing survey and working platform |  | 1d | 2027-01-28 | 2027-01-28 | UG-07A-S01-A010, UG-07A-S02-A030 SS | 0d |  | F4 | UG-07A | UG-07A-S01 | A020 | 18.696658 |
| UG-07A-S01-A030 |  | Pipe-support piling from platform (incl. integrity tests) |  | 4d | 2027-01-30 | 2027-02-02 | UG-07A-S01-A020 SS+1d, UG-07A-S01-A020 FF+2d | 0d |  | F4 | UG-07A | UG-07A-S01 | A030 | 16 |
| UG-07A-S01-A050 |  | Install dewatering and draw down |  | 8d | 2027-01-31 | 2027-02-08 | UG-07A-S01-A030 SS+2d, UG-07A-S01-A030 SF+4d, UG-07A-S01-A030 FF+2d | 0d |  | F4 | UG-07A | UG-07A-S01 | A050 | 18.696658 |
| UG-07A-S01-A060 |  | Excavate and strut to formation |  | 1d | 2027-02-10 | 2027-02-10 | UG-07A-S01-A050 SS+9d, UG-07A-S01-A050 FF+2d | 0d |  | F4 | UG-07A | UG-07A-S01 | A060 | 222.859346 |
| UG-07A-S01-A070 |  | Trim piles, blinding and piled slab (incl. cure) |  | 5d | 2027-02-11 | 2027-02-16 | UG-07A-S01-A060 SS+1d, UG-07A-S01-A060 FF+2d | 74d |  | F4 | UG-07A | UG-07A-S01 | A070 | 18.696658 |
| UG-07A-S01-A080 |  | Lay and joint pipe (incl. fittings, tie-in) |  | 5d | 2027-05-11 | 2027-05-16 | UG-07A-S01-A070 SS+2d, UG-07A-S01-A070 FF+2d, UG-07A-S02-A080 | 0d |  | F4 | UG-07A | UG-07A-S01 | A080 | 18.696658 |
| UG-07A-S01-A090 |  | Surround, joint test and line test |  | 3d | 2027-05-13 | 2027-05-16 | UG-07A-S01-A080 SS+2d, UG-07A-S01-A080 FF+2d | 0d |  | F4 | UG-07A | UG-07A-S01 | A090 | 18.696658 |
| UG-07A-S01-A100 |  | Backfill to NG and remove struts |  | 1d | 2027-05-15 | 2027-05-15 | UG-07A-S01-A090 SS+2d, UG-07A-S01-A090 FF+2d | 0d |  | F4 | UG-07A | UG-07A-S01 | A100 | 181.148084 |
| UG-07A-S01-A110 |  | Dewatering off, extract sheets, reinstate |  | 1d | 2027-05-16 | 2027-05-16 | UG-07A-S01-A100 SS+1d, UG-07A-S01-A100 FF+2d |  |  | F4 | UG-07A | UG-07A-S01 | A110 | 0 |
|  | UG-07A-S07 | **UG-07A-S07 / HDPE-UG07A-S07-EL005-TEE-(-2.50/-2.50)-23m / Run / Open cut** |  |  | 2026-12-01 | 2027-05-16 |  |  |  |  |  |  |  |  |
| UG-07A-S07-A010 |  | Release: drawings, holds, access and gates | milestone | 0d | 2026-12-01 | 2026-12-01 |  | 50d | start on or after 2026-12-01 | F4 | UG-07A | UG-07A-S07 | A010 |  |
| UG-07A-S07-A020 |  | Set-out, crossing survey and working platform |  | 1d | 2027-01-28 | 2027-01-28 | UG-07A-S07-A010, UG-07A-S02-A030 SS | 18d |  | F4 | UG-07A | UG-07A-S07 | A020 | 22.509218 |
| UG-07A-S07-A030 |  | Pipe-support piling from platform (incl. integrity tests) |  | 4d | 2027-02-20 | 2027-02-23 | UG-07A-S07-A020 SS+1d, UG-07A-S07-A020 FF+2d, UG-07A-S02-A030 | 0d |  | F4 | UG-07A | UG-07A-S07 | A030 | 18 |
| UG-07A-S07-A050 |  | Install dewatering and draw down |  | 8d | 2027-03-24 | 2027-04-01 | UG-07A-S02-A060 FS-8d, UG-07A-S07-A030 SS+2d, UG-07A-S07-A030 SF+4d, UG-07A-S07-A030 FF+2d | 0d |  | F4 | UG-07A | UG-07A-S07 | A050 | 22.509218 |
| UG-07A-S07-A060 |  | Excavate and strut to formation |  | 1d | 2027-04-03 | 2027-04-03 | UG-07A-S07-A050 SS+9d, UG-07A-S07-A050 FF+2d, UG-07A-S02-A060 | 1d |  | F4 | UG-07A | UG-07A-S07 | A060 | 268.298675 |
| UG-07A-S07-A070 |  | Trim piles, blinding and piled slab (incl. cure) |  | 5d | 2027-05-09 | 2027-05-13 | UG-07A-S07-A060 SS+1d, UG-07A-S07-A060 FF+2d, UG-07A-S02-A070 | 0d |  | F4 | UG-07A | UG-07A-S07 | A070 | 22.509218 |
| UG-07A-S07-A080 |  | Lay and joint pipe (incl. fittings, tie-in) |  | 2d | 2027-05-11 | 2027-05-12 | UG-07A-S07-A070 SS+2d, UG-07A-S07-A070 FF+2d, UG-07A-S02-A080 | 0d |  | F4 | UG-07A | UG-07A-S07 | A080 | 22.509218 |
| UG-07A-S07-A090 |  | Surround, joint test and line test |  | 3d | 2027-05-12 | 2027-05-15 | UG-07A-S07-A080 SS+1d, UG-07A-S07-A080 FF+2d | 0d |  | F4 | UG-07A | UG-07A-S07 | A090 | 22.509218 |
| UG-07A-S07-A100 |  | Backfill to NG and remove struts |  | 1d | 2027-05-15 | 2027-05-15 | UG-07A-S07-A090 SS+2d, UG-07A-S07-A090 FF+2d, UG-07A-S02-A100 | 0d |  | F4 | UG-07A | UG-07A-S07 | A100 | 218.081296 |
| UG-07A-S07-A110 |  | Dewatering off, extract sheets, reinstate |  | 1d | 2027-05-16 | 2027-05-16 | UG-07A-S07-A100 SS+1d, UG-07A-S07-A100 FF+2d |  |  | F4 | UG-07A | UG-07A-S07 | A110 | 0 |
|  | UG-07A-S08 | **UG-07A-S08 / HDPE-UG07A-S08-FSTH-EL003-(-2.97/-2.97)-3m / Tie-in / Open cut** |  |  | 2026-12-01 | 2027-04-17 |  |  |  |  |  |  |  |  |
| UG-07A-S08-A010 |  | Release: drawings, holds, access and gates | milestone | 0d | 2026-12-01 | 2026-12-01 |  | 39d | start on or after 2026-12-01 | F4 | UG-07A | UG-07A-S08 | A010 |  |
| UG-07A-S08-A020 |  | Set-out, crossing survey and working platform |  | 1d | 2027-01-16 | 2027-01-16 | UG-07A-S08-A010, UG-07A-S09-A030 SS | 0d |  | F4 | UG-07A | UG-07A-S08 | A020 | 2.932399 |
| UG-07A-S08-A030 |  | Pipe-support piling from platform (incl. integrity tests) |  | 1d | 2027-01-17 | 2027-01-17 | UG-07A-S08-A020 SS+1d, UG-07A-S08-A020 FF+2d | 0d |  | F4 | UG-07A | UG-07A-S08 | A030 | 4 |
| UG-07A-S08-A050 |  | Install dewatering and draw down |  | 8d | 2027-01-18 | 2027-01-26 | UG-07A-S08-A030 SS+1d, UG-07A-S08-A030 SF+3d, UG-07A-S08-A030 FF+2d | 0d |  | F4 | UG-07A | UG-07A-S08 | A050 | 2.932399 |
| UG-07A-S08-A060 |  | Excavate and strut to formation |  | 1d | 2027-01-28 | 2027-01-28 | UG-07A-S08-A050 SS+9d, UG-07A-S08-A050 FF+2d | 0d |  | F4 | UG-07A | UG-07A-S08 | A060 | 50.548207 |
| UG-07A-S08-A070 |  | Trim piles, blinding and piled slab (incl. cure) |  | 4d | 2027-01-30 | 2027-02-02 | UG-07A-S08-A060 SS+1d, UG-07A-S08-A060 FF+2d | 60d |  | F4 | UG-07A | UG-07A-S08 | A070 | 2.932399 |
| UG-07A-S08-A080 |  | Lay and joint pipe (incl. fittings, tie-in) |  | 5d | 2027-04-12 | 2027-04-17 | UG-07A-S08-A070 SS+2d, UG-07A-S08-A070 FF+2d, UG-07A-S09-A080 | 0d |  | F4 | UG-07A | UG-07A-S08 | A080 | 2.932399 |
| UG-07A-S08-A090 |  | Surround, joint test and line test |  | 3d | 2027-04-14 | 2027-04-17 | UG-07A-S08-A080 SS+2d, UG-07A-S08-A080 FF+2d | 0d |  | F4 | UG-07A | UG-07A-S08 | A090 | 2.932399 |
| UG-07A-S08-A100 |  | Backfill to NG and remove struts |  | 1d | 2027-04-17 | 2027-04-17 | UG-07A-S08-A090 SS+2d, UG-07A-S08-A090 FF+2d | 0d |  | F4 | UG-07A | UG-07A-S08 | A100 | 44.00615 |
| UG-07A-S08-A110 |  | Dewatering off, extract sheets, reinstate |  | 1d | 2027-04-17 | 2027-04-17 | UG-07A-S08-A100 SS+1d, UG-07A-S08-A100 FF+2d |  |  | F4 | UG-07A | UG-07A-S08 | A110 | 0 |

Notes:
- UG-07A-S01-A010: Notes: Front F4 / Line UG-07A / Package UG-07A-S01 / Workbook logic: gates: START, D_DLU, structure ready
- UG-07A-S01-A020: Notes: Front F4 / Line UG-07A / Package UG-07A-S01 / Quantity 19 m / Workbook logic: FS from A010; UG-07A-S02-A030 (SS, tie-in team follows the adjacent run)
- UG-07A-S01-A030: Notes: Front F4 / Line UG-07A / Package UG-07A-S01 / Quantity 16 piles / Workbook logic: gate: D_PILEDES
- UG-07A-S01-A050: Notes: Front F4 / Line UG-07A / Package UG-07A-S01 / Quantity 19 m
- UG-07A-S01-A060: Notes: Front F4 / Line UG-07A / Package UG-07A-S01 / Quantity 223 m3
- UG-07A-S01-A070: Notes: Front F4 / Line UG-07A / Package UG-07A-S01 / Quantity 19 m
- UG-07A-S01-A080: Notes: Front F4 / Line UG-07A / Package UG-07A-S01 / Quantity 19 m / Workbook logic: UG-07A-S02-A080 (FS, closure)
- UG-07A-S01-A090: Notes: Front F4 / Line UG-07A / Package UG-07A-S01 / Quantity 19 m
- UG-07A-S01-A100: Notes: Front F4 / Line UG-07A / Package UG-07A-S01 / Quantity 181 m3
- UG-07A-S01-A110: Notes: Front F4 / Line UG-07A / Package UG-07A-S01 / Quantity 0 m wall
- UG-07A-S07-A010: Notes: Front F4 / Line UG-07A / Package UG-07A-S07 / Workbook logic: gates: START, D_DLU
- UG-07A-S07-A020: Notes: Front F4 / Line UG-07A / Package UG-07A-S07 / Quantity 23 m / Workbook logic: FS from A010; UG-07A-S02-A030 (SS, set-out one package ahead of piling)
- UG-07A-S07-A030: Notes: Front F4 / Line UG-07A / Package UG-07A-S07 / Quantity 18 piles / Workbook logic: gate: D_PILEDES
- UG-07A-S07-A050: Notes: Front F4 / Line UG-07A / Package UG-07A-S07 / Quantity 23 m / Workbook logic: UG-07A-S02-A060 (FS, negative lag = own duration: drawdown complete when the excavation crew is free)
- UG-07A-S07-A060: Notes: Front F4 / Line UG-07A / Package UG-07A-S07 / Quantity 268 m3
- UG-07A-S07-A070: Notes: Front F4 / Line UG-07A / Package UG-07A-S07 / Quantity 23 m
- UG-07A-S07-A080: Notes: Front F4 / Line UG-07A / Package UG-07A-S07 / Quantity 23 m
- UG-07A-S07-A090: Notes: Front F4 / Line UG-07A / Package UG-07A-S07 / Quantity 23 m
- UG-07A-S07-A100: Notes: Front F4 / Line UG-07A / Package UG-07A-S07 / Quantity 218 m3
- UG-07A-S07-A110: Notes: Front F4 / Line UG-07A / Package UG-07A-S07 / Quantity 0 m wall
- UG-07A-S08-A010: Notes: Front F4 / Line UG-07A / Package UG-07A-S08 / Workbook logic: gates: START, D_DLU, structure ready
- UG-07A-S08-A020: Notes: Front F4 / Line UG-07A / Package UG-07A-S08 / Quantity 3 m / Workbook logic: FS from A010; UG-07A-S09-A030 (SS, tie-in team follows the adjacent run)
- UG-07A-S08-A030: Notes: Front F4 / Line UG-07A / Package UG-07A-S08 / Quantity 4 piles / Workbook logic: gate: D_PILEDES
- UG-07A-S08-A050: Notes: Front F4 / Line UG-07A / Package UG-07A-S08 / Quantity 3 m
- UG-07A-S08-A060: Notes: Front F4 / Line UG-07A / Package UG-07A-S08 / Quantity 51 m3
- UG-07A-S08-A070: Notes: Front F4 / Line UG-07A / Package UG-07A-S08 / Quantity 3 m
- UG-07A-S08-A080: Notes: Front F4 / Line UG-07A / Package UG-07A-S08 / Quantity 3 m / Workbook logic: UG-07A-S09-A080 (FS, closure)
- UG-07A-S08-A090: Notes: Front F4 / Line UG-07A / Package UG-07A-S08 / Quantity 3 m
- UG-07A-S08-A100: Notes: Front F4 / Line UG-07A / Package UG-07A-S08 / Quantity 44 m3
- UG-07A-S08-A110: Notes: Front F4 / Line UG-07A / Package UG-07A-S08 / Quantity 0 m wall

| ID | WBS | Activity | Type | Duration | Start | Finish | Predecessors | Free float | Constraint | Text1 | Text2 | Text3 | Text4 | Number1 |
| --- | --- | --- | --- | --- | --- | --- | --- | --- | --- | --- | --- | --- | --- | --- |
|  | UG-07A-S10 | **UG-07A-S10 / HDPE-UG07A-S10-FSTF-EL009-(-2.70/-2.89)-9m / Tie-in / Open cut** |  |  | 2026-12-01 | 2027-04-08 |  |  |  |  |  |  |  |  |
| UG-07A-S10-A010 |  | Release: drawings, holds, access and gates | milestone | 0d | 2026-12-01 | 2026-12-01 |  | 45d | start on or after 2026-12-01 | F4 | UG-07A | UG-07A-S10 | A010 |  |
| UG-07A-S10-A020 |  | Set-out, crossing survey and working platform |  | 1d | 2027-01-23 | 2027-01-23 | UG-07A-S10-A010, UG-07A-S11-A030 SS | 0d |  | F4 | UG-07A | UG-07A-S10 | A020 | 9.299928 |
| UG-07A-S10-A030 |  | Pipe-support piling from platform (incl. integrity tests) |  | 2d | 2027-01-23 | 2027-01-24 | UG-07A-S10-A020 SS+1d, UG-07A-S10-A020 FF+2d | 0d |  | F4 | UG-07A | UG-07A-S10 | A030 | 10 |
| UG-07A-S10-A050 |  | Install dewatering and draw down |  | 8d | 2027-01-24 | 2027-02-01 | UG-07A-S10-A030 SS+1d, UG-07A-S10-A030 SF+3d, UG-07A-S10-A030 FF+2d | 48d |  | F4 | UG-07A | UG-07A-S10 | A050 | 9.299928 |
| UG-07A-S10-A060 |  | Excavate and strut to formation |  | 1d | 2027-03-31 | 2027-03-31 | UG-07A-S10-A050 SS+9d, UG-07A-S10-A050 FF+2d, UG-12-S04-A100, UG-13B-S06-A100, UG-13B-S07-A100 | 0d |  | F4 | UG-07A | UG-07A-S10 | A060 | 131.478227 |
| UG-07A-S10-A070 |  | Trim piles, blinding and piled slab (incl. cure) |  | 4d | 2027-04-01 | 2027-04-05 | UG-07A-S10-A060 SS+1d, UG-07A-S10-A060 FF+2d | 0d |  | F4 | UG-07A | UG-07A-S10 | A070 | 9.299928 |
| UG-07A-S10-A080 |  | Lay and joint pipe (incl. fittings, tie-in) |  | 4d | 2027-04-03 | 2027-04-06 | UG-07A-S10-A070 SS+2d, UG-07A-S10-A070 FF+2d, UG-07A-S11-A080 | 0d |  | F4 | UG-07A | UG-07A-S10 | A080 | 9.299928 |
| UG-07A-S10-A090 |  | Surround, joint test and line test |  | 3d | 2027-04-05 | 2027-04-07 | UG-07A-S10-A080 SS+2d, UG-07A-S10-A080 FF+2d | 0d |  | F4 | UG-07A | UG-07A-S10 | A090 | 9.299928 |
| UG-07A-S10-A100 |  | Backfill to NG and remove struts |  | 1d | 2027-04-07 | 2027-04-07 | UG-07A-S10-A090 SS+2d, UG-07A-S10-A090 FF+2d | 0d |  | F4 | UG-07A | UG-07A-S10 | A100 | 110.730483 |
| UG-07A-S10-A110 |  | Dewatering off, extract sheets, reinstate |  | 1d | 2027-04-08 | 2027-04-08 | UG-07A-S10-A100 SS+1d, UG-07A-S10-A100 FF+2d |  |  | F4 | UG-07A | UG-07A-S10 | A110 | 0 |
|  | UG-07A-S06 | **UG-07A-S06 / HDPE-UG07A-S06-FSTG-EL005-(-2.50/-2.50)-5m / Tie-in / Open cut** |  |  | 2026-12-01 | 2027-07-31 |  |  |  |  |  |  |  |  |
| UG-07A-S06-A010 |  | Release: drawings, holds, access and gates | milestone | 0d | 2026-12-01 | 2026-12-01 |  | 69d | start on or after 2026-12-01 | F4 | UG-07A | UG-07A-S06 | A010 |  |
| UG-07A-S06-A020 |  | Set-out, crossing survey and working platform |  | 1d | 2027-02-20 | 2027-02-20 | UG-07A-S06-A010, UG-07A-S07-A030 SS | 0d |  | F4 | UG-07A | UG-07A-S06 | A020 | 5.357754 |
| UG-07A-S06-A030 |  | Pipe-support piling from platform (incl. integrity tests) |  | 2d | 2027-02-21 | 2027-02-22 | UG-07A-S06-A020 SS+1d, UG-07A-S06-A020 FF+2d | 0d |  | F4 | UG-07A | UG-07A-S06 | A030 | 6 |
| UG-07A-S06-A050 |  | Install dewatering and draw down |  | 8d | 2027-02-22 | 2027-03-02 | UG-07A-S06-A030 SS+1d, UG-07A-S06-A030 SF+3d, UG-07A-S06-A030 FF+2d | 121d |  | F4 | UG-07A | UG-07A-S06 | A050 | 5.357754 |
| UG-07A-S06-A060 |  | Excavate and strut to formation |  | 1d | 2027-07-24 | 2027-07-24 | UG-07A-S06-A050 SS+9d, UG-07A-S06-A050 FF+2d, UG-11A-S02-A100 | 0d |  | F4 | UG-07A | UG-07A-S06 | A060 | 63.864467 |
| UG-07A-S06-A070 |  | Trim piles, blinding and piled slab (incl. cure) |  | 4d | 2027-07-24 | 2027-07-27 | UG-07A-S06-A060 SS+1d, UG-07A-S06-A060 FF+2d | 0d |  | F4 | UG-07A | UG-07A-S06 | A070 | 5.357754 |
| UG-07A-S06-A080 |  | Lay and joint pipe (incl. fittings, tie-in) |  | 5d | 2027-07-26 | 2027-07-31 | UG-07A-S06-A070 SS+2d, UG-07A-S06-A070 FF+2d, UG-07A-S07-A080 | 0d |  | F4 | UG-07A | UG-07A-S06 | A080 | 5.357754 |
| UG-07A-S06-A090 |  | Surround, joint test and line test |  | 3d | 2027-07-28 | 2027-07-31 | UG-07A-S06-A080 SS+2d, UG-07A-S06-A080 FF+2d | 0d |  | F4 | UG-07A | UG-07A-S06 | A090 | 5.357754 |
| UG-07A-S06-A100 |  | Backfill to NG and remove struts |  | 1d | 2027-07-31 | 2027-07-31 | UG-07A-S06-A090 SS+2d, UG-07A-S06-A090 FF+2d | 0d |  | F4 | UG-07A | UG-07A-S06 | A100 | 51.911447 |
| UG-07A-S06-A110 |  | Dewatering off, extract sheets, reinstate |  | 1d | 2027-07-31 | 2027-07-31 | UG-07A-S06-A100 SS+1d, UG-07A-S06-A100 FF+2d |  |  | F4 | UG-07A | UG-07A-S06 | A110 | 0 |
|  | UG-07A-S04 | **UG-07A-S04 / HDPE-UG07A-S04-CH157-CH222-(-2.70/-2.73)-65m / Run / Mixed: 30 m sheet piles** |  |  | 2026-12-01 | 2027-08-15 |  |  |  |  |  |  |  |  |
| UG-07A-S04-A010 |  | Release: drawings, holds, access and gates | milestone | 0d | 2026-12-01 | 2026-12-01 |  | 69d | start on or after 2026-12-01 | F4 | UG-07A | UG-07A-S04 | A010 |  |
| UG-07A-S04-A020 |  | Set-out, crossing survey and working platform |  | 1d | 2027-02-20 | 2027-02-20 | UG-07A-S04-A010, UG-07A-S07-A030 SS | 4d |  | F4 | UG-07A | UG-07A-S04 | A020 | 65.1 |
| UG-07A-S04-A030 |  | Pipe-support piling from platform (incl. integrity tests) |  | 10d | 2027-02-25 | 2027-03-08 | UG-07A-S04-A020 SS+1d, UG-07A-S04-A020 FF+2d, UG-07A-S07-A030 | 0d |  | F4 | UG-07A | UG-07A-S04 | A030 | 46 |
| UG-07A-S04-A040 |  | Install sheet piles (shored lengths) |  | 3d | 2027-03-01 | 2027-03-03 | UG-07A-S04-A030 SS+3d, UG-07A-S04-A030 FF+2d, UG-07A-S02-A040 | 19d |  | F4 | UG-07A | UG-07A-S04 | A040 | 60 |
| UG-07A-S04-A050 |  | Install dewatering and draw down |  | 9d | 2027-03-25 | 2027-04-04 | UG-07A-S04-A040 SS+2d, UG-07A-S04-A040 FF+2d, UG-07A-S07-A060 FS-9d | 101d |  | F4 | UG-07A | UG-07A-S04 | A050 | 65.1 |
| UG-07A-S04-A060 |  | Excavate and strut to formation |  | 3d | 2027-08-01 | 2027-08-03 | UG-07A-S04-A050 SS+9d, UG-07A-S04-A050 FF+2d, UG-11A-S03-A100, UG-11A-S04-A100, UG-11A-S05-A100, UG-11A-S07-A100, UG-07A-S07-A060 | 0d |  | F4 | UG-07A | UG-07A-S04 | A060 | 735.596043 |
| UG-07A-S04-A070 |  | Trim piles, blinding and piled slab (incl. cure) |  | 9d | 2027-08-03 | 2027-08-12 | UG-07A-S04-A060 SS+2d, UG-07A-S04-A060 FF+2d, UG-07A-S07-A070 | 0d |  | F4 | UG-07A | UG-07A-S04 | A070 | 65.1 |
| UG-07A-S04-A080 |  | Lay and joint pipe (incl. fittings, tie-in) |  | 4d | 2027-08-07 | 2027-08-10 | UG-07A-S04-A070 SS+3d, UG-07A-S04-A070 FF+2d, UG-07A-S07-A080 | 0d |  | F4 | UG-07A | UG-07A-S04 | A080 | 65.1 |
| UG-07A-S04-A090 |  | Surround, joint test and line test |  | 3d | 2027-08-09 | 2027-08-11 | UG-07A-S04-A080 SS+2d, UG-07A-S04-A080 FF+2d | 0d |  | F4 | UG-07A | UG-07A-S04 | A090 | 65.1 |
| UG-07A-S04-A100 |  | Backfill to NG and remove struts |  | 2d | 2027-08-11 | 2027-08-12 | UG-07A-S04-A090 SS+2d, UG-07A-S04-A090 FF+2d, UG-07A-S07-A100 | 0d |  | F4 | UG-07A | UG-07A-S04 | A100 | 520.07485 |
| UG-07A-S04-A110 |  | Dewatering off, extract sheets, reinstate |  | 3d | 2027-08-12 | 2027-08-15 | UG-07A-S04-A100 SS+1d, UG-07A-S04-A100 FF+2d |  |  | F4 | UG-07A | UG-07A-S04 | A110 | 60 |

Notes:
- UG-07A-S10-A010: Notes: Front F4 / Line UG-07A / Package UG-07A-S10 / Workbook logic: gates: START, D_DLU, structure ready
- UG-07A-S10-A020: Notes: Front F4 / Line UG-07A / Package UG-07A-S10 / Quantity 9 m / Workbook logic: FS from A010; UG-07A-S11-A030 (SS, tie-in team follows the adjacent run)
- UG-07A-S10-A030: Notes: Front F4 / Line UG-07A / Package UG-07A-S10 / Quantity 10 piles / Workbook logic: gate: D_PILEDES
- UG-07A-S10-A050: Notes: Front F4 / Line UG-07A / Package UG-07A-S10 / Quantity 9 m
- UG-07A-S10-A060: Notes: Front F4 / Line UG-07A / Package UG-07A-S10 / Quantity 131 m3 / Workbook logic: UG-12-S04-A100 (FS, deeper first); UG-13B-S06-A100 (FS, deeper first); UG-13B-S07-A100 (FS, deeper first)
- UG-07A-S10-A070: Notes: Front F4 / Line UG-07A / Package UG-07A-S10 / Quantity 9 m
- UG-07A-S10-A080: Notes: Front F4 / Line UG-07A / Package UG-07A-S10 / Quantity 9 m / Workbook logic: UG-07A-S11-A080 (FS, closure)
- UG-07A-S10-A090: Notes: Front F4 / Line UG-07A / Package UG-07A-S10 / Quantity 9 m
- UG-07A-S10-A100: Notes: Front F4 / Line UG-07A / Package UG-07A-S10 / Quantity 111 m3
- UG-07A-S10-A110: Notes: Front F4 / Line UG-07A / Package UG-07A-S10 / Quantity 0 m wall
- UG-07A-S06-A010: Notes: Front F4 / Line UG-07A / Package UG-07A-S06 / Workbook logic: gates: START, D_DLU, structure ready
- UG-07A-S06-A020: Notes: Front F4 / Line UG-07A / Package UG-07A-S06 / Quantity 5 m / Workbook logic: FS from A010; UG-07A-S07-A030 (SS, tie-in team follows the adjacent run)
- UG-07A-S06-A030: Notes: Front F4 / Line UG-07A / Package UG-07A-S06 / Quantity 6 piles / Workbook logic: gate: D_PILEDES
- UG-07A-S06-A050: Notes: Front F4 / Line UG-07A / Package UG-07A-S06 / Quantity 5 m
- UG-07A-S06-A060: Notes: Front F4 / Line UG-07A / Package UG-07A-S06 / Quantity 64 m3 / Workbook logic: UG-11A-S02-A100 (FS, deeper first)
- UG-07A-S06-A070: Notes: Front F4 / Line UG-07A / Package UG-07A-S06 / Quantity 5 m
- UG-07A-S06-A080: Notes: Front F4 / Line UG-07A / Package UG-07A-S06 / Quantity 5 m / Workbook logic: UG-07A-S07-A080 (FS, closure)
- UG-07A-S06-A090: Notes: Front F4 / Line UG-07A / Package UG-07A-S06 / Quantity 5 m
- UG-07A-S06-A100: Notes: Front F4 / Line UG-07A / Package UG-07A-S06 / Quantity 52 m3
- UG-07A-S06-A110: Notes: Front F4 / Line UG-07A / Package UG-07A-S06 / Quantity 0 m wall
- UG-07A-S04-A010: Notes: Front F4 / Line UG-07A / Package UG-07A-S04 / Workbook logic: gates: START, D_DLU
- UG-07A-S04-A020: Notes: Front F4 / Line UG-07A / Package UG-07A-S04 / Quantity 65 m / Workbook logic: FS from A010; UG-07A-S07-A030 (SS, set-out one package ahead of piling)
- UG-07A-S04-A030: Notes: Front F4 / Line UG-07A / Package UG-07A-S04 / Quantity 46 piles / Workbook logic: gate: D_PILEDES
- UG-07A-S04-A040: Notes: Front F4 / Line UG-07A / Package UG-07A-S04 / Quantity 60 m wall
- UG-07A-S04-A050: Notes: Front F4 / Line UG-07A / Package UG-07A-S04 / Quantity 65 m / Workbook logic: UG-07A-S07-A060 (FS, negative lag = own duration: drawdown complete when the excavation crew is free)
- UG-07A-S04-A060: Notes: Front F4 / Line UG-07A / Package UG-07A-S04 / Quantity 736 m3 / Workbook logic: UG-11A-S03-A100 (FS, deeper first); UG-11A-S04-A100 (FS, deeper first); UG-11A-S05-A100 (FS, deeper first); UG-11A-S07-A100 (FS, deeper first)
- UG-07A-S04-A070: Notes: Front F4 / Line UG-07A / Package UG-07A-S04 / Quantity 65 m
- UG-07A-S04-A080: Notes: Front F4 / Line UG-07A / Package UG-07A-S04 / Quantity 65 m
- UG-07A-S04-A090: Notes: Front F4 / Line UG-07A / Package UG-07A-S04 / Quantity 65 m
- UG-07A-S04-A100: Notes: Front F4 / Line UG-07A / Package UG-07A-S04 / Quantity 520 m3
- UG-07A-S04-A110: Notes: Front F4 / Line UG-07A / Package UG-07A-S04 / Quantity 60 m wall

| ID | WBS | Activity | Type | Duration | Start | Finish | Predecessors | Free float | Constraint | Text1 | Text2 | Text3 | Text4 | Number1 |
| --- | --- | --- | --- | --- | --- | --- | --- | --- | --- | --- | --- | --- | --- | --- |
|  | F5 | **F5 FCT effluent I-L to CCT** |  |  | 2026-12-01 | 2027-09-11 |  |  |  |  |  |  |  |  |
|  | UG-12 | **UG-12** |  |  | 2026-12-01 | 2027-07-25 |  |  |  |  |  |  |  |  |
|  | UG-12-S07 | **UG-12-S07 / GRP-UG12-S07-CH210-CH227-(-5.47/-5.22)-17m / Run / Sheet piles** |  |  | 2026-12-01 | 2027-02-28 |  |  |  |  |  |  |  |  |
| UG-12-S07-A010 |  | Release: drawings, holds, access and gates | milestone | 0d | 2026-12-01 | 2026-12-01 |  | 0d | start on or after 2026-12-01 | F5 | UG-12 | UG-12-S07 | A010 |  |
| UG-12-S07-A020 |  | Set-out, crossing survey and working platform |  | 1d | 2026-12-01 | 2026-12-01 | UG-12-S07-A010 | 0d |  | F5 | UG-12 | UG-12-S07 | A020 | 17.108 |
| UG-12-S07-A030 |  | Pipe-support piling from platform (incl. integrity tests) |  | 3d | 2026-12-02 | 2026-12-05 | UG-12-S07-A020 SS+1d, UG-12-S07-A020 FF+2d | 0d |  | F5 | UG-12 | UG-12-S07 | A030 | 14 |
| UG-12-S07-A040 |  | Install sheet piles (shored lengths) |  | 2d | 2026-12-05 | 2026-12-06 | UG-12-S07-A030 SS+2d, UG-12-S07-A030 FF+2d | 0d |  | F5 | UG-12 | UG-12-S07 | A040 | 34.216 |
| UG-12-S07-A050 |  | Install dewatering and draw down |  | 8d | 2026-12-05 | 2026-12-13 | UG-12-S07-A040 SS+1d, UG-12-S07-A040 FF+2d | 28d |  | F5 | UG-12 | UG-12-S07 | A050 | 17.108 |
| UG-12-S07-A060 |  | Excavate and strut to formation |  | 2d | 2027-01-17 | 2027-01-18 | UG-12-S07-A050 SS+9d, UG-12-S07-A050 FF+2d, UG-11-S06-A100 | 0d |  | F5 | UG-12 | UG-12-S07 | A060 | 323.266456 |
| UG-12-S07-A070 |  | Trim piles, blinding and piled slab (incl. cure) |  | 5d | 2027-01-18 | 2027-01-23 | UG-12-S07-A060 SS+1d, UG-12-S07-A060 FF+2d | 0d |  | F5 | UG-12 | UG-12-S07 | A070 | 17.108 |
| UG-12-S07-A080 |  | Lay and joint pipe (incl. fittings, tie-in) |  | 1d | 2027-01-20 | 2027-01-20 | UG-12-S07-A070 SS+2d, UG-12-S07-A070 FF+2d | 0d |  | F5 | UG-12 | UG-12-S07 | A080 | 17.108 |
| UG-12-S07-A090 |  | Surround, joint test and line test |  | 3d | 2027-01-21 | 2027-01-24 | UG-12-S07-A080 SS+1d, UG-12-S07-A080 FF+2d | 27d |  | F5 | UG-12 | UG-12-S07 | A090 | 17.108 |
| UG-12-S07-A100 |  | Backfill to NG and remove struts |  | 1d | 2027-02-27 | 2027-02-27 | UG-12-S07-A090 SS+2d, UG-12-S07-A090 FF+2d, UG-07-S03-A080, UG-07-S04-A080, UG-11-S01-A080 | 0d |  | F5 | UG-12 | UG-12-S07 | A100 | 239.457121 |
| UG-12-S07-A110 |  | Dewatering off, extract sheets, reinstate |  | 2d | 2027-02-27 | 2027-02-28 | UG-12-S07-A100 SS+1d, UG-12-S07-A100 FF+2d |  |  | F5 | UG-12 | UG-12-S07 | A110 | 34.216 |
|  | UG-12-S08 | **UG-12-S08 / GRP-UG12-S08-CH227-CCT-(-5.22/-5.13)-6m / Tie-in / Sheet piles** |  |  | 2026-12-01 | 2027-02-28 |  |  |  |  |  |  |  |  |
| UG-12-S08-A010 |  | Release: drawings, holds, access and gates | milestone | 0d | 2026-12-01 | 2026-12-01 |  | 1d | start on or after 2026-12-01 | F5 | UG-12 | UG-12-S08 | A010 |  |
| UG-12-S08-A020 |  | Set-out, crossing survey and working platform |  | 1d | 2026-12-02 | 2026-12-02 | UG-12-S08-A010, UG-12-S07-A030 SS | 0d |  | F5 | UG-12 | UG-12-S08 | A020 | 6.000391 |
| UG-12-S08-A030 |  | Pipe-support piling from platform (incl. integrity tests) |  | 2d | 2026-12-03 | 2026-12-05 | UG-12-S08-A020 SS+1d, UG-12-S08-A020 FF+2d | 0d |  | F5 | UG-12 | UG-12-S08 | A030 | 8 |
| UG-12-S08-A040 |  | Install sheet piles (shored lengths) |  | 1d | 2026-12-05 | 2026-12-05 | UG-12-S08-A030 SS+1d, UG-12-S08-A030 FF+2d | 0d |  | F5 | UG-12 | UG-12-S08 | A040 | 12.000782 |
| UG-12-S08-A050 |  | Install dewatering and draw down |  | 8d | 2026-12-05 | 2026-12-13 | UG-12-S08-A040 SS+1d, UG-12-S08-A040 FF+2d | 28d |  | F5 | UG-12 | UG-12-S08 | A050 | 6.000391 |
| UG-12-S08-A060 |  | Excavate and strut to formation |  | 1d | 2027-01-17 | 2027-01-17 | UG-12-S08-A050 SS+9d, UG-12-S08-A050 FF+2d, UG-11-S06-A100 | 0d |  | F5 | UG-12 | UG-12-S08 | A060 | 109.342728 |
| UG-12-S08-A070 |  | Trim piles, blinding and piled slab (incl. cure) |  | 4d | 2027-01-18 | 2027-01-21 | UG-12-S08-A060 SS+1d, UG-12-S08-A060 FF+2d | 5d |  | F5 | UG-12 | UG-12-S08 | A070 | 6.000391 |
| UG-12-S08-A080 |  | Lay and joint pipe (incl. fittings, tie-in) |  | 4d | 2027-01-26 | 2027-01-30 | UG-12-S08-A070 SS+2d, UG-12-S08-A070 FF+2d, UG-12-S07-A080 | 0d |  | F5 | UG-12 | UG-12-S08 | A080 | 6.000391 |
| UG-12-S08-A090 |  | Surround, joint test and line test |  | 3d | 2027-01-28 | 2027-01-31 | UG-12-S08-A080 SS+2d, UG-12-S08-A080 FF+2d | 21d |  | F5 | UG-12 | UG-12-S08 | A090 | 6.000391 |
| UG-12-S08-A100 |  | Backfill to NG and remove struts |  | 1d | 2027-02-27 | 2027-02-27 | UG-12-S08-A090 SS+2d, UG-12-S08-A090 FF+2d, UG-07-S03-A080, UG-07-S04-A080, UG-11-S01-A080 | 0d |  | F5 | UG-12 | UG-12-S08 | A100 | 79.947779 |
| UG-12-S08-A110 |  | Dewatering off, extract sheets, reinstate |  | 2d | 2027-02-27 | 2027-02-28 | UG-12-S08-A100 SS+1d, UG-12-S08-A100 FF+2d |  |  | F5 | UG-12 | UG-12-S08 | A110 | 12.000782 |

Notes:
- UG-12-S07-A010: Notes: Front F5 / Line UG-12 / Package UG-12-S07 / Workbook logic: gates: START, D_DLU
- UG-12-S07-A020: Notes: Front F5 / Line UG-12 / Package UG-12-S07 / Quantity 17 m / Workbook logic: FS from A010
- UG-12-S07-A030: Notes: Front F5 / Line UG-12 / Package UG-12-S07 / Quantity 14 piles / Workbook logic: gate: D_PILEDES
- UG-12-S07-A040: Notes: Front F5 / Line UG-12 / Package UG-12-S07 / Quantity 34 m wall
- UG-12-S07-A050: Notes: Front F5 / Line UG-12 / Package UG-12-S07 / Quantity 17 m
- UG-12-S07-A060: Notes: Front F5 / Line UG-12 / Package UG-12-S07 / Quantity 323 m3 / Workbook logic: UG-11-S06-A100 (FS, deeper first)
- UG-12-S07-A070: Notes: Front F5 / Line UG-12 / Package UG-12-S07 / Quantity 17 m
- UG-12-S07-A080: Notes: Front F5 / Line UG-12 / Package UG-12-S07 / Quantity 17 m
- UG-12-S07-A090: Notes: Front F5 / Line UG-12 / Package UG-12-S07 / Quantity 17 m
- UG-12-S07-A100: Notes: Front F5 / Line UG-12 / Package UG-12-S07 / Quantity 239 m3 / Workbook logic: UG-07-S03-A080 (FS, shared trench laid); UG-07-S04-A080 (FS, shared trench laid); UG-11-S01-A080 (FS, shared trench laid)
- UG-12-S07-A110: Notes: Front F5 / Line UG-12 / Package UG-12-S07 / Quantity 34 m wall
- UG-12-S08-A010: Notes: Front F5 / Line UG-12 / Package UG-12-S08 / Workbook logic: gates: START, D_DLU, structure ready
- UG-12-S08-A020: Notes: Front F5 / Line UG-12 / Package UG-12-S08 / Quantity 6 m / Workbook logic: FS from A010; UG-12-S07-A030 (SS, tie-in team follows the adjacent run)
- UG-12-S08-A030: Notes: Front F5 / Line UG-12 / Package UG-12-S08 / Quantity 8 piles / Workbook logic: gate: D_PILEDES
- UG-12-S08-A040: Notes: Front F5 / Line UG-12 / Package UG-12-S08 / Quantity 12 m wall
- UG-12-S08-A050: Notes: Front F5 / Line UG-12 / Package UG-12-S08 / Quantity 6 m
- UG-12-S08-A060: Notes: Front F5 / Line UG-12 / Package UG-12-S08 / Quantity 109 m3 / Workbook logic: UG-11-S06-A100 (FS, deeper first)
- UG-12-S08-A070: Notes: Front F5 / Line UG-12 / Package UG-12-S08 / Quantity 6 m
- UG-12-S08-A080: Notes: Front F5 / Line UG-12 / Package UG-12-S08 / Quantity 6 m / Workbook logic: UG-12-S07-A080 (FS, closure)
- UG-12-S08-A090: Notes: Front F5 / Line UG-12 / Package UG-12-S08 / Quantity 6 m
- UG-12-S08-A100: Notes: Front F5 / Line UG-12 / Package UG-12-S08 / Quantity 80 m3 / Workbook logic: UG-07-S03-A080 (FS, shared trench laid); UG-07-S04-A080 (FS, shared trench laid); UG-11-S01-A080 (FS, shared trench laid)
- UG-12-S08-A110: Notes: Front F5 / Line UG-12 / Package UG-12-S08 / Quantity 12 m wall

| ID | WBS | Activity | Type | Duration | Start | Finish | Predecessors | Free float | Constraint | Text1 | Text2 | Text3 | Text4 | Number1 |
| --- | --- | --- | --- | --- | --- | --- | --- | --- | --- | --- | --- | --- | --- | --- |
|  | UG-12-S06 | **UG-12-S06 / GRP-UG12-S06-CH168-CH210-(-6.07/-5.47)-42m / Run / Sheet piles** |  |  | 2026-12-01 | 2027-03-06 |  |  |  |  |  |  |  |  |
| UG-12-S06-A010 |  | Release: drawings, holds, access and gates | milestone | 0d | 2026-12-01 | 2026-12-01 |  | 4d | start on or after 2026-12-01 | F5 | UG-12 | UG-12-S06 | A010 |  |
| UG-12-S06-A020 |  | Set-out, crossing survey and working platform |  | 1d | 2026-12-06 | 2026-12-06 | UG-12-S06-A010, UG-11B-S14-A030 SS | 4d |  | F5 | UG-12 | UG-12-S06 | A020 | 42.1 |
| UG-12-S06-A030 |  | Pipe-support piling from platform (incl. integrity tests) |  | 7d | 2026-12-12 | 2026-12-19 | UG-12-S06-A020 SS+1d, UG-12-S06-A020 FF+2d, UG-11B-S14-A030 | 0d |  | F5 | UG-12 | UG-12-S06 | A030 | 32 |
| UG-12-S06-A040 |  | Install sheet piles (shored lengths) |  | 4d | 2026-12-14 | 2026-12-17 | UG-12-S06-A030 SS+3d, UG-12-S06-A030 FF+2d, UG-11B-S14-A040 | 3d |  | F5 | UG-12 | UG-12-S06 | A040 | 84.2 |
| UG-12-S06-A050 |  | Install dewatering and draw down |  | 9d | 2027-01-12 | 2027-01-21 | UG-12-S06-A040 SS+2d, UG-12-S06-A040 FF+2d, UG-11B-S14-A060 FS-9d | 0d |  | F5 | UG-12 | UG-12-S06 | A050 | 42.1 |
| UG-12-S06-A060 |  | Excavate and strut to formation |  | 4d | 2027-01-23 | 2027-01-26 | UG-12-S06-A050 SS+9d, UG-12-S06-A050 FF+2d, UG-11B-S14-A060 | 0d |  | F5 | UG-12 | UG-12-S06 | A060 | 868.104834 |
| UG-12-S06-A070 |  | Trim piles, blinding and piled slab (incl. cure) |  | 7d | 2027-01-30 | 2027-02-06 | UG-12-S06-A060 SS+2d, UG-12-S06-A060 FF+2d, UG-11B-S14-A070 | 0d |  | F5 | UG-12 | UG-12-S06 | A070 | 42.1 |
| UG-12-S06-A080 |  | Lay and joint pipe (incl. fittings, tie-in) |  | 4d | 2027-02-02 | 2027-02-06 | UG-12-S06-A070 SS+3d, UG-12-S06-A070 FF+2d, UG-11B-S14-A080 | 0d |  | F5 | UG-12 | UG-12-S06 | A080 | 42.1 |
| UG-12-S06-A090 |  | Surround, joint test and line test |  | 3d | 2027-02-04 | 2027-02-07 | UG-12-S06-A080 SS+2d, UG-12-S06-A080 FF+2d | 19d |  | F5 | UG-12 | UG-12-S06 | A090 | 42.1 |
| UG-12-S06-A100 |  | Backfill to NG and remove struts |  | 2d | 2027-03-02 | 2027-03-03 | UG-12-S06-A090 SS+2d, UG-12-S06-A090 FF+2d, UG-07-S03-A080, UG-11B-S14-A100 | 0d |  | F5 | UG-12 | UG-12-S06 | A100 | 661.863663 |
| UG-12-S06-A110 |  | Dewatering off, extract sheets, reinstate |  | 3d | 2027-03-03 | 2027-03-06 | UG-12-S06-A100 SS+1d, UG-12-S06-A100 FF+2d |  |  | F5 | UG-12 | UG-12-S06 | A110 | 84.2 |
|  | UG-12-S05 | **UG-12-S05 / GRP-UG12-S05-CH143-CH168-(-6.18/-6.07)-24m / Run / Sheet piles** |  |  | 2026-12-01 | 2027-03-13 |  |  |  |  |  |  |  |  |
| UG-12-S05-A010 |  | Release: drawings, holds, access and gates | milestone | 0d | 2026-12-01 | 2026-12-01 |  | 21d | start on or after 2026-12-01 | F5 | UG-12 | UG-12-S05 | A010 |  |
| UG-12-S05-A020 |  | Set-out, crossing survey and working platform |  | 1d | 2026-12-26 | 2026-12-26 | UG-12-S05-A010, UG-11-S01-A030 SS | 5d |  | F5 | UG-12 | UG-12-S05 | A020 | 24.1 |
| UG-12-S05-A030 |  | Pipe-support piling from platform (incl. integrity tests) |  | 4d | 2027-01-02 | 2027-01-05 | UG-12-S05-A020 SS+1d, UG-12-S05-A020 FF+2d, UG-11-S01-A030 | 0d |  | F5 | UG-12 | UG-12-S05 | A030 | 20 |
| UG-12-S05-A040 |  | Install sheet piles (shored lengths) |  | 2d | 2027-01-03 | 2027-01-04 | UG-12-S05-A030 SS+2d, UG-12-S05-A030 FF+2d, UG-11-S01-A040 | 18d |  | F5 | UG-12 | UG-12-S05 | A040 | 48.2 |
| UG-12-S05-A050 |  | Install dewatering and draw down |  | 8d | 2027-01-25 | 2027-02-02 | UG-12-S05-A040 SS+1d, UG-12-S05-A040 FF+2d, UG-11-S01-A060 FS-8d | 0d |  | F5 | UG-12 | UG-12-S05 | A050 | 24.1 |
| UG-12-S05-A060 |  | Excavate and strut to formation |  | 3d | 2027-02-04 | 2027-02-07 | UG-12-S05-A050 SS+9d, UG-12-S05-A050 FF+2d, UG-11-S01-A060 | 0d |  | F5 | UG-12 | UG-12-S05 | A060 | 532.812932 |
| UG-12-S05-A070 |  | Trim piles, blinding and piled slab (incl. cure) |  | 6d | 2027-02-24 | 2027-03-02 | UG-12-S05-A060 SS+2d, UG-12-S05-A060 FF+2d, UG-11-S01-A070 | 0d |  | F5 | UG-12 | UG-12-S05 | A070 | 24.1 |
| UG-12-S05-A080 |  | Lay and joint pipe (incl. fittings, tie-in) |  | 3d | 2027-02-27 | 2027-03-01 | UG-12-S05-A070 SS+3d, UG-12-S05-A070 FF+2d, UG-11-S01-A080 | 0d |  | F5 | UG-12 | UG-12-S05 | A080 | 24.1 |
| UG-12-S05-A090 |  | Surround, joint test and line test |  | 3d | 2027-03-01 | 2027-03-03 | UG-12-S05-A080 SS+2d, UG-12-S05-A080 FF+2d | 5d |  | F5 | UG-12 | UG-12-S05 | A090 | 24.1 |
| UG-12-S05-A100 |  | Backfill to NG and remove struts |  | 2d | 2027-03-10 | 2027-03-11 | UG-12-S05-A090 SS+2d, UG-12-S05-A090 FF+2d, UG-11-S01-A100 | 0d |  | F5 | UG-12 | UG-12-S05 | A100 | 414.750374 |
| UG-12-S05-A110 |  | Dewatering off, extract sheets, reinstate |  | 2d | 2027-03-11 | 2027-03-13 | UG-12-S05-A100 SS+1d, UG-12-S05-A100 FF+2d |  |  | F5 | UG-12 | UG-12-S05 | A110 | 48.2 |

Notes:
- UG-12-S06-A010: Notes: Front F5 / Line UG-12 / Package UG-12-S06 / Workbook logic: gates: START, D_DLU
- UG-12-S06-A020: Notes: Front F5 / Line UG-12 / Package UG-12-S06 / Quantity 42 m / Workbook logic: FS from A010; UG-11B-S14-A030 (SS, set-out one package ahead of piling)
- UG-12-S06-A030: Notes: Front F5 / Line UG-12 / Package UG-12-S06 / Quantity 32 piles / Workbook logic: gate: D_PILEDES
- UG-12-S06-A040: Notes: Front F5 / Line UG-12 / Package UG-12-S06 / Quantity 84 m wall
- UG-12-S06-A050: Notes: Front F5 / Line UG-12 / Package UG-12-S06 / Quantity 42 m / Workbook logic: UG-11B-S14-A060 (FS, negative lag = own duration: drawdown complete when the excavation crew is free)
- UG-12-S06-A060: Notes: Front F5 / Line UG-12 / Package UG-12-S06 / Quantity 868 m3
- UG-12-S06-A070: Notes: Front F5 / Line UG-12 / Package UG-12-S06 / Quantity 42 m
- UG-12-S06-A080: Notes: Front F5 / Line UG-12 / Package UG-12-S06 / Quantity 42 m
- UG-12-S06-A090: Notes: Front F5 / Line UG-12 / Package UG-12-S06 / Quantity 42 m
- UG-12-S06-A100: Notes: Front F5 / Line UG-12 / Package UG-12-S06 / Quantity 662 m3 / Workbook logic: UG-07-S03-A080 (FS, shared trench laid)
- UG-12-S06-A110: Notes: Front F5 / Line UG-12 / Package UG-12-S06 / Quantity 84 m wall
- UG-12-S05-A010: Notes: Front F5 / Line UG-12 / Package UG-12-S05 / Workbook logic: gates: START, D_DLU
- UG-12-S05-A020: Notes: Front F5 / Line UG-12 / Package UG-12-S05 / Quantity 24 m / Workbook logic: FS from A010; UG-11-S01-A030 (SS, set-out one package ahead of piling)
- UG-12-S05-A030: Notes: Front F5 / Line UG-12 / Package UG-12-S05 / Quantity 20 piles / Workbook logic: gate: D_PILEDES
- UG-12-S05-A040: Notes: Front F5 / Line UG-12 / Package UG-12-S05 / Quantity 48 m wall
- UG-12-S05-A050: Notes: Front F5 / Line UG-12 / Package UG-12-S05 / Quantity 24 m / Workbook logic: UG-11-S01-A060 (FS, negative lag = own duration: drawdown complete when the excavation crew is free)
- UG-12-S05-A060: Notes: Front F5 / Line UG-12 / Package UG-12-S05 / Quantity 533 m3
- UG-12-S05-A070: Notes: Front F5 / Line UG-12 / Package UG-12-S05 / Quantity 24 m
- UG-12-S05-A080: Notes: Front F5 / Line UG-12 / Package UG-12-S05 / Quantity 24 m
- UG-12-S05-A090: Notes: Front F5 / Line UG-12 / Package UG-12-S05 / Quantity 24 m
- UG-12-S05-A100: Notes: Front F5 / Line UG-12 / Package UG-12-S05 / Quantity 415 m3
- UG-12-S05-A110: Notes: Front F5 / Line UG-12 / Package UG-12-S05 / Quantity 48 m wall

| ID | WBS | Activity | Type | Duration | Start | Finish | Predecessors | Free float | Constraint | Text1 | Text2 | Text3 | Text4 | Number1 |
| --- | --- | --- | --- | --- | --- | --- | --- | --- | --- | --- | --- | --- | --- | --- |
|  | UG-12-S02 | **UG-12-S02 / GRP-UG12-S02-CH030-CH046-(-3.08/-3.08)-16m / Run / Open cut** |  |  | 2026-12-01 | 2027-07-08 |  |  |  |  |  |  |  |  |
| UG-12-S02-A010 |  | Release: drawings, holds, access and gates | milestone | 0d | 2026-12-01 | 2026-12-01 |  | 27d | start on or after 2026-12-01 | F5 | UG-12 | UG-12-S02 | A010 |  |
| UG-12-S02-A020 |  | Set-out, crossing survey and working platform |  | 1d | 2027-01-02 | 2027-01-02 | UG-12-S02-A010, UG-12-S05-A030 SS | 3d |  | F5 | UG-12 | UG-12-S02 | A020 | 16 |
| UG-12-S02-A030 |  | Pipe-support piling from platform (incl. integrity tests) |  | 3d | 2027-01-06 | 2027-01-09 | UG-12-S02-A020 SS+1d, UG-12-S02-A020 FF+2d, UG-12-S05-A030 | 0d |  | F5 | UG-12 | UG-12-S02 | A030 | 14 |
| UG-12-S02-A050 |  | Install dewatering and draw down |  | 8d | 2027-01-30 | 2027-02-07 | UG-12-S05-A060 FS-8d, UG-12-S02-A030 SS+2d, UG-12-S02-A030 SF+4d, UG-12-S02-A030 FF+2d | 109d |  | F5 | UG-12 | UG-12-S02 | A050 | 16 |
| UG-12-S02-A060 |  | Excavate and strut to formation |  | 1d | 2027-06-16 | 2027-06-16 | UG-12-S02-A050 SS+9d, UG-12-S02-A050 FF+2d, UG-13-S02-A100, UG-13-S03-A100, UG-12-S05-A060 | 0d |  | F5 | UG-12 | UG-12-S02 | A060 | 330.741002 |
| UG-12-S02-A070 |  | Trim piles, blinding and piled slab (incl. cure) |  | 5d | 2027-06-17 | 2027-06-22 | UG-12-S02-A060 SS+1d, UG-12-S02-A060 FF+2d, UG-12-S05-A070 | 0d |  | F5 | UG-12 | UG-12-S02 | A070 | 16 |
| UG-12-S02-A080 |  | Lay and joint pipe (incl. fittings, tie-in) |  | 1d | 2027-06-19 | 2027-06-19 | UG-12-S02-A070 SS+2d, UG-12-S02-A070 FF+2d, UG-12-S05-A080 | 0d |  | F5 | UG-12 | UG-12-S02 | A080 | 16 |
| UG-12-S02-A090 |  | Surround, joint test and line test |  | 3d | 2027-06-20 | 2027-06-22 | UG-12-S02-A080 SS+1d, UG-12-S02-A080 FF+2d | 11d |  | F5 | UG-12 | UG-12-S02 | A090 | 16 |
| UG-12-S02-A100 |  | Backfill to NG and remove struts |  | 1d | 2027-07-07 | 2027-07-07 | UG-12-S02-A090 SS+2d, UG-12-S02-A090 FF+2d, UG-12A-S12-A080, UG-12-S05-A100 | 0d |  | F5 | UG-12 | UG-12-S02 | A100 | 252.359292 |
| UG-12-S02-A110 |  | Dewatering off, extract sheets, reinstate |  | 1d | 2027-07-08 | 2027-07-08 | UG-12-S02-A100 SS+1d, UG-12-S02-A100 FF+2d |  |  | F5 | UG-12 | UG-12-S02 | A110 | 0 |
|  | UG-12-S01 | **UG-12-S01 / GRP-UG12-S01-FSTI-CH030-(-3.05/-3.08)-30m / Run / Open cut** |  |  | 2026-12-01 | 2027-07-25 |  |  |  |  |  |  |  |  |
| UG-12-S01-A010 |  | Release: drawings, holds, access and gates | milestone | 0d | 2026-12-01 | 2026-12-01 |  | 31d | start on or after 2026-12-01 | F5 | UG-12 | UG-12-S01 | A010 |  |
| UG-12-S01-A020 |  | Set-out, crossing survey and working platform |  | 1d | 2027-01-06 | 2027-01-06 | UG-12-S01-A010, UG-12-S02-A030 SS | 2d |  | F5 | UG-12 | UG-12-S01 | A020 | 30.1 |
| UG-12-S01-A030 |  | Pipe-support piling from platform (incl. integrity tests) |  | 5d | 2027-01-10 | 2027-01-14 | UG-12-S01-A020 SS+1d, UG-12-S01-A020 FF+2d, UG-12-S02-A030 | 0d |  | F5 | UG-12 | UG-12-S01 | A030 | 24 |
| UG-12-S01-A050 |  | Install dewatering and draw down |  | 8d | 2027-06-08 | 2027-06-16 | UG-12-S02-A060 FS-8d, UG-12-S01-A030 SS+2d, UG-12-S01-A030 SF+4d, UG-12-S01-A030 FF+2d | 0d |  | F5 | UG-12 | UG-12-S01 | A050 | 30.1 |
| UG-12-S01-A060 |  | Excavate and strut to formation |  | 2d | 2027-06-19 | 2027-06-20 | UG-12-S01-A050 SS+9d, UG-12-S01-A050 FF+2d, UG-13-S02-A100, UG-13-S03-A100, UG-12-S02-A060 | 0d |  | F5 | UG-12 | UG-12-S01 | A060 | 618.906855 |
| UG-12-S01-A070 |  | Trim piles, blinding and piled slab (incl. cure) |  | 6d | 2027-06-23 | 2027-06-29 | UG-12-S01-A060 SS+1d, UG-12-S01-A060 FF+2d, UG-12-S02-A070 | 0d |  | F5 | UG-12 | UG-12-S01 | A070 | 30.1 |
| UG-12-S01-A080 |  | Lay and joint pipe (incl. fittings, tie-in) |  | 3d | 2027-06-26 | 2027-06-28 | UG-12-S01-A070 SS+3d, UG-12-S01-A070 FF+2d, UG-12-S02-A080 | 0d |  | F5 | UG-12 | UG-12-S01 | A080 | 30.1 |
| UG-12-S01-A090 |  | Surround, joint test and line test |  | 3d | 2027-06-28 | 2027-06-30 | UG-12-S01-A080 SS+2d, UG-12-S01-A080 FF+2d | 19d |  | F5 | UG-12 | UG-12-S01 | A090 | 30.1 |
| UG-12-S01-A100 |  | Backfill to NG and remove struts |  | 2d | 2027-07-24 | 2027-07-25 | UG-12-S01-A090 SS+2d, UG-12-S01-A090 FF+2d, UG-12A-S06-A080, UG-12A-S10-A080, UG-12A-S12-A080, UG-12-S02-A100 | 0d |  | F5 | UG-12 | UG-12-S01 | A100 | 471.514784 |
| UG-12-S01-A110 |  | Dewatering off, extract sheets, reinstate |  | 1d | 2027-07-24 | 2027-07-24 | UG-12-S01-A100 SS+1d, UG-12-S01-A100 FF+2d |  |  | F5 | UG-12 | UG-12-S01 | A110 | 0 |
|  | UG-11B | **UG-11B** |  |  | 2026-12-01 | 2027-03-02 |  |  |  |  |  |  |  |  |
|  | UG-11B-S14 | **UG-11B-S14 / HDPE-UG11B-S14-CH018-TEE-(-4.63/-4.63)-20m / Run / Sheet piles** |  |  | 2026-12-01 | 2027-03-02 |  |  |  |  |  |  |  |  |
| UG-11B-S14-A010 |  | Release: drawings, holds, access and gates | milestone | 0d | 2026-12-01 | 2026-12-01 |  | 1d | start on or after 2026-12-01 | F5 | UG-11B | UG-11B-S14 | A010 |  |
| UG-11B-S14-A020 |  | Set-out, crossing survey and working platform |  | 1d | 2026-12-02 | 2026-12-02 | UG-11B-S14-A010, UG-12-S07-A030 SS | 2d |  | F5 | UG-11B | UG-11B-S14 | A020 | 20.153841 |
| UG-11B-S14-A030 |  | Pipe-support piling from platform (incl. integrity tests) |  | 4d | 2026-12-06 | 2026-12-09 | UG-11B-S14-A020 SS+1d, UG-11B-S14-A020 FF+2d, UG-12-S07-A030 | 0d |  | F5 | UG-11B | UG-11B-S14 | A030 | 16 |
| UG-11B-S14-A040 |  | Install sheet piles (shored lengths) |  | 2d | 2026-12-08 | 2026-12-09 | UG-11B-S14-A030 SS+2d, UG-11B-S14-A030 FF+2d, UG-12-S07-A040 | 3d |  | F5 | UG-11B | UG-11B-S14 | A040 | 40.307683 |
| UG-11B-S14-A050 |  | Install dewatering and draw down |  | 8d | 2027-01-10 | 2027-01-18 | UG-11B-S14-A040 SS+1d, UG-11B-S14-A040 FF+2d, UG-12-S07-A060 FS-8d | 0d |  | F5 | UG-11B | UG-11B-S14 | A050 | 20.153841 |
| UG-11B-S14-A060 |  | Excavate and strut to formation |  | 2d | 2027-01-20 | 2027-01-21 | UG-11B-S14-A050 SS+9d, UG-11B-S14-A050 FF+2d, UG-12-S07-A060 | 0d |  | F5 | UG-11B | UG-11B-S14 | A060 | 322.724906 |
| UG-11B-S14-A070 |  | Trim piles, blinding and piled slab (incl. cure) |  | 5d | 2027-01-24 | 2027-01-28 | UG-11B-S14-A060 SS+1d, UG-11B-S14-A060 FF+2d, UG-12-S07-A070 | 0d |  | F5 | UG-11B | UG-11B-S14 | A070 | 20.153841 |
| UG-11B-S14-A080 |  | Lay and joint pipe (incl. fittings, tie-in) |  | 3d | 2027-01-26 | 2027-01-28 | UG-11B-S14-A070 SS+2d, UG-11B-S14-A070 FF+2d, UG-12-S07-A080 | 0d |  | F5 | UG-11B | UG-11B-S14 | A080 | 20.153841 |
| UG-11B-S14-A090 |  | Surround, joint test and line test |  | 3d | 2027-01-28 | 2027-01-31 | UG-11B-S14-A080 SS+2d, UG-11B-S14-A080 FF+2d | 22d |  | F5 | UG-11B | UG-11B-S14 | A090 | 20.153841 |
| UG-11B-S14-A100 |  | Backfill to NG and remove struts |  | 1d | 2027-02-28 | 2027-02-28 | UG-11B-S14-A090 SS+2d, UG-11B-S14-A090 FF+2d, UG-11-S01-A080, UG-12-S07-A100 | 0d |  | F5 | UG-11B | UG-11B-S14 | A100 | 223.994096 |
| UG-11B-S14-A110 |  | Dewatering off, extract sheets, reinstate |  | 2d | 2027-03-01 | 2027-03-02 | UG-11B-S14-A100 SS+1d, UG-11B-S14-A100 FF+2d |  |  | F5 | UG-11B | UG-11B-S14 | A110 | 40.307683 |

Notes:
- UG-12-S02-A010: Notes: Front F5 / Line UG-12 / Package UG-12-S02 / Workbook logic: gates: START, D_DLU
- UG-12-S02-A020: Notes: Front F5 / Line UG-12 / Package UG-12-S02 / Quantity 16 m / Workbook logic: FS from A010; UG-12-S05-A030 (SS, set-out one package ahead of piling)
- UG-12-S02-A030: Notes: Front F5 / Line UG-12 / Package UG-12-S02 / Quantity 14 piles / Workbook logic: gate: D_PILEDES
- UG-12-S02-A050: Notes: Front F5 / Line UG-12 / Package UG-12-S02 / Quantity 16 m / Workbook logic: UG-12-S05-A060 (FS, negative lag = own duration: drawdown complete when the excavation crew is free)
- UG-12-S02-A060: Notes: Front F5 / Line UG-12 / Package UG-12-S02 / Quantity 331 m3 / Workbook logic: UG-13-S02-A100 (FS, deeper first); UG-13-S03-A100 (FS, deeper first)
- UG-12-S02-A070: Notes: Front F5 / Line UG-12 / Package UG-12-S02 / Quantity 16 m
- UG-12-S02-A080: Notes: Front F5 / Line UG-12 / Package UG-12-S02 / Quantity 16 m
- UG-12-S02-A090: Notes: Front F5 / Line UG-12 / Package UG-12-S02 / Quantity 16 m
- UG-12-S02-A100: Notes: Front F5 / Line UG-12 / Package UG-12-S02 / Quantity 252 m3 / Workbook logic: UG-12A-S12-A080 (FS, shared trench laid)
- UG-12-S02-A110: Notes: Front F5 / Line UG-12 / Package UG-12-S02 / Quantity 0 m wall
- UG-12-S01-A010: Notes: Front F5 / Line UG-12 / Package UG-12-S01 / Workbook logic: gates: START, D_DLU
- UG-12-S01-A020: Notes: Front F5 / Line UG-12 / Package UG-12-S01 / Quantity 30 m / Workbook logic: FS from A010; UG-12-S02-A030 (SS, set-out one package ahead of piling)
- UG-12-S01-A030: Notes: Front F5 / Line UG-12 / Package UG-12-S01 / Quantity 24 piles / Workbook logic: gate: D_PILEDES
- UG-12-S01-A050: Notes: Front F5 / Line UG-12 / Package UG-12-S01 / Quantity 30 m / Workbook logic: UG-12-S02-A060 (FS, negative lag = own duration: drawdown complete when the excavation crew is free)
- UG-12-S01-A060: Notes: Front F5 / Line UG-12 / Package UG-12-S01 / Quantity 619 m3 / Workbook logic: UG-13-S02-A100 (FS, deeper first); UG-13-S03-A100 (FS, deeper first)
- UG-12-S01-A070: Notes: Front F5 / Line UG-12 / Package UG-12-S01 / Quantity 30 m
- UG-12-S01-A080: Notes: Front F5 / Line UG-12 / Package UG-12-S01 / Quantity 30 m
- UG-12-S01-A090: Notes: Front F5 / Line UG-12 / Package UG-12-S01 / Quantity 30 m
- UG-12-S01-A100: Notes: Front F5 / Line UG-12 / Package UG-12-S01 / Quantity 472 m3 / Workbook logic: UG-12A-S06-A080 (FS, shared trench laid); UG-12A-S10-A080 (FS, shared trench laid); UG-12A-S12-A080 (FS, shared trench laid)
- UG-12-S01-A110: Notes: Front F5 / Line UG-12 / Package UG-12-S01 / Quantity 0 m wall
- UG-11B-S14-A010: Notes: Front F5 / Line UG-11B / Package UG-11B-S14 / Workbook logic: gates: START, D_DLU
- UG-11B-S14-A020: Notes: Front F5 / Line UG-11B / Package UG-11B-S14 / Quantity 20 m / Workbook logic: FS from A010; UG-12-S07-A030 (SS, set-out one package ahead of piling)
- UG-11B-S14-A030: Notes: Front F5 / Line UG-11B / Package UG-11B-S14 / Quantity 16 piles / Workbook logic: gate: D_PILEDES
- UG-11B-S14-A040: Notes: Front F5 / Line UG-11B / Package UG-11B-S14 / Quantity 40 m wall
- UG-11B-S14-A050: Notes: Front F5 / Line UG-11B / Package UG-11B-S14 / Quantity 20 m / Workbook logic: UG-12-S07-A060 (FS, negative lag = own duration: drawdown complete when the excavation crew is free)
- UG-11B-S14-A060: Notes: Front F5 / Line UG-11B / Package UG-11B-S14 / Quantity 323 m3
- UG-11B-S14-A070: Notes: Front F5 / Line UG-11B / Package UG-11B-S14 / Quantity 20 m
- UG-11B-S14-A080: Notes: Front F5 / Line UG-11B / Package UG-11B-S14 / Quantity 20 m
- UG-11B-S14-A090: Notes: Front F5 / Line UG-11B / Package UG-11B-S14 / Quantity 20 m
- UG-11B-S14-A100: Notes: Front F5 / Line UG-11B / Package UG-11B-S14 / Quantity 224 m3 / Workbook logic: UG-11-S01-A080 (FS, shared trench laid)
- UG-11B-S14-A110: Notes: Front F5 / Line UG-11B / Package UG-11B-S14 / Quantity 40 m wall

| ID | WBS | Activity | Type | Duration | Start | Finish | Predecessors | Free float | Constraint | Text1 | Text2 | Text3 | Text4 | Number1 |
| --- | --- | --- | --- | --- | --- | --- | --- | --- | --- | --- | --- | --- | --- | --- |
|  | UG-07 | **UG-07** |  |  | 2026-12-01 | 2027-03-08 |  |  |  |  |  |  |  |  |
|  | UG-07-S03 | **UG-07-S03 / GRP-UG07-S03-CH056-CH081-(-4.58/-5.03)-25m / Run / Sheet piles** |  |  | 2026-12-01 | 2027-03-08 |  |  |  |  |  |  |  |  |
| UG-07-S03-A010 |  | Release: drawings, holds, access and gates | milestone | 0d | 2026-12-01 | 2026-12-01 |  | 9d | start on or after 2026-12-01 | F5 | UG-07 | UG-07-S03 | A010 |  |
| UG-07-S03-A020 |  | Set-out, crossing survey and working platform |  | 1d | 2026-12-12 | 2026-12-12 | UG-07-S03-A010, UG-12-S06-A030 SS | 6d |  | F5 | UG-07 | UG-07-S03 | A020 | 25.227 |
| UG-07-S03-A030 |  | Pipe-support piling from platform (incl. integrity tests) |  | 4d | 2026-12-20 | 2026-12-23 | UG-07-S03-A020 SS+1d, UG-07-S03-A020 FF+2d, UG-12-S06-A030 | 0d |  | F5 | UG-07 | UG-07-S03 | A030 | 20 |
| UG-07-S03-A040 |  | Install sheet piles (shored lengths) |  | 3d | 2026-12-22 | 2026-12-24 | UG-07-S03-A030 SS+2d, UG-07-S03-A030 FF+2d, UG-12-S06-A040 | 2d |  | F5 | UG-07 | UG-07-S03 | A040 | 50.454 |
| UG-07-S03-A050 |  | Install dewatering and draw down |  | 8d | 2027-01-18 | 2027-01-26 | UG-07-S03-A040 SS+2d, UG-07-S03-A040 FF+2d, UG-12-S06-A060 FS-8d | 0d |  | F5 | UG-07 | UG-07-S03 | A050 | 25.227 |
| UG-07-S03-A060 |  | Excavate and strut to formation |  | 2d | 2027-01-28 | 2027-01-30 | UG-07-S03-A050 SS+9d, UG-07-S03-A050 FF+2d, UG-11-S06-A100, UG-12-S06-A060 SS, UG-12-S07-A060 SS, UG-12-S08-A060 SS, UG-12-S06-A060 | 0d |  | F5 | UG-07 | UG-07-S03 | A060 | 421.351178 |
| UG-07-S03-A070 |  | Trim piles, blinding and piled slab (incl. cure) |  | 6d | 2027-02-08 | 2027-02-14 | UG-07-S03-A060 SS+1d, UG-07-S03-A060 FF+2d, UG-12-S06-A070 | 0d |  | F5 | UG-07 | UG-07-S03 | A070 | 25.227 |
| UG-07-S03-A080 |  | Lay and joint pipe (incl. fittings, tie-in) |  | 2d | 2027-02-11 | 2027-02-13 | UG-07-S03-A070 SS+3d, UG-07-S03-A070 FF+2d, UG-12-S06-A080 | 0d |  | F5 | UG-07 | UG-07-S03 | A080 | 25.227 |
| UG-07-S03-A090 |  | Surround, joint test and line test |  | 3d | 2027-02-13 | 2027-02-15 | UG-07-S03-A080 SS+1d, UG-07-S03-A080 FF+2d | 14d |  | F5 | UG-07 | UG-07-S03 | A090 | 25.227 |
| UG-07-S03-A100 |  | Backfill to NG and remove struts |  | 1d | 2027-03-06 | 2027-03-06 | UG-07-S03-A090 SS+2d, UG-07-S03-A090 FF+2d, UG-11-S01-A080, UG-12-S06-A080, UG-12-S07-A080, UG-12-S08-A080, UG-12-S06-A100 | 0d |  | F5 | UG-07 | UG-07-S03 | A100 | 297.76802 |
| UG-07-S03-A110 |  | Dewatering off, extract sheets, reinstate |  | 3d | 2027-03-06 | 2027-03-08 | UG-07-S03-A100 SS+1d, UG-07-S03-A100 FF+2d |  |  | F5 | UG-07 | UG-07-S03 | A110 | 50.454 |
|  | UG-07-S04 | **UG-07-S04 / GRP-UG07-S04-CH081-CCT-(-5.03/-5.13)-6m / Tie-in / Sheet piles** |  |  | 2026-12-01 | 2027-02-28 |  |  |  |  |  |  |  |  |
| UG-07-S04-A010 |  | Release: drawings, holds, access and gates | milestone | 0d | 2026-12-01 | 2026-12-01 |  | 16d | start on or after 2026-12-01 | F5 | UG-07 | UG-07-S04 | A010 |  |
| UG-07-S04-A020 |  | Set-out, crossing survey and working platform |  | 1d | 2026-12-20 | 2026-12-20 | UG-07-S04-A010, UG-07-S03-A030 SS | 0d |  | F5 | UG-07 | UG-07-S04 | A020 | 6.000325 |
| UG-07-S04-A030 |  | Pipe-support piling from platform (incl. integrity tests) |  | 2d | 2026-12-21 | 2026-12-22 | UG-07-S04-A020 SS+1d, UG-07-S04-A020 FF+2d | 0d |  | F5 | UG-07 | UG-07-S04 | A030 | 8 |
| UG-07-S04-A040 |  | Install sheet piles (shored lengths) |  | 1d | 2026-12-22 | 2026-12-22 | UG-07-S04-A030 SS+1d, UG-07-S04-A030 FF+2d | 0d |  | F5 | UG-07 | UG-07-S04 | A040 | 12.000649 |
| UG-07-S04-A050 |  | Install dewatering and draw down |  | 8d | 2026-12-23 | 2026-12-31 | UG-07-S04-A040 SS+1d, UG-07-S04-A040 FF+2d | 12d |  | F5 | UG-07 | UG-07-S04 | A050 | 6.000325 |
| UG-07-S04-A060 |  | Excavate and strut to formation |  | 1d | 2027-01-17 | 2027-01-17 | UG-07-S04-A050 SS+9d, UG-07-S04-A050 FF+2d, UG-11-S06-A100, UG-12-S07-A060 SS, UG-12-S08-A060 SS | 0d |  | F5 | UG-07 | UG-07-S04 | A060 | 106.991724 |
| UG-07-S04-A070 |  | Trim piles, blinding and piled slab (incl. cure) |  | 4d | 2027-01-18 | 2027-01-21 | UG-07-S04-A060 SS+1d, UG-07-S04-A060 FF+2d | 24d |  | F5 | UG-07 | UG-07-S04 | A070 | 6.000325 |
| UG-07-S04-A080 |  | Lay and joint pipe (incl. fittings, tie-in) |  | 4d | 2027-02-17 | 2027-02-21 | UG-07-S04-A070 SS+2d, UG-07-S04-A070 FF+2d, UG-07-S03-A080 | 0d |  | F5 | UG-07 | UG-07-S04 | A080 | 6.000325 |
| UG-07-S04-A090 |  | Surround, joint test and line test |  | 3d | 2027-02-20 | 2027-02-22 | UG-07-S04-A080 SS+2d, UG-07-S04-A080 FF+2d | 2d |  | F5 | UG-07 | UG-07-S04 | A090 | 6.000325 |
| UG-07-S04-A100 |  | Backfill to NG and remove struts |  | 1d | 2027-02-27 | 2027-02-27 | UG-07-S04-A090 SS+2d, UG-07-S04-A090 FF+2d, UG-11-S01-A080, UG-12-S07-A080, UG-12-S08-A080 | 0d |  | F5 | UG-07 | UG-07-S04 | A100 | 77.597065 |
| UG-07-S04-A110 |  | Dewatering off, extract sheets, reinstate |  | 2d | 2027-02-27 | 2027-02-28 | UG-07-S04-A100 SS+1d, UG-07-S04-A100 FF+2d |  |  | F5 | UG-07 | UG-07-S04 | A110 | 12.000649 |

Notes:
- UG-07-S03-A010: Notes: Front F5 / Line UG-07 / Package UG-07-S03 / Workbook logic: gates: START, D_DLU
- UG-07-S03-A020: Notes: Front F5 / Line UG-07 / Package UG-07-S03 / Quantity 25 m / Workbook logic: FS from A010; UG-12-S06-A030 (SS, set-out one package ahead of piling)
- UG-07-S03-A030: Notes: Front F5 / Line UG-07 / Package UG-07-S03 / Quantity 20 piles / Workbook logic: gate: D_PILEDES
- UG-07-S03-A040: Notes: Front F5 / Line UG-07 / Package UG-07-S03 / Quantity 50 m wall
- UG-07-S03-A050: Notes: Front F5 / Line UG-07 / Package UG-07-S03 / Quantity 25 m / Workbook logic: UG-12-S06-A060 (FS, negative lag = own duration: drawdown complete when the excavation crew is free)
- UG-07-S03-A060: Notes: Front F5 / Line UG-07 / Package UG-07-S03 / Quantity 421 m3 / Workbook logic: UG-11-S06-A100 (FS, deeper first); UG-12-S06-A060 (SS, shared trench); UG-12-S07-A060 (SS, shared trench); UG-12-S08-A060 (SS, shared trench)
- UG-07-S03-A070: Notes: Front F5 / Line UG-07 / Package UG-07-S03 / Quantity 25 m
- UG-07-S03-A080: Notes: Front F5 / Line UG-07 / Package UG-07-S03 / Quantity 25 m
- UG-07-S03-A090: Notes: Front F5 / Line UG-07 / Package UG-07-S03 / Quantity 25 m
- UG-07-S03-A100: Notes: Front F5 / Line UG-07 / Package UG-07-S03 / Quantity 298 m3 / Workbook logic: UG-11-S01-A080 (FS, shared trench laid); UG-12-S06-A080 (FS, shared trench laid); UG-12-S07-A080 (FS, shared trench laid); UG-12-S08-A080 (FS, shared trench laid)
- UG-07-S03-A110: Notes: Front F5 / Line UG-07 / Package UG-07-S03 / Quantity 50 m wall
- UG-07-S04-A010: Notes: Front F5 / Line UG-07 / Package UG-07-S04 / Workbook logic: gates: START, D_DLU, structure ready
- UG-07-S04-A020: Notes: Front F5 / Line UG-07 / Package UG-07-S04 / Quantity 6 m / Workbook logic: FS from A010; UG-07-S03-A030 (SS, tie-in team follows the adjacent run)
- UG-07-S04-A030: Notes: Front F5 / Line UG-07 / Package UG-07-S04 / Quantity 8 piles / Workbook logic: gate: D_PILEDES
- UG-07-S04-A040: Notes: Front F5 / Line UG-07 / Package UG-07-S04 / Quantity 12 m wall
- UG-07-S04-A050: Notes: Front F5 / Line UG-07 / Package UG-07-S04 / Quantity 6 m
- UG-07-S04-A060: Notes: Front F5 / Line UG-07 / Package UG-07-S04 / Quantity 107 m3 / Workbook logic: UG-11-S06-A100 (FS, deeper first); UG-12-S07-A060 (SS, shared trench); UG-12-S08-A060 (SS, shared trench)
- UG-07-S04-A070: Notes: Front F5 / Line UG-07 / Package UG-07-S04 / Quantity 6 m
- UG-07-S04-A080: Notes: Front F5 / Line UG-07 / Package UG-07-S04 / Quantity 6 m / Workbook logic: UG-07-S03-A080 (FS, closure)
- UG-07-S04-A090: Notes: Front F5 / Line UG-07 / Package UG-07-S04 / Quantity 6 m
- UG-07-S04-A100: Notes: Front F5 / Line UG-07 / Package UG-07-S04 / Quantity 78 m3 / Workbook logic: UG-11-S01-A080 (FS, shared trench laid); UG-12-S07-A080 (FS, shared trench laid); UG-12-S08-A080 (FS, shared trench laid)
- UG-07-S04-A110: Notes: Front F5 / Line UG-07 / Package UG-07-S04 / Quantity 12 m wall

| ID | WBS | Activity | Type | Duration | Start | Finish | Predecessors | Free float | Constraint | Text1 | Text2 | Text3 | Text4 | Number1 |
| --- | --- | --- | --- | --- | --- | --- | --- | --- | --- | --- | --- | --- | --- | --- |
|  | UG-11 | **UG-11** |  |  | 2026-12-01 | 2027-03-10 |  |  |  |  |  |  |  |  |
|  | UG-11-S01 | **UG-11-S01 / GRP-UG11-S01-FSTA-CH037-(-4.62/-4.62)-37m / Run / Sheet piles** |  |  | 2026-12-01 | 2027-03-10 |  |  |  |  |  |  |  |  |
| UG-11-S01-A010 |  | Release: drawings, holds, access and gates | milestone | 0d | 2026-12-01 | 2026-12-01 |  | 16d | start on or after 2026-12-01 | F5 | UG-11 | UG-11-S01 | A010 |  |
| UG-11-S01-A020 |  | Set-out, crossing survey and working platform |  | 1d | 2026-12-20 | 2026-12-20 | UG-11-S01-A010, UG-07-S03-A030 SS | 4d |  | F5 | UG-11 | UG-11-S01 | A020 | 37.4 |
| UG-11-S01-A030 |  | Pipe-support piling from platform (incl. integrity tests) |  | 6d | 2026-12-26 | 2026-12-31 | UG-11-S01-A020 SS+1d, UG-11-S01-A020 FF+2d, UG-07-S03-A030 | 0d |  | F5 | UG-11 | UG-11-S01 | A030 | 28 |
| UG-11-S01-A040 |  | Install sheet piles (shored lengths) |  | 3d | 2026-12-28 | 2026-12-30 | UG-11-S01-A030 SS+3d, UG-11-S01-A030 FF+2d, UG-07-S03-A040 | 2d |  | F5 | UG-11 | UG-11-S01 | A040 | 74.8 |
| UG-11-S01-A050 |  | Install dewatering and draw down |  | 8d | 2027-01-21 | 2027-01-30 | UG-11-S01-A040 SS+2d, UG-11-S01-A040 FF+2d, UG-07-S03-A060 FS-8d | 0d |  | F5 | UG-11 | UG-11-S01 | A050 | 37.4 |
| UG-11-S01-A060 |  | Excavate and strut to formation |  | 3d | 2027-01-31 | 2027-02-02 | UG-11-S01-A050 SS+9d, UG-11-S01-A050 FF+2d, UG-07-S03-A060 SS, UG-07-S04-A060 SS, UG-11B-S14-A060 SS, UG-12-S07-A060 SS, UG-12-S08-A060 SS, UG-07-S03-A060 | 0d |  | F5 | UG-11 | UG-11-S01 | A060 | 597.11463 |
| UG-11-S01-A070 |  | Trim piles, blinding and piled slab (incl. cure) |  | 7d | 2027-02-15 | 2027-02-22 | UG-11-S01-A060 SS+2d, UG-11-S01-A060 FF+2d, UG-07-S03-A070 | 0d |  | F5 | UG-11 | UG-11-S01 | A070 | 37.4 |
| UG-11-S01-A080 |  | Lay and joint pipe (incl. fittings, tie-in) |  | 4d | 2027-02-18 | 2027-02-22 | UG-11-S01-A070 SS+3d, UG-11-S01-A070 FF+2d, UG-07-S03-A080 | 0d |  | F5 | UG-11 | UG-11-S01 | A080 | 37.4 |
| UG-11-S01-A090 |  | Surround, joint test and line test |  | 3d | 2027-02-20 | 2027-02-22 | UG-11-S01-A080 SS+2d, UG-11-S01-A080 FF+2d | 10d |  | F5 | UG-11 | UG-11-S01 | A090 | 37.4 |
| UG-11-S01-A100 |  | Backfill to NG and remove struts |  | 2d | 2027-03-07 | 2027-03-08 | UG-11-S01-A090 SS+2d, UG-11-S01-A090 FF+2d, UG-07-S03-A080, UG-07-S04-A080, UG-11B-S14-A080, UG-12-S07-A080, UG-12-S08-A080, UG-07-S03-A100 | 0d |  | F5 | UG-11 | UG-11-S01 | A100 | 414.05559 |
| UG-11-S01-A110 |  | Dewatering off, extract sheets, reinstate |  | 3d | 2027-03-08 | 2027-03-10 | UG-11-S01-A100 SS+1d, UG-11-S01-A100 FF+2d |  |  | F5 | UG-11 | UG-11-S01 | A110 | 74.8 |
|  | UG-12A | **UG-12A** |  |  | 2026-12-01 | 2027-09-11 |  |  |  |  |  |  |  |  |
|  | UG-12A-S12 | **UG-12A-S12 / HDPE-UG12A-S12-CH006-CCT-(-2.64/-2.66)-8m / Run / Open cut** |  |  | 2026-12-01 | 2027-07-27 |  |  |  |  |  |  |  |  |
| UG-12A-S12-A010 |  | Release: drawings, holds, access and gates | milestone | 0d | 2026-12-01 | 2026-12-01 |  | 34d | start on or after 2026-12-01 | F5 | UG-12A | UG-12A-S12 | A010 |  |
| UG-12A-S12-A020 |  | Set-out, crossing survey and working platform |  | 1d | 2027-01-10 | 2027-01-10 | UG-12A-S12-A010, UG-12-S01-A030 SS | 4d |  | F5 | UG-12A | UG-12A-S12 | A020 | 8.169686 |
| UG-12A-S12-A030 |  | Pipe-support piling from platform (incl. integrity tests) |  | 2d | 2027-01-16 | 2027-01-17 | UG-12A-S12-A020 SS+1d, UG-12A-S12-A020 FF+2d, UG-12-S01-A030 | 0d |  | F5 | UG-12A | UG-12A-S12 | A030 | 8 |
| UG-12A-S12-A050 |  | Install dewatering and draw down |  | 8d | 2027-06-12 | 2027-06-20 | UG-12-S01-A060 FS-8d, UG-12A-S12-A030 SS+1d, UG-12A-S12-A030 SF+3d, UG-12A-S12-A030 FF+2d | 0d |  | F5 | UG-12A | UG-12A-S12 | A050 | 8.169686 |
| UG-12A-S12-A060 |  | Excavate and strut to formation |  | 1d | 2027-06-21 | 2027-06-21 | UG-12A-S12-A050 SS+9d, UG-12A-S12-A050 FF+2d, UG-13-S03-A100, UG-12-S01-A060 SS, UG-12-S02-A060 SS, UG-12-S01-A060 | 0d |  | F5 | UG-12A | UG-12A-S12 | A060 | 110.725412 |
| UG-12A-S12-A070 |  | Trim piles, blinding and piled slab (incl. cure) |  | 4d | 2027-06-30 | 2027-07-04 | UG-12A-S12-A060 SS+1d, UG-12A-S12-A060 FF+2d, UG-12-S01-A070 | 0d |  | F5 | UG-12A | UG-12A-S12 | A070 | 8.169686 |
| UG-12A-S12-A080 |  | Lay and joint pipe (incl. fittings, tie-in) |  | 1d | 2027-07-03 | 2027-07-03 | UG-12A-S12-A070 SS+2d, UG-12A-S12-A070 FF+2d, UG-12-S01-A080 | 0d |  | F5 | UG-12A | UG-12A-S12 | A080 | 8.169686 |
| UG-12A-S12-A090 |  | Surround, joint test and line test |  | 3d | 2027-07-03 | 2027-07-05 | UG-12A-S12-A080 SS+1d, UG-12A-S12-A080 FF+2d | 16d |  | F5 | UG-12A | UG-12A-S12 | A090 | 8.169686 |
| UG-12A-S12-A100 |  | Backfill to NG and remove struts |  | 1d | 2027-07-26 | 2027-07-26 | UG-12A-S12-A090 SS+2d, UG-12A-S12-A090 FF+2d, UG-12-S01-A080, UG-12-S02-A080, UG-12-S01-A100 | 0d |  | F5 | UG-12A | UG-12A-S12 | A100 | 92.232468 |
| UG-12A-S12-A110 |  | Dewatering off, extract sheets, reinstate |  | 1d | 2027-07-27 | 2027-07-27 | UG-12A-S12-A100 SS+1d, UG-12A-S12-A100 FF+2d |  |  | F5 | UG-12A | UG-12A-S12 | A110 | 0 |

Notes:
- UG-11-S01-A010: Notes: Front F5 / Line UG-11 / Package UG-11-S01 / Workbook logic: gates: START, D_DLU
- UG-11-S01-A020: Notes: Front F5 / Line UG-11 / Package UG-11-S01 / Quantity 37 m / Workbook logic: FS from A010; UG-07-S03-A030 (SS, set-out one package ahead of piling)
- UG-11-S01-A030: Notes: Front F5 / Line UG-11 / Package UG-11-S01 / Quantity 28 piles / Workbook logic: gate: D_PILEDES
- UG-11-S01-A040: Notes: Front F5 / Line UG-11 / Package UG-11-S01 / Quantity 75 m wall
- UG-11-S01-A050: Notes: Front F5 / Line UG-11 / Package UG-11-S01 / Quantity 37 m / Workbook logic: UG-07-S03-A060 (FS, negative lag = own duration: drawdown complete when the excavation crew is free)
- UG-11-S01-A060: Notes: Front F5 / Line UG-11 / Package UG-11-S01 / Quantity 597 m3 / Workbook logic: UG-07-S03-A060 (SS, shared trench); UG-07-S04-A060 (SS, shared trench); UG-11B-S14-A060 (SS, shared trench); UG-12-S07-A060 (SS, shared trench); UG-12-S08-A060 (SS, shared trench)
- UG-11-S01-A070: Notes: Front F5 / Line UG-11 / Package UG-11-S01 / Quantity 37 m
- UG-11-S01-A080: Notes: Front F5 / Line UG-11 / Package UG-11-S01 / Quantity 37 m
- UG-11-S01-A090: Notes: Front F5 / Line UG-11 / Package UG-11-S01 / Quantity 37 m
- UG-11-S01-A100: Notes: Front F5 / Line UG-11 / Package UG-11-S01 / Quantity 414 m3 / Workbook logic: UG-07-S03-A080 (FS, shared trench laid); UG-07-S04-A080 (FS, shared trench laid); UG-11B-S14-A080 (FS, shared trench laid); UG-12-S07-A080 (FS, shared trench laid); UG-12-S08-A080 (FS, shared trench laid)
- UG-11-S01-A110: Notes: Front F5 / Line UG-11 / Package UG-11-S01 / Quantity 75 m wall
- UG-12A-S12-A010: Notes: Front F5 / Line UG-12A / Package UG-12A-S12 / Workbook logic: gates: START, D_DLU
- UG-12A-S12-A020: Notes: Front F5 / Line UG-12A / Package UG-12A-S12 / Quantity 8 m / Workbook logic: FS from A010; UG-12-S01-A030 (SS, set-out one package ahead of piling)
- UG-12A-S12-A030: Notes: Front F5 / Line UG-12A / Package UG-12A-S12 / Quantity 8 piles / Workbook logic: gate: D_PILEDES
- UG-12A-S12-A050: Notes: Front F5 / Line UG-12A / Package UG-12A-S12 / Quantity 8 m / Workbook logic: UG-12-S01-A060 (FS, negative lag = own duration: drawdown complete when the excavation crew is free)
- UG-12A-S12-A060: Notes: Front F5 / Line UG-12A / Package UG-12A-S12 / Quantity 111 m3 / Workbook logic: UG-13-S03-A100 (FS, deeper first); UG-12-S01-A060 (SS, shared trench); UG-12-S02-A060 (SS, shared trench)
- UG-12A-S12-A070: Notes: Front F5 / Line UG-12A / Package UG-12A-S12 / Quantity 8 m
- UG-12A-S12-A080: Notes: Front F5 / Line UG-12A / Package UG-12A-S12 / Quantity 8 m
- UG-12A-S12-A090: Notes: Front F5 / Line UG-12A / Package UG-12A-S12 / Quantity 8 m
- UG-12A-S12-A100: Notes: Front F5 / Line UG-12A / Package UG-12A-S12 / Quantity 92 m3 / Workbook logic: UG-12-S01-A080 (FS, shared trench laid); UG-12-S02-A080 (FS, shared trench laid)
- UG-12A-S12-A110: Notes: Front F5 / Line UG-12A / Package UG-12A-S12 / Quantity 0 m wall

| ID | WBS | Activity | Type | Duration | Start | Finish | Predecessors | Free float | Constraint | Text1 | Text2 | Text3 | Text4 | Number1 |
| --- | --- | --- | --- | --- | --- | --- | --- | --- | --- | --- | --- | --- | --- | --- |
|  | UG-12A-S10 | **UG-12A-S10 / HDPE-UG12A-S10-CH006-CCT-(-2.63/-2.65)-29m / Run / Open cut** |  |  | 2026-12-01 | 2027-07-29 |  |  |  |  |  |  |  |  |
| UG-12A-S10-A010 |  | Release: drawings, holds, access and gates | milestone | 0d | 2026-12-01 | 2026-12-01 |  | 39d | start on or after 2026-12-01 | F5 | UG-12A | UG-12A-S10 | A010 |  |
| UG-12A-S10-A020 |  | Set-out, crossing survey and working platform |  | 1d | 2027-01-16 | 2027-01-16 | UG-12A-S10-A010, UG-12A-S12-A030 SS | 2d |  | F5 | UG-12A | UG-12A-S10 | A020 | 29.258836 |
| UG-12A-S10-A030 |  | Pipe-support piling from platform (incl. integrity tests) |  | 5d | 2027-01-19 | 2027-01-24 | UG-12A-S10-A020 SS+1d, UG-12A-S10-A020 FF+2d, UG-12A-S12-A030 | 0d |  | F5 | UG-12A | UG-12A-S10 | A030 | 22 |
| UG-12A-S10-A050 |  | Install dewatering and draw down |  | 8d | 2027-06-13 | 2027-06-21 | UG-12A-S12-A060 FS-8d, UG-12A-S10-A030 SS+2d, UG-12A-S10-A030 SF+4d, UG-12A-S10-A030 FF+2d | 0d |  | F5 | UG-12A | UG-12A-S10 | A050 | 29.258836 |
| UG-12A-S10-A060 |  | Excavate and strut to formation |  | 1d | 2027-06-23 | 2027-06-23 | UG-12A-S10-A050 SS+9d, UG-12A-S10-A050 FF+2d, UG-12-S01-A060 SS, UG-12A-S12-A060 | 0d |  | F5 | UG-12A | UG-12A-S10 | A060 | 392.829813 |
| UG-12A-S10-A070 |  | Trim piles, blinding and piled slab (incl. cure) |  | 6d | 2027-07-05 | 2027-07-11 | UG-12A-S10-A060 SS+1d, UG-12A-S10-A060 FF+2d, UG-12A-S12-A070 | 0d |  | F5 | UG-12A | UG-12A-S10 | A070 | 29.258836 |
| UG-12A-S10-A080 |  | Lay and joint pipe (incl. fittings, tie-in) |  | 2d | 2027-07-08 | 2027-07-10 | UG-12A-S10-A070 SS+3d, UG-12A-S10-A070 FF+2d, UG-12A-S12-A080 | 0d |  | F5 | UG-12A | UG-12A-S10 | A080 | 29.258836 |
| UG-12A-S10-A090 |  | Surround, joint test and line test |  | 3d | 2027-07-10 | 2027-07-12 | UG-12A-S10-A080 SS+1d, UG-12A-S10-A080 FF+2d | 12d |  | F5 | UG-12A | UG-12A-S10 | A090 | 29.258836 |
| UG-12A-S10-A100 |  | Backfill to NG and remove struts |  | 1d | 2027-07-28 | 2027-07-28 | UG-12A-S10-A090 SS+2d, UG-12A-S10-A090 FF+2d, UG-12-S01-A080, UG-12A-S12-A100 | 0d |  | F5 | UG-12A | UG-12A-S10 | A100 | 326.890526 |
| UG-12A-S10-A110 |  | Dewatering off, extract sheets, reinstate |  | 1d | 2027-07-29 | 2027-07-29 | UG-12A-S10-A100 SS+1d, UG-12A-S10-A100 FF+2d |  |  | F5 | UG-12A | UG-12A-S10 | A110 | 0 |
|  | UG-12A-S06 | **UG-12A-S06 / HDPE-UG12A-S06-CH242-CCT-(-2.83/-2.85)-39m / Run / Open cut** |  |  | 2026-12-01 | 2027-08-01 |  |  |  |  |  |  |  |  |
| UG-12A-S06-A010 |  | Release: drawings, holds, access and gates | milestone | 0d | 2026-12-01 | 2026-12-01 |  | 42d | start on or after 2026-12-01 | F5 | UG-12A | UG-12A-S06 | A010 |  |
| UG-12A-S06-A020 |  | Set-out, crossing survey and working platform |  | 1d | 2027-01-19 | 2027-01-19 | UG-12A-S06-A010, UG-12A-S10-A030 SS | 4d |  | F5 | UG-12A | UG-12A-S06 | A020 | 39.043511 |
| UG-12A-S06-A030 |  | Pipe-support piling from platform (incl. integrity tests) |  | 6d | 2027-01-25 | 2027-01-31 | UG-12A-S06-A020 SS+1d, UG-12A-S06-A020 FF+2d, UG-12A-S10-A030 | 0d |  | F5 | UG-12A | UG-12A-S06 | A030 | 30 |
| UG-12A-S06-A050 |  | Install dewatering and draw down |  | 8d | 2027-06-15 | 2027-06-23 | UG-12A-S10-A060 FS-8d, UG-12A-S06-A030 SS+3d, UG-12A-S06-A030 SF+5d, UG-12A-S06-A030 FF+2d | 0d |  | F5 | UG-12A | UG-12A-S06 | A050 | 39.043511 |
| UG-12A-S06-A060 |  | Excavate and strut to formation |  | 2d | 2027-06-26 | 2027-06-27 | UG-12A-S06-A050 SS+9d, UG-12A-S06-A050 FF+2d, UG-12-S01-A060 SS, UG-12A-S10-A060 | 0d |  | F5 | UG-12A | UG-12A-S06 | A060 | 641.750111 |
| UG-12A-S06-A070 |  | Trim piles, blinding and piled slab (incl. cure) |  | 7d | 2027-07-12 | 2027-07-19 | UG-12A-S06-A060 SS+1d, UG-12A-S06-A060 FF+2d, UG-12A-S10-A070 | 0d |  | F5 | UG-12A | UG-12A-S06 | A070 | 39.043511 |
| UG-12A-S06-A080 |  | Lay and joint pipe (incl. fittings, tie-in) |  | 2d | 2027-07-15 | 2027-07-17 | UG-12A-S06-A070 SS+3d, UG-12A-S06-A070 FF+2d, UG-12A-S10-A080 | 0d |  | F5 | UG-12A | UG-12A-S06 | A080 | 39.043511 |
| UG-12A-S06-A090 |  | Surround, joint test and line test |  | 3d | 2027-07-17 | 2027-07-19 | UG-12A-S06-A080 SS+1d, UG-12A-S06-A080 FF+2d | 9d |  | F5 | UG-12A | UG-12A-S06 | A090 | 39.043511 |
| UG-12A-S06-A100 |  | Backfill to NG and remove struts |  | 2d | 2027-07-31 | 2027-08-01 | UG-12A-S06-A090 SS+2d, UG-12A-S06-A090 FF+2d, UG-12-S01-A080, UG-12A-S10-A100 | 0d |  | F5 | UG-12A | UG-12A-S06 | A100 | 512.279558 |
| UG-12A-S06-A110 |  | Dewatering off, extract sheets, reinstate |  | 1d | 2027-07-31 | 2027-07-31 | UG-12A-S06-A100 SS+1d, UG-12A-S06-A100 FF+2d |  |  | F5 | UG-12A | UG-12A-S06 | A110 | 0 |
|  | UG-12A-S05 | **UG-12A-S05 / HDPE-UG12A-S05-CH226-CH242-(-2.83/-2.83)-15m / Run / Open cut** |  |  | 2026-12-01 | 2027-08-03 |  |  |  |  |  |  |  |  |
| UG-12A-S05-A010 |  | Release: drawings, holds, access and gates | milestone | 0d | 2026-12-01 | 2026-12-01 |  | 47d | start on or after 2026-12-01 | F5 | UG-12A | UG-12A-S05 | A010 |  |
| UG-12A-S05-A020 |  | Set-out, crossing survey and working platform |  | 1d | 2027-01-25 | 2027-01-25 | UG-12A-S05-A010, UG-12A-S06-A030 SS | 5d |  | F5 | UG-12A | UG-12A-S05 | A020 | 15.1 |
| UG-12A-S05-A030 |  | Pipe-support piling from platform (incl. integrity tests) |  | 3d | 2027-02-01 | 2027-02-03 | UG-12A-S05-A020 SS+1d, UG-12A-S05-A020 FF+2d, UG-12A-S06-A030 | 0d |  | F5 | UG-12A | UG-12A-S05 | A030 | 14 |
| UG-12A-S05-A050 |  | Install dewatering and draw down |  | 8d | 2027-06-19 | 2027-06-27 | UG-12A-S06-A060 FS-8d, UG-12A-S05-A030 SS+2d, UG-12A-S05-A030 SF+4d, UG-12A-S05-A030 FF+2d | 0d |  | F5 | UG-12A | UG-12A-S05 | A050 | 15.1 |
| UG-12A-S05-A060 |  | Excavate and strut to formation |  | 1d | 2027-06-28 | 2027-06-28 | UG-12A-S05-A050 SS+9d, UG-12A-S05-A050 FF+2d, UG-06-S03-A100, UG-12A-S06-A060 | 0d |  | F5 | UG-12A | UG-12A-S05 | A060 | 247.968521 |
| UG-12A-S05-A070 |  | Trim piles, blinding and piled slab (incl. cure) |  | 5d | 2027-07-21 | 2027-07-26 | UG-12A-S05-A060 SS+1d, UG-12A-S05-A060 FF+2d, UG-12A-S06-A070 | 0d |  | F5 | UG-12A | UG-12A-S05 | A070 | 15.1 |
| UG-12A-S05-A080 |  | Lay and joint pipe (incl. fittings, tie-in) |  | 2d | 2027-07-24 | 2027-07-25 | UG-12A-S05-A070 SS+2d, UG-12A-S05-A070 FF+2d, UG-12A-S06-A080 | 0d |  | F5 | UG-12A | UG-12A-S05 | A080 | 15.1 |
| UG-12A-S05-A090 |  | Surround, joint test and line test |  | 3d | 2027-07-24 | 2027-07-26 | UG-12A-S05-A080 SS+1d, UG-12A-S05-A080 FF+2d | 4d |  | F5 | UG-12A | UG-12A-S05 | A090 | 15.1 |
| UG-12A-S05-A100 |  | Backfill to NG and remove struts |  | 1d | 2027-08-02 | 2027-08-02 | UG-12A-S05-A090 SS+2d, UG-12A-S05-A090 FF+2d, UG-12A-S06-A100 | 0d |  | F5 | UG-12A | UG-12A-S05 | A100 | 197.978412 |
| UG-12A-S05-A110 |  | Dewatering off, extract sheets, reinstate |  | 1d | 2027-08-03 | 2027-08-03 | UG-12A-S05-A100 SS+1d, UG-12A-S05-A100 FF+2d |  |  | F5 | UG-12A | UG-12A-S05 | A110 | 0 |

Notes:
- UG-12A-S10-A010: Notes: Front F5 / Line UG-12A / Package UG-12A-S10 / Workbook logic: gates: START, D_DLU
- UG-12A-S10-A020: Notes: Front F5 / Line UG-12A / Package UG-12A-S10 / Quantity 29 m / Workbook logic: FS from A010; UG-12A-S12-A030 (SS, set-out one package ahead of piling)
- UG-12A-S10-A030: Notes: Front F5 / Line UG-12A / Package UG-12A-S10 / Quantity 22 piles / Workbook logic: gate: D_PILEDES
- UG-12A-S10-A050: Notes: Front F5 / Line UG-12A / Package UG-12A-S10 / Quantity 29 m / Workbook logic: UG-12A-S12-A060 (FS, negative lag = own duration: drawdown complete when the excavation crew is free)
- UG-12A-S10-A060: Notes: Front F5 / Line UG-12A / Package UG-12A-S10 / Quantity 393 m3 / Workbook logic: UG-12-S01-A060 (SS, shared trench)
- UG-12A-S10-A070: Notes: Front F5 / Line UG-12A / Package UG-12A-S10 / Quantity 29 m
- UG-12A-S10-A080: Notes: Front F5 / Line UG-12A / Package UG-12A-S10 / Quantity 29 m
- UG-12A-S10-A090: Notes: Front F5 / Line UG-12A / Package UG-12A-S10 / Quantity 29 m
- UG-12A-S10-A100: Notes: Front F5 / Line UG-12A / Package UG-12A-S10 / Quantity 327 m3 / Workbook logic: UG-12-S01-A080 (FS, shared trench laid)
- UG-12A-S10-A110: Notes: Front F5 / Line UG-12A / Package UG-12A-S10 / Quantity 0 m wall
- UG-12A-S06-A010: Notes: Front F5 / Line UG-12A / Package UG-12A-S06 / Workbook logic: gates: START, D_DLU
- UG-12A-S06-A020: Notes: Front F5 / Line UG-12A / Package UG-12A-S06 / Quantity 39 m / Workbook logic: FS from A010; UG-12A-S10-A030 (SS, set-out one package ahead of piling)
- UG-12A-S06-A030: Notes: Front F5 / Line UG-12A / Package UG-12A-S06 / Quantity 30 piles / Workbook logic: gate: D_PILEDES
- UG-12A-S06-A050: Notes: Front F5 / Line UG-12A / Package UG-12A-S06 / Quantity 39 m / Workbook logic: UG-12A-S10-A060 (FS, negative lag = own duration: drawdown complete when the excavation crew is free)
- UG-12A-S06-A060: Notes: Front F5 / Line UG-12A / Package UG-12A-S06 / Quantity 642 m3 / Workbook logic: UG-12-S01-A060 (SS, shared trench)
- UG-12A-S06-A070: Notes: Front F5 / Line UG-12A / Package UG-12A-S06 / Quantity 39 m
- UG-12A-S06-A080: Notes: Front F5 / Line UG-12A / Package UG-12A-S06 / Quantity 39 m
- UG-12A-S06-A090: Notes: Front F5 / Line UG-12A / Package UG-12A-S06 / Quantity 39 m
- UG-12A-S06-A100: Notes: Front F5 / Line UG-12A / Package UG-12A-S06 / Quantity 512 m3 / Workbook logic: UG-12-S01-A080 (FS, shared trench laid)
- UG-12A-S06-A110: Notes: Front F5 / Line UG-12A / Package UG-12A-S06 / Quantity 0 m wall
- UG-12A-S05-A010: Notes: Front F5 / Line UG-12A / Package UG-12A-S05 / Workbook logic: gates: START, D_DLU
- UG-12A-S05-A020: Notes: Front F5 / Line UG-12A / Package UG-12A-S05 / Quantity 15 m / Workbook logic: FS from A010; UG-12A-S06-A030 (SS, set-out one package ahead of piling)
- UG-12A-S05-A030: Notes: Front F5 / Line UG-12A / Package UG-12A-S05 / Quantity 14 piles / Workbook logic: gate: D_PILEDES
- UG-12A-S05-A050: Notes: Front F5 / Line UG-12A / Package UG-12A-S05 / Quantity 15 m / Workbook logic: UG-12A-S06-A060 (FS, negative lag = own duration: drawdown complete when the excavation crew is free)
- UG-12A-S05-A060: Notes: Front F5 / Line UG-12A / Package UG-12A-S05 / Quantity 248 m3 / Workbook logic: UG-06-S03-A100 (FS, deeper first)
- UG-12A-S05-A070: Notes: Front F5 / Line UG-12A / Package UG-12A-S05 / Quantity 15 m
- UG-12A-S05-A080: Notes: Front F5 / Line UG-12A / Package UG-12A-S05 / Quantity 15 m
- UG-12A-S05-A090: Notes: Front F5 / Line UG-12A / Package UG-12A-S05 / Quantity 15 m
- UG-12A-S05-A100: Notes: Front F5 / Line UG-12A / Package UG-12A-S05 / Quantity 198 m3
- UG-12A-S05-A110: Notes: Front F5 / Line UG-12A / Package UG-12A-S05 / Quantity 0 m wall

| ID | WBS | Activity | Type | Duration | Start | Finish | Predecessors | Free float | Constraint | Text1 | Text2 | Text3 | Text4 | Number1 |
| --- | --- | --- | --- | --- | --- | --- | --- | --- | --- | --- | --- | --- | --- | --- |
|  | UG-12A-S04 | **UG-12A-S04 / HDPE-UG12A-S04-TEE150-CH226-(-2.89/-2.83)-77m / Run / Mixed: 36 m sheet piles** |  |  | 2026-12-01 | 2027-08-09 |  |  |  |  |  |  |  |  |
| UG-12A-S04-A010 |  | Release: drawings, holds, access and gates | milestone | 0d | 2026-12-01 | 2026-12-01 |  | 53d | start on or after 2026-12-01 | F5 | UG-12A | UG-12A-S04 | A010 |  |
| UG-12A-S04-A020 |  | Set-out, crossing survey and working platform |  | 1d | 2027-02-01 | 2027-02-01 | UG-12A-S04-A010, UG-12A-S05-A030 SS | 3d |  | F5 | UG-12A | UG-12A-S04 | A020 | 76.674002 |
| UG-12A-S04-A030 |  | Pipe-support piling from platform (incl. integrity tests) |  | 11d | 2027-02-06 | 2027-02-17 | UG-12A-S04-A020 SS+1d, UG-12A-S04-A020 FF+2d, UG-12A-S05-A030 | 0d |  | F5 | UG-12A | UG-12A-S04 | A030 | 54 |
| UG-12A-S04-A040 |  | Install sheet piles (shored lengths) |  | 3d | 2027-02-09 | 2027-02-11 | UG-12A-S04-A030 SS+3d, UG-12A-S04-A030 FF+2d, UG-12-S05-A040 | 8d |  | F5 | UG-12A | UG-12A-S04 | A040 | 72.215264 |
| UG-12A-S04-A050 |  | Install dewatering and draw down |  | 9d | 2027-06-19 | 2027-06-28 | UG-12A-S04-A040 SS+2d, UG-12A-S04-A040 FF+2d, UG-12A-S05-A060 FS-9d | 1d |  | F5 | UG-12A | UG-12A-S04 | A050 | 76.674002 |
| UG-12A-S04-A060 |  | Excavate and strut to formation |  | 3d | 2027-06-30 | 2027-07-03 | UG-12A-S04-A050 SS+9d, UG-12A-S04-A050 FF+2d, UG-05-S04-A100, UG-06-S04-A100, UG-12A-S05-A060 | 0d |  | F5 | UG-12A | UG-12A-S04 | A060 | 957.532355 |
| UG-12A-S04-A070 |  | Trim piles, blinding and piled slab (incl. cure) |  | 10d | 2027-07-27 | 2027-08-07 | UG-12A-S04-A060 SS+2d, UG-12A-S04-A060 FF+2d, UG-12A-S05-A070 | 0d |  | F5 | UG-12A | UG-12A-S04 | A070 | 76.674002 |
| UG-12A-S04-A080 |  | Lay and joint pipe (incl. fittings, tie-in) |  | 4d | 2027-07-31 | 2027-08-03 | UG-12A-S04-A070 SS+3d, UG-12A-S04-A070 FF+2d, UG-12A-S05-A080 | 0d |  | F5 | UG-12A | UG-12A-S04 | A080 | 76.674002 |
| UG-12A-S04-A090 |  | Surround, joint test and line test |  | 3d | 2027-08-02 | 2027-08-04 | UG-12A-S04-A080 SS+2d, UG-12A-S04-A080 FF+2d | 0d |  | F5 | UG-12A | UG-12A-S04 | A090 | 76.674002 |
| UG-12A-S04-A100 |  | Backfill to NG and remove struts |  | 3d | 2027-08-04 | 2027-08-07 | UG-12A-S04-A090 SS+2d, UG-12A-S04-A090 FF+2d, UG-12A-S05-A100 | 0d |  | F5 | UG-12A | UG-12A-S04 | A100 | 703.694266 |
| UG-12A-S04-A110 |  | Dewatering off, extract sheets, reinstate |  | 3d | 2027-08-07 | 2027-08-09 | UG-12A-S04-A100 SS+2d, UG-12A-S04-A100 FF+2d |  |  | F5 | UG-12A | UG-12A-S04 | A110 | 72.215264 |
|  | UG-12A-S03 | **UG-12A-S03 / HDPE-UG12A-S03-CH085-TEE150-(-2.63/-2.89)-65m / Run / Mixed: 40 m sheet piles** |  |  | 2026-12-01 | 2027-08-19 |  |  |  |  |  |  |  |  |
| UG-12A-S03-A010 |  | Release: drawings, holds, access and gates | milestone | 0d | 2026-12-01 | 2026-12-01 |  | 57d | start on or after 2026-12-01 | F5 | UG-12A | UG-12A-S03 | A010 |  |
| UG-12A-S03-A020 |  | Set-out, crossing survey and working platform |  | 1d | 2027-02-06 | 2027-02-06 | UG-12A-S03-A010, UG-12A-S04-A030 SS | 10d |  | F5 | UG-12A | UG-12A-S03 | A020 | 64.525998 |
| UG-12A-S03-A030 |  | Pipe-support piling from platform (incl. integrity tests) |  | 10d | 2027-02-18 | 2027-03-01 | UG-12A-S03-A020 SS+1d, UG-12A-S03-A020 FF+2d, UG-12A-S04-A030 | 0d |  | F5 | UG-12A | UG-12A-S03 | A030 | 46 |
| UG-12A-S03-A040 |  | Install sheet piles (shored lengths) |  | 4d | 2027-02-22 | 2027-02-25 | UG-12A-S03-A030 SS+3d, UG-12A-S03-A030 FF+2d, UG-12A-S04-A040 | 102d |  | F5 | UG-12A | UG-12A-S03 | A040 | 80 |
| UG-12A-S03-A050 |  | Install dewatering and draw down |  | 9d | 2027-06-23 | 2027-07-03 | UG-12A-S03-A040 SS+2d, UG-12A-S03-A040 FF+2d, UG-12A-S04-A060 FS-9d | 0d |  | F5 | UG-12A | UG-12A-S03 | A050 | 64.525998 |
| UG-12A-S03-A060 |  | Excavate and strut to formation |  | 2d | 2027-07-04 | 2027-07-05 | UG-12A-S03-A050 SS+9d, UG-12A-S03-A050 FF+2d, UG-05-S04-A100, UG-06-S04-A100, UG-06-S05-A100, UG-12A-S04-A060 | 0d |  | F5 | UG-12A | UG-12A-S03 | A060 | 607.395361 |
| UG-12A-S03-A070 |  | Trim piles, blinding and piled slab (incl. cure) |  | 9d | 2027-08-08 | 2027-08-17 | UG-12A-S03-A060 SS+1d, UG-12A-S03-A060 FF+2d, UG-12A-S04-A070 | 0d |  | F5 | UG-12A | UG-12A-S03 | A070 | 64.525998 |
| UG-12A-S03-A080 |  | Lay and joint pipe (incl. fittings, tie-in) |  | 5d | 2027-08-12 | 2027-08-17 | UG-12A-S03-A070 SS+3d, UG-12A-S03-A070 FF+2d, UG-12A-S04-A080 | 0d |  | F5 | UG-12A | UG-12A-S03 | A080 | 64.525998 |
| UG-12A-S03-A090 |  | Surround, joint test and line test |  | 3d | 2027-08-14 | 2027-08-16 | UG-12A-S03-A080 SS+2d, UG-12A-S03-A080 FF+2d | 0d |  | F5 | UG-12A | UG-12A-S03 | A090 | 64.525998 |
| UG-12A-S03-A100 |  | Backfill to NG and remove struts |  | 2d | 2027-08-16 | 2027-08-17 | UG-12A-S03-A090 SS+2d, UG-12A-S03-A090 FF+2d, UG-12A-S04-A100 | 0d |  | F5 | UG-12A | UG-12A-S03 | A100 | 455.321468 |
| UG-12A-S03-A110 |  | Dewatering off, extract sheets, reinstate |  | 3d | 2027-08-17 | 2027-08-19 | UG-12A-S03-A100 SS+1d, UG-12A-S03-A100 FF+2d |  |  | F5 | UG-12A | UG-12A-S03 | A110 | 80 |

Notes:
- UG-12A-S04-A010: Notes: Front F5 / Line UG-12A / Package UG-12A-S04 / Workbook logic: gates: START, D_DLU
- UG-12A-S04-A020: Notes: Front F5 / Line UG-12A / Package UG-12A-S04 / Quantity 77 m / Workbook logic: FS from A010; UG-12A-S05-A030 (SS, set-out one package ahead of piling)
- UG-12A-S04-A030: Notes: Front F5 / Line UG-12A / Package UG-12A-S04 / Quantity 54 piles / Workbook logic: gate: D_PILEDES
- UG-12A-S04-A040: Notes: Front F5 / Line UG-12A / Package UG-12A-S04 / Quantity 72 m wall
- UG-12A-S04-A050: Notes: Front F5 / Line UG-12A / Package UG-12A-S04 / Quantity 77 m / Workbook logic: UG-12A-S05-A060 (FS, negative lag = own duration: drawdown complete when the excavation crew is free)
- UG-12A-S04-A060: Notes: Front F5 / Line UG-12A / Package UG-12A-S04 / Quantity 958 m3 / Workbook logic: UG-05-S04-A100 (FS, deeper first); UG-06-S04-A100 (FS, deeper first)
- UG-12A-S04-A070: Notes: Front F5 / Line UG-12A / Package UG-12A-S04 / Quantity 77 m
- UG-12A-S04-A080: Notes: Front F5 / Line UG-12A / Package UG-12A-S04 / Quantity 77 m
- UG-12A-S04-A090: Notes: Front F5 / Line UG-12A / Package UG-12A-S04 / Quantity 77 m
- UG-12A-S04-A100: Notes: Front F5 / Line UG-12A / Package UG-12A-S04 / Quantity 704 m3
- UG-12A-S04-A110: Notes: Front F5 / Line UG-12A / Package UG-12A-S04 / Quantity 72 m wall
- UG-12A-S03-A010: Notes: Front F5 / Line UG-12A / Package UG-12A-S03 / Workbook logic: gates: START, D_DLU
- UG-12A-S03-A020: Notes: Front F5 / Line UG-12A / Package UG-12A-S03 / Quantity 65 m / Workbook logic: FS from A010; UG-12A-S04-A030 (SS, set-out one package ahead of piling)
- UG-12A-S03-A030: Notes: Front F5 / Line UG-12A / Package UG-12A-S03 / Quantity 46 piles / Workbook logic: gate: D_PILEDES
- UG-12A-S03-A040: Notes: Front F5 / Line UG-12A / Package UG-12A-S03 / Quantity 80 m wall
- UG-12A-S03-A050: Notes: Front F5 / Line UG-12A / Package UG-12A-S03 / Quantity 65 m / Workbook logic: UG-12A-S04-A060 (FS, negative lag = own duration: drawdown complete when the excavation crew is free)
- UG-12A-S03-A060: Notes: Front F5 / Line UG-12A / Package UG-12A-S03 / Quantity 607 m3 / Workbook logic: UG-05-S04-A100 (FS, deeper first); UG-06-S04-A100 (FS, deeper first); UG-06-S05-A100 (FS, deeper first)
- UG-12A-S03-A070: Notes: Front F5 / Line UG-12A / Package UG-12A-S03 / Quantity 65 m
- UG-12A-S03-A080: Notes: Front F5 / Line UG-12A / Package UG-12A-S03 / Quantity 65 m
- UG-12A-S03-A090: Notes: Front F5 / Line UG-12A / Package UG-12A-S03 / Quantity 65 m
- UG-12A-S03-A100: Notes: Front F5 / Line UG-12A / Package UG-12A-S03 / Quantity 455 m3
- UG-12A-S03-A110: Notes: Front F5 / Line UG-12A / Package UG-12A-S03 / Quantity 80 m wall

| ID | WBS | Activity | Type | Duration | Start | Finish | Predecessors | Free float | Constraint | Text1 | Text2 | Text3 | Text4 | Number1 |
| --- | --- | --- | --- | --- | --- | --- | --- | --- | --- | --- | --- | --- | --- | --- |
|  | UG-12A-S02 | **UG-12A-S02 / HDPE-UG12A-S02-EL015-CH085-(-2.70/-2.63)-70m / Run / Open cut** |  |  | 2026-12-01 | 2027-08-30 |  |  |  |  |  |  |  |  |
| UG-12A-S02-A010 |  | Release: drawings, holds, access and gates | milestone | 0d | 2026-12-01 | 2026-12-01 |  | 68d | start on or after 2026-12-01 | F5 | UG-12A | UG-12A-S02 | A010 |  |
| UG-12A-S02-A020 |  | Set-out, crossing survey and working platform |  | 1d | 2027-02-18 | 2027-02-18 | UG-12A-S02-A010, UG-12A-S03-A030 SS | 9d |  | F5 | UG-12A | UG-12A-S02 | A020 | 69.945804 |
| UG-12A-S02-A030 |  | Pipe-support piling from platform (incl. integrity tests) |  | 10d | 2027-03-02 | 2027-03-13 | UG-12A-S02-A020 SS+1d, UG-12A-S02-A020 FF+2d, UG-12A-S03-A030 | 0d |  | F5 | UG-12A | UG-12A-S02 | A030 | 50 |
| UG-12A-S02-A050 |  | Install dewatering and draw down |  | 9d | 2027-06-26 | 2027-07-05 | UG-12A-S03-A060 FS-9d, UG-12A-S02-A030 SS+3d, UG-12A-S02-A030 SF+5d, UG-12A-S02-A030 FF+2d | 1d |  | F5 | UG-12A | UG-12A-S02 | A050 | 69.945804 |
| UG-12A-S02-A060 |  | Excavate and strut to formation |  | 3d | 2027-07-07 | 2027-07-10 | UG-12A-S02-A050 SS+9d, UG-12A-S02-A050 FF+2d, UG-12A-S03-A060 | 0d |  | F5 | UG-12A | UG-12A-S02 | A060 | 952.931866 |
| UG-12A-S02-A070 |  | Trim piles, blinding and piled slab (incl. cure) |  | 9d | 2027-08-19 | 2027-08-29 | UG-12A-S02-A060 SS+2d, UG-12A-S02-A060 FF+2d, UG-12A-S03-A070 | 0d |  | F5 | UG-12A | UG-12A-S02 | A070 | 69.945804 |
| UG-12A-S02-A080 |  | Lay and joint pipe (incl. fittings, tie-in) |  | 3d | 2027-08-23 | 2027-08-25 | UG-12A-S02-A070 SS+3d, UG-12A-S02-A070 FF+2d, UG-12A-S03-A080 | 0d |  | F5 | UG-12A | UG-12A-S02 | A080 | 69.945804 |
| UG-12A-S02-A090 |  | Surround, joint test and line test |  | 3d | 2027-08-25 | 2027-08-28 | UG-12A-S02-A080 SS+2d, UG-12A-S02-A080 FF+2d | 0d |  | F5 | UG-12A | UG-12A-S02 | A090 | 69.945804 |
| UG-12A-S02-A100 |  | Backfill to NG and remove struts |  | 3d | 2027-08-28 | 2027-08-30 | UG-12A-S02-A090 SS+2d, UG-12A-S02-A090 FF+2d, UG-12A-S03-A100 | 0d |  | F5 | UG-12A | UG-12A-S02 | A100 | 796.884795 |
| UG-12A-S02-A110 |  | Dewatering off, extract sheets, reinstate |  | 1d | 2027-08-29 | 2027-08-29 | UG-12A-S02-A100 SS+2d, UG-12A-S02-A100 FF+2d |  |  | F5 | UG-12A | UG-12A-S02 | A110 | 0 |
|  | UG-12A-S01 | **UG-12A-S01 / HDPE-UG12A-S01-FSTK-EL015-(-2.70/-2.70)-15m / Tie-in / Open cut** |  |  | 2026-12-01 | 2027-09-06 |  |  |  |  |  |  |  |  |
| UG-12A-S01-A010 |  | Release: drawings, holds, access and gates | milestone | 0d | 2026-12-01 | 2026-12-01 |  | 78d | start on or after 2026-12-01 | F5 | UG-12A | UG-12A-S01 | A010 |  |
| UG-12A-S01-A020 |  | Set-out, crossing survey and working platform |  | 1d | 2027-03-02 | 2027-03-02 | UG-12A-S01-A010, UG-12A-S02-A030 SS | 0d |  | F5 | UG-12A | UG-12A-S01 | A020 | 15.254196 |
| UG-12A-S01-A030 |  | Pipe-support piling from platform (incl. integrity tests) |  | 3d | 2027-03-03 | 2027-03-06 | UG-12A-S01-A020 SS+1d, UG-12A-S01-A020 FF+2d | 0d |  | F5 | UG-12A | UG-12A-S01 | A030 | 14 |
| UG-12A-S01-A050 |  | Install dewatering and draw down |  | 8d | 2027-03-06 | 2027-03-14 | UG-12A-S01-A030 SS+2d, UG-12A-S01-A030 SF+4d, UG-12A-S01-A030 FF+2d | 0d |  | F5 | UG-12A | UG-12A-S01 | A050 | 15.254196 |
| UG-12A-S01-A060 |  | Excavate and strut to formation |  | 1d | 2027-03-15 | 2027-03-15 | UG-12A-S01-A050 SS+9d, UG-12A-S01-A050 FF+2d | 0d |  | F5 | UG-12A | UG-12A-S01 | A060 | 214.684895 |
| UG-12A-S01-A070 |  | Trim piles, blinding and piled slab (incl. cure) |  | 5d | 2027-03-16 | 2027-03-21 | UG-12A-S01-A060 SS+1d, UG-12A-S01-A060 FF+2d | 143d |  | F5 | UG-12A | UG-12A-S01 | A070 | 15.254196 |
| UG-12A-S01-A080 |  | Lay and joint pipe (incl. fittings, tie-in) |  | 5d | 2027-09-01 | 2027-09-06 | UG-12A-S01-A070 SS+2d, UG-12A-S01-A070 FF+2d, UG-12A-S02-A080 | 0d |  | F5 | UG-12A | UG-12A-S01 | A080 | 15.254196 |
| UG-12A-S01-A090 |  | Surround, joint test and line test |  | 3d | 2027-09-04 | 2027-09-06 | UG-12A-S01-A080 SS+2d, UG-12A-S01-A080 FF+2d | 0d |  | F5 | UG-12A | UG-12A-S01 | A090 | 15.254196 |
| UG-12A-S01-A100 |  | Backfill to NG and remove struts |  | 1d | 2027-09-05 | 2027-09-05 | UG-12A-S01-A090 SS+2d, UG-12A-S01-A090 FF+2d | 0d |  | F5 | UG-12A | UG-12A-S01 | A100 | 180.653318 |
| UG-12A-S01-A110 |  | Dewatering off, extract sheets, reinstate |  | 1d | 2027-09-06 | 2027-09-06 | UG-12A-S01-A100 SS+1d, UG-12A-S01-A100 FF+2d |  |  | F5 | UG-12A | UG-12A-S01 | A110 | 0 |
|  | UG-12A-S08 | **UG-12A-S08 / HDPE-UG12A-S08-EL011-TEE-(-2.70/-2.69)-5m / Run / Open cut** |  |  | 2026-12-01 | 2027-09-06 |  |  |  |  |  |  |  |  |
| UG-12A-S08-A010 |  | Release: drawings, holds, access and gates | milestone | 0d | 2026-12-01 | 2026-12-01 |  | 78d | start on or after 2026-12-01 | F5 | UG-12A | UG-12A-S08 | A010 |  |
| UG-12A-S08-A020 |  | Set-out, crossing survey and working platform |  | 1d | 2027-03-02 | 2027-03-02 | UG-12A-S08-A010, UG-12A-S02-A030 SS | 9d |  | F5 | UG-12A | UG-12A-S08 | A020 | 5.274393 |
| UG-12A-S08-A030 |  | Pipe-support piling from platform (incl. integrity tests) |  | 2d | 2027-03-14 | 2027-03-15 | UG-12A-S08-A020 SS+1d, UG-12A-S08-A020 FF+2d, UG-12A-S02-A030 | 0d |  | F5 | UG-12A | UG-12A-S08 | A030 | 6 |
| UG-12A-S08-A050 |  | Install dewatering and draw down |  | 8d | 2027-07-01 | 2027-07-10 | UG-12A-S02-A060 FS-8d, UG-12A-S08-A030 SS+1d, UG-12A-S08-A030 SF+3d, UG-12A-S08-A030 FF+2d | 0d |  | F5 | UG-12A | UG-12A-S08 | A050 | 5.274393 |
| UG-12A-S08-A060 |  | Excavate and strut to formation |  | 1d | 2027-07-11 | 2027-07-11 | UG-12A-S08-A050 SS+9d, UG-12A-S08-A050 FF+2d, UG-05-S04-A100, UG-06-S04-A100, UG-12A-S02-A060 | 42d |  | F5 | UG-12A | UG-12A-S08 | A060 | 73.943947 |
| UG-12A-S08-A070 |  | Trim piles, blinding and piled slab (incl. cure) |  | 4d | 2027-08-30 | 2027-09-02 | UG-12A-S08-A060 SS+1d, UG-12A-S08-A060 FF+2d, UG-12A-S02-A070 | 0d |  | F5 | UG-12A | UG-12A-S08 | A070 | 5.274393 |
| UG-12A-S08-A080 |  | Lay and joint pipe (incl. fittings, tie-in) |  | 1d | 2027-09-01 | 2027-09-01 | UG-12A-S08-A070 SS+2d, UG-12A-S08-A070 FF+2d, UG-12A-S02-A080 | 0d |  | F5 | UG-12A | UG-12A-S08 | A080 | 5.274393 |
| UG-12A-S08-A090 |  | Surround, joint test and line test |  | 3d | 2027-09-02 | 2027-09-05 | UG-12A-S08-A080 SS+1d, UG-12A-S08-A080 FF+2d | 0d |  | F5 | UG-12A | UG-12A-S08 | A090 | 5.274393 |
| UG-12A-S08-A100 |  | Backfill to NG and remove struts |  | 1d | 2027-09-05 | 2027-09-05 | UG-12A-S08-A090 SS+2d, UG-12A-S08-A090 FF+2d, UG-12A-S02-A100 | 0d |  | F5 | UG-12A | UG-12A-S08 | A100 | 62.176988 |
| UG-12A-S08-A110 |  | Dewatering off, extract sheets, reinstate |  | 1d | 2027-09-06 | 2027-09-06 | UG-12A-S08-A100 SS+1d, UG-12A-S08-A100 FF+2d |  |  | F5 | UG-12A | UG-12A-S08 | A110 | 0 |

Notes:
- UG-12A-S02-A010: Notes: Front F5 / Line UG-12A / Package UG-12A-S02 / Workbook logic: gates: START, D_DLU
- UG-12A-S02-A020: Notes: Front F5 / Line UG-12A / Package UG-12A-S02 / Quantity 70 m / Workbook logic: FS from A010; UG-12A-S03-A030 (SS, set-out one package ahead of piling)
- UG-12A-S02-A030: Notes: Front F5 / Line UG-12A / Package UG-12A-S02 / Quantity 50 piles / Workbook logic: gate: D_PILEDES
- UG-12A-S02-A050: Notes: Front F5 / Line UG-12A / Package UG-12A-S02 / Quantity 70 m / Workbook logic: UG-12A-S03-A060 (FS, negative lag = own duration: drawdown complete when the excavation crew is free)
- UG-12A-S02-A060: Notes: Front F5 / Line UG-12A / Package UG-12A-S02 / Quantity 953 m3
- UG-12A-S02-A070: Notes: Front F5 / Line UG-12A / Package UG-12A-S02 / Quantity 70 m
- UG-12A-S02-A080: Notes: Front F5 / Line UG-12A / Package UG-12A-S02 / Quantity 70 m
- UG-12A-S02-A090: Notes: Front F5 / Line UG-12A / Package UG-12A-S02 / Quantity 70 m
- UG-12A-S02-A100: Notes: Front F5 / Line UG-12A / Package UG-12A-S02 / Quantity 797 m3
- UG-12A-S02-A110: Notes: Front F5 / Line UG-12A / Package UG-12A-S02 / Quantity 0 m wall
- UG-12A-S01-A010: Notes: Front F5 / Line UG-12A / Package UG-12A-S01 / Workbook logic: gates: START, D_DLU, structure ready
- UG-12A-S01-A020: Notes: Front F5 / Line UG-12A / Package UG-12A-S01 / Quantity 15 m / Workbook logic: FS from A010; UG-12A-S02-A030 (SS, tie-in team follows the adjacent run)
- UG-12A-S01-A030: Notes: Front F5 / Line UG-12A / Package UG-12A-S01 / Quantity 14 piles / Workbook logic: gate: D_PILEDES
- UG-12A-S01-A050: Notes: Front F5 / Line UG-12A / Package UG-12A-S01 / Quantity 15 m
- UG-12A-S01-A060: Notes: Front F5 / Line UG-12A / Package UG-12A-S01 / Quantity 215 m3
- UG-12A-S01-A070: Notes: Front F5 / Line UG-12A / Package UG-12A-S01 / Quantity 15 m
- UG-12A-S01-A080: Notes: Front F5 / Line UG-12A / Package UG-12A-S01 / Quantity 15 m / Workbook logic: UG-12A-S02-A080 (FS, closure)
- UG-12A-S01-A090: Notes: Front F5 / Line UG-12A / Package UG-12A-S01 / Quantity 15 m
- UG-12A-S01-A100: Notes: Front F5 / Line UG-12A / Package UG-12A-S01 / Quantity 181 m3
- UG-12A-S01-A110: Notes: Front F5 / Line UG-12A / Package UG-12A-S01 / Quantity 0 m wall
- UG-12A-S08-A010: Notes: Front F5 / Line UG-12A / Package UG-12A-S08 / Workbook logic: gates: START, D_DLU
- UG-12A-S08-A020: Notes: Front F5 / Line UG-12A / Package UG-12A-S08 / Quantity 5 m / Workbook logic: FS from A010; UG-12A-S02-A030 (SS, set-out one package ahead of piling)
- UG-12A-S08-A030: Notes: Front F5 / Line UG-12A / Package UG-12A-S08 / Quantity 6 piles / Workbook logic: gate: D_PILEDES
- UG-12A-S08-A050: Notes: Front F5 / Line UG-12A / Package UG-12A-S08 / Quantity 5 m / Workbook logic: UG-12A-S02-A060 (FS, negative lag = own duration: drawdown complete when the excavation crew is free)
- UG-12A-S08-A060: Notes: Front F5 / Line UG-12A / Package UG-12A-S08 / Quantity 74 m3 / Workbook logic: UG-05-S04-A100 (FS, deeper first); UG-06-S04-A100 (FS, deeper first)
- UG-12A-S08-A070: Notes: Front F5 / Line UG-12A / Package UG-12A-S08 / Quantity 5 m
- UG-12A-S08-A080: Notes: Front F5 / Line UG-12A / Package UG-12A-S08 / Quantity 5 m
- UG-12A-S08-A090: Notes: Front F5 / Line UG-12A / Package UG-12A-S08 / Quantity 5 m
- UG-12A-S08-A100: Notes: Front F5 / Line UG-12A / Package UG-12A-S08 / Quantity 62 m3
- UG-12A-S08-A110: Notes: Front F5 / Line UG-12A / Package UG-12A-S08 / Quantity 0 m wall

| ID | WBS | Activity | Type | Duration | Start | Finish | Predecessors | Free float | Constraint | Text1 | Text2 | Text3 | Text4 | Number1 |
| --- | --- | --- | --- | --- | --- | --- | --- | --- | --- | --- | --- | --- | --- | --- |
|  | UG-12A-S07 | **UG-12A-S07 / HDPE-UG12A-S07-FSTI-EL011-(-2.70/-2.70)-11m / Tie-in / Open cut** |  |  | 2026-12-01 | 2027-09-11 |  |  |  |  |  |  |  |  |
| UG-12A-S07-A010 |  | Release: drawings, holds, access and gates | milestone | 0d | 2026-12-01 | 2026-12-01 |  | 88d | start on or after 2026-12-01 | F5 | UG-12A | UG-12A-S07 | A010 |  |
| UG-12A-S07-A020 |  | Set-out, crossing survey and working platform |  | 1d | 2027-03-14 | 2027-03-14 | UG-12A-S07-A010, UG-12A-S08-A030 SS | 0d |  | F5 | UG-12A | UG-12A-S07 | A020 | 11.124769 |
| UG-12A-S07-A030 |  | Pipe-support piling from platform (incl. integrity tests) |  | 2d | 2027-03-15 | 2027-03-16 | UG-12A-S07-A020 SS+1d, UG-12A-S07-A020 FF+2d | 0d |  | F5 | UG-12A | UG-12A-S07 | A030 | 10 |
| UG-12A-S07-A050 |  | Install dewatering and draw down |  | 8d | 2027-03-16 | 2027-03-24 | UG-12A-S07-A030 SS+1d, UG-12A-S07-A030 SF+3d, UG-12A-S07-A030 FF+2d | 48d |  | F5 | UG-12A | UG-12A-S07 | A050 | 11.124769 |
| UG-12A-S07-A060 |  | Excavate and strut to formation |  | 1d | 2027-05-22 | 2027-05-22 | UG-12A-S07-A050 SS+9d, UG-12A-S07-A050 FF+2d, UG-06-S04-A100 | 0d |  | F5 | UG-12A | UG-12A-S07 | A060 | 156.636551 |
| UG-12A-S07-A070 |  | Trim piles, blinding and piled slab (incl. cure) |  | 4d | 2027-05-22 | 2027-05-25 | UG-12A-S07-A060 SS+1d, UG-12A-S07-A060 FF+2d | 90d |  | F5 | UG-12A | UG-12A-S07 | A070 | 11.124769 |
| UG-12A-S07-A080 |  | Lay and joint pipe (incl. fittings, tie-in) |  | 5d | 2027-09-06 | 2027-09-11 | UG-12A-S07-A070 SS+2d, UG-12A-S07-A070 FF+2d, UG-12A-S08-A080 | 0d |  | F5 | UG-12A | UG-12A-S07 | A080 | 11.124769 |
| UG-12A-S07-A090 |  | Surround, joint test and line test |  | 3d | 2027-09-08 | 2027-09-11 | UG-12A-S07-A080 SS+2d, UG-12A-S07-A080 FF+2d | 0d |  | F5 | UG-12A | UG-12A-S07 | A090 | 11.124769 |
| UG-12A-S07-A100 |  | Backfill to NG and remove struts |  | 1d | 2027-09-11 | 2027-09-11 | UG-12A-S07-A090 SS+2d, UG-12A-S07-A090 FF+2d | 0d |  | F5 | UG-12A | UG-12A-S07 | A100 | 131.81755 |
| UG-12A-S07-A110 |  | Dewatering off, extract sheets, reinstate |  | 1d | 2027-09-11 | 2027-09-11 | UG-12A-S07-A100 SS+1d, UG-12A-S07-A100 FF+2d |  |  | F5 | UG-12A | UG-12A-S07 | A110 | 0 |
|  | UG-12A-S09 | **UG-12A-S09 / HDPE-UG12A-S09-FSTJ-CH006-(-2.63/-2.63)-6m / Tie-in / Open cut** |  |  | 2026-12-01 | 2027-07-19 |  |  |  |  |  |  |  |  |
| UG-12A-S09-A010 |  | Release: drawings, holds, access and gates | milestone | 0d | 2026-12-01 | 2026-12-01 |  | 42d | start on or after 2026-12-01 | F5 | UG-12A | UG-12A-S09 | A010 |  |
| UG-12A-S09-A020 |  | Set-out, crossing survey and working platform |  | 1d | 2027-01-19 | 2027-01-19 | UG-12A-S09-A010, UG-12A-S10-A030 SS | 0d |  | F5 | UG-12A | UG-12A-S09 | A020 | 6 |
| UG-12A-S09-A030 |  | Pipe-support piling from platform (incl. integrity tests) |  | 2d | 2027-01-20 | 2027-01-21 | UG-12A-S09-A020 SS+1d, UG-12A-S09-A020 FF+2d | 0d |  | F5 | UG-12A | UG-12A-S09 | A030 | 8 |
| UG-12A-S09-A050 |  | Install dewatering and draw down |  | 8d | 2027-01-21 | 2027-01-30 | UG-12A-S09-A030 SS+1d, UG-12A-S09-A030 SF+3d, UG-12A-S09-A030 FF+2d | 122d |  | F5 | UG-12A | UG-12A-S09 | A050 | 6 |
| UG-12A-S09-A060 |  | Excavate and strut to formation |  | 1d | 2027-06-23 | 2027-06-23 | UG-12A-S09-A050 SS+9d, UG-12A-S09-A050 FF+2d, UG-13A-S15-A100 | 0d |  | F5 | UG-12A | UG-12A-S09 | A060 | 80.135686 |
| UG-12A-S09-A070 |  | Trim piles, blinding and piled slab (incl. cure) |  | 4d | 2027-06-24 | 2027-06-28 | UG-12A-S09-A060 SS+1d, UG-12A-S09-A060 FF+2d | 15d |  | F5 | UG-12A | UG-12A-S09 | A070 | 6 |
| UG-12A-S09-A080 |  | Lay and joint pipe (incl. fittings, tie-in) |  | 4d | 2027-07-14 | 2027-07-18 | UG-12A-S09-A070 SS+2d, UG-12A-S09-A070 FF+2d, UG-12A-S10-A080 | 0d |  | F5 | UG-12A | UG-12A-S09 | A080 | 6 |
| UG-12A-S09-A090 |  | Surround, joint test and line test |  | 3d | 2027-07-17 | 2027-07-19 | UG-12A-S09-A080 SS+2d, UG-12A-S09-A080 FF+2d | 0d |  | F5 | UG-12A | UG-12A-S09 | A090 | 6 |
| UG-12A-S09-A100 |  | Backfill to NG and remove struts |  | 1d | 2027-07-18 | 2027-07-18 | UG-12A-S09-A090 SS+2d, UG-12A-S09-A090 FF+2d | 0d |  | F5 | UG-12A | UG-12A-S09 | A100 | 66.749879 |
| UG-12A-S09-A110 |  | Dewatering off, extract sheets, reinstate |  | 1d | 2027-07-19 | 2027-07-19 | UG-12A-S09-A100 SS+1d, UG-12A-S09-A100 FF+2d |  |  | F5 | UG-12A | UG-12A-S09 | A110 | 0 |
|  | UG-12A-S11 | **UG-12A-S11 / HDPE-UG12A-S11-FSTL-CH006-(-2.64/-2.64)-6m / Tie-in / Open cut** |  |  | 2026-12-01 | 2027-07-12 |  |  |  |  |  |  |  |  |
| UG-12A-S11-A010 |  | Release: drawings, holds, access and gates | milestone | 0d | 2026-12-01 | 2026-12-01 |  | 39d | start on or after 2026-12-01 | F5 | UG-12A | UG-12A-S11 | A010 |  |
| UG-12A-S11-A020 |  | Set-out, crossing survey and working platform |  | 1d | 2027-01-16 | 2027-01-16 | UG-12A-S11-A010, UG-12A-S12-A030 SS | 0d |  | F5 | UG-12A | UG-12A-S11 | A020 | 6 |
| UG-12A-S11-A030 |  | Pipe-support piling from platform (incl. integrity tests) |  | 2d | 2027-01-17 | 2027-01-18 | UG-12A-S11-A020 SS+1d, UG-12A-S11-A020 FF+2d | 0d |  | F5 | UG-12A | UG-12A-S11 | A030 | 6 |
| UG-12A-S11-A050 |  | Install dewatering and draw down |  | 8d | 2027-01-18 | 2027-01-26 | UG-12A-S11-A030 SS+1d, UG-12A-S11-A030 SF+3d, UG-12A-S11-A030 FF+2d | 0d |  | F5 | UG-12A | UG-12A-S11 | A050 | 6 |
| UG-12A-S11-A060 |  | Excavate and strut to formation |  | 1d | 2027-01-28 | 2027-01-28 | UG-12A-S11-A050 SS+9d, UG-12A-S11-A050 FF+2d, UG-13-S03-A100 | 0d |  | F5 | UG-12A | UG-12A-S11 | A060 | 80.712206 |
| UG-12A-S11-A070 |  | Trim piles, blinding and piled slab (incl. cure) |  | 4d | 2027-01-30 | 2027-02-02 | UG-12A-S11-A060 SS+1d, UG-12A-S11-A060 FF+2d | 134d |  | F5 | UG-12A | UG-12A-S11 | A070 | 6 |
| UG-12A-S11-A080 |  | Lay and joint pipe (incl. fittings, tie-in) |  | 4d | 2027-07-07 | 2027-07-11 | UG-12A-S11-A070 SS+2d, UG-12A-S11-A070 FF+2d, UG-12A-S12-A080 | 0d |  | F5 | UG-12A | UG-12A-S11 | A080 | 6 |
| UG-12A-S11-A090 |  | Surround, joint test and line test |  | 3d | 2027-07-10 | 2027-07-12 | UG-12A-S11-A080 SS+2d, UG-12A-S11-A080 FF+2d | 0d |  | F5 | UG-12A | UG-12A-S11 | A090 | 6 |
| UG-12A-S11-A100 |  | Backfill to NG and remove struts |  | 1d | 2027-07-11 | 2027-07-11 | UG-12A-S11-A090 SS+2d, UG-12A-S11-A090 FF+2d | 0d |  | F5 | UG-12A | UG-12A-S11 | A100 | 67.326393 |
| UG-12A-S11-A110 |  | Dewatering off, extract sheets, reinstate |  | 1d | 2027-07-12 | 2027-07-12 | UG-12A-S11-A100 SS+1d, UG-12A-S11-A100 FF+2d |  |  | F5 | UG-12A | UG-12A-S11 | A110 | 0 |

Notes:
- UG-12A-S07-A010: Notes: Front F5 / Line UG-12A / Package UG-12A-S07 / Workbook logic: gates: START, D_DLU, structure ready
- UG-12A-S07-A020: Notes: Front F5 / Line UG-12A / Package UG-12A-S07 / Quantity 11 m / Workbook logic: FS from A010; UG-12A-S08-A030 (SS, tie-in team follows the adjacent run)
- UG-12A-S07-A030: Notes: Front F5 / Line UG-12A / Package UG-12A-S07 / Quantity 10 piles / Workbook logic: gate: D_PILEDES
- UG-12A-S07-A050: Notes: Front F5 / Line UG-12A / Package UG-12A-S07 / Quantity 11 m
- UG-12A-S07-A060: Notes: Front F5 / Line UG-12A / Package UG-12A-S07 / Quantity 157 m3 / Workbook logic: UG-06-S04-A100 (FS, deeper first)
- UG-12A-S07-A070: Notes: Front F5 / Line UG-12A / Package UG-12A-S07 / Quantity 11 m
- UG-12A-S07-A080: Notes: Front F5 / Line UG-12A / Package UG-12A-S07 / Quantity 11 m / Workbook logic: UG-12A-S08-A080 (FS, closure)
- UG-12A-S07-A090: Notes: Front F5 / Line UG-12A / Package UG-12A-S07 / Quantity 11 m
- UG-12A-S07-A100: Notes: Front F5 / Line UG-12A / Package UG-12A-S07 / Quantity 132 m3
- UG-12A-S07-A110: Notes: Front F5 / Line UG-12A / Package UG-12A-S07 / Quantity 0 m wall
- UG-12A-S09-A010: Notes: Front F5 / Line UG-12A / Package UG-12A-S09 / Workbook logic: gates: START, D_DLU, structure ready
- UG-12A-S09-A020: Notes: Front F5 / Line UG-12A / Package UG-12A-S09 / Quantity 6 m / Workbook logic: FS from A010; UG-12A-S10-A030 (SS, tie-in team follows the adjacent run)
- UG-12A-S09-A030: Notes: Front F5 / Line UG-12A / Package UG-12A-S09 / Quantity 8 piles / Workbook logic: gate: D_PILEDES
- UG-12A-S09-A050: Notes: Front F5 / Line UG-12A / Package UG-12A-S09 / Quantity 6 m
- UG-12A-S09-A060: Notes: Front F5 / Line UG-12A / Package UG-12A-S09 / Quantity 80 m3 / Workbook logic: UG-13A-S15-A100 (FS, deeper first)
- UG-12A-S09-A070: Notes: Front F5 / Line UG-12A / Package UG-12A-S09 / Quantity 6 m
- UG-12A-S09-A080: Notes: Front F5 / Line UG-12A / Package UG-12A-S09 / Quantity 6 m / Workbook logic: UG-12A-S10-A080 (FS, closure)
- UG-12A-S09-A090: Notes: Front F5 / Line UG-12A / Package UG-12A-S09 / Quantity 6 m
- UG-12A-S09-A100: Notes: Front F5 / Line UG-12A / Package UG-12A-S09 / Quantity 67 m3
- UG-12A-S09-A110: Notes: Front F5 / Line UG-12A / Package UG-12A-S09 / Quantity 0 m wall
- UG-12A-S11-A010: Notes: Front F5 / Line UG-12A / Package UG-12A-S11 / Workbook logic: gates: START, D_DLU, structure ready
- UG-12A-S11-A020: Notes: Front F5 / Line UG-12A / Package UG-12A-S11 / Quantity 6 m / Workbook logic: FS from A010; UG-12A-S12-A030 (SS, tie-in team follows the adjacent run)
- UG-12A-S11-A030: Notes: Front F5 / Line UG-12A / Package UG-12A-S11 / Quantity 6 piles / Workbook logic: gate: D_PILEDES
- UG-12A-S11-A050: Notes: Front F5 / Line UG-12A / Package UG-12A-S11 / Quantity 6 m
- UG-12A-S11-A060: Notes: Front F5 / Line UG-12A / Package UG-12A-S11 / Quantity 81 m3 / Workbook logic: UG-13-S03-A100 (FS, deeper first)
- UG-12A-S11-A070: Notes: Front F5 / Line UG-12A / Package UG-12A-S11 / Quantity 6 m
- UG-12A-S11-A080: Notes: Front F5 / Line UG-12A / Package UG-12A-S11 / Quantity 6 m / Workbook logic: UG-12A-S12-A080 (FS, closure)
- UG-12A-S11-A090: Notes: Front F5 / Line UG-12A / Package UG-12A-S11 / Quantity 6 m
- UG-12A-S11-A100: Notes: Front F5 / Line UG-12A / Package UG-12A-S11 / Quantity 67 m3
- UG-12A-S11-A110: Notes: Front F5 / Line UG-12A / Package UG-12A-S11 / Quantity 0 m wall

| ID | WBS | Activity | Type | Duration | Start | Finish | Predecessors | Free float | Constraint | Text1 | Text2 | Text3 | Text4 | Number1 |
| --- | --- | --- | --- | --- | --- | --- | --- | --- | --- | --- | --- | --- | --- | --- |
|  | F6 | **F6 Sludge A-D,G,H to RAS/WAS + UG-23** |  |  | 2026-12-01 | 2027-08-04 |  |  |  |  |  |  |  |  |
|  | UG-11 | **UG-11** |  |  | 2026-12-01 | 2027-02-03 |  |  |  |  |  |  |  |  |
|  | UG-11-S02 | **UG-11-S02 / GRP-UG11-S02-CH037-RASPS-(-4.62/-4.30)-26m / Run / Sheet piles** |  |  | 2026-12-01 | 2027-01-07 |  |  |  |  |  |  |  |  |
| UG-11-S02-A010 |  | Release: drawings, holds, access and gates | milestone | 0d | 2026-12-01 | 2026-12-01 |  | 0d | start on or after 2026-12-01 | F6 | UG-11 | UG-11-S02 | A010 |  |
| UG-11-S02-A020 |  | Set-out, crossing survey and working platform |  | 1d | 2026-12-01 | 2026-12-01 | UG-11-S02-A010 | 0d |  | F6 | UG-11 | UG-11-S02 | A020 | 26.246039 |
| UG-11-S02-A030 |  | Pipe-support piling from platform (incl. integrity tests) |  | 4d | 2026-12-02 | 2026-12-06 | UG-11-S02-A020 SS+1d, UG-11-S02-A020 FF+2d | 0d |  | F6 | UG-11 | UG-11-S02 | A030 | 20 |
| UG-11-S02-A040 |  | Install sheet piles (shored lengths) |  | 3d | 2026-12-05 | 2026-12-07 | UG-11-S02-A030 SS+2d, UG-11-S02-A030 FF+2d | 0d |  | F6 | UG-11 | UG-11-S02 | A040 | 52.492078 |
| UG-11-S02-A050 |  | Install dewatering and draw down |  | 8d | 2026-12-06 | 2026-12-14 | UG-11-S02-A040 SS+2d, UG-11-S02-A040 FF+2d | 0d |  | F6 | UG-11 | UG-11-S02 | A050 | 26.246039 |
| UG-11-S02-A060 |  | Excavate and strut to formation |  | 2d | 2026-12-16 | 2026-12-17 | UG-11-S02-A050 SS+9d, UG-11-S02-A050 FF+2d | 0d |  | F6 | UG-11 | UG-11-S02 | A060 | 384.347961 |
| UG-11-S02-A070 |  | Trim piles, blinding and piled slab (incl. cure) |  | 6d | 2026-12-17 | 2026-12-23 | UG-11-S02-A060 SS+1d, UG-11-S02-A060 FF+2d | 0d |  | F6 | UG-11 | UG-11-S02 | A070 | 26.246039 |
| UG-11-S02-A080 |  | Lay and joint pipe (incl. fittings, tie-in) |  | 4d | 2026-12-20 | 2026-12-23 | UG-11-S02-A070 SS+3d, UG-11-S02-A070 FF+2d | 0d |  | F6 | UG-11 | UG-11-S02 | A080 | 26.246039 |
| UG-11-S02-A090 |  | Surround, joint test and line test |  | 3d | 2026-12-22 | 2026-12-24 | UG-11-S02-A080 SS+2d, UG-11-S02-A080 FF+2d | 7d |  | F6 | UG-11 | UG-11-S02 | A090 | 26.246039 |
| UG-11-S02-A100 |  | Backfill to NG and remove struts |  | 1d | 2027-01-04 | 2027-01-04 | UG-11-S02-A090 SS+2d, UG-11-S02-A090 FF+2d, UG-11A-S05-A080 | 0d |  | F6 | UG-11 | UG-11-S02 | A100 | 275.823395 |
| UG-11-S02-A110 |  | Dewatering off, extract sheets, reinstate |  | 3d | 2027-01-05 | 2027-01-07 | UG-11-S02-A100 SS+1d, UG-11-S02-A100 FF+2d |  |  | F6 | UG-11 | UG-11-S02 | A110 | 52.492078 |
|  | UG-11-S06 | **UG-11-S06 / GRP-UG11-S06-CH082-RASPS-(-7.59/-7.07)-43m / Run / Sheet piles** |  |  | 2026-12-01 | 2027-01-13 |  |  |  |  |  |  |  |  |
| UG-11-S06-A010 |  | Release: drawings, holds, access and gates | milestone | 0d | 2026-12-01 | 2026-12-01 |  | 5d | start on or after 2026-12-01 | F6 | UG-11 | UG-11-S06 | A010 |  |
| UG-11-S06-A020 |  | Set-out, crossing survey and working platform |  | 1d | 2026-12-07 | 2026-12-07 | UG-11-S06-A010, UG-11A-S05-A030 SS | 5d |  | F6 | UG-11 | UG-11-S06 | A020 | 43.204196 |
| UG-11-S06-A030 |  | Pipe-support piling from platform (incl. integrity tests) |  | 7d | 2026-12-14 | 2026-12-21 | UG-11-S06-A020 SS+1d, UG-11-S06-A020 FF+2d, UG-11A-S05-A030 | 0d |  | F6 | UG-11 | UG-11-S06 | A030 | 32 |
| UG-11-S06-A040 |  | Install sheet piles (shored lengths) |  | 4d | 2026-12-17 | 2026-12-21 | UG-11-S06-A030 SS+3d, UG-11-S06-A030 FF+2d, UG-11A-S05-A040 | 0d |  | F6 | UG-11 | UG-11-S06 | A040 | 86.408393 |
| UG-11-S06-A050 |  | Install dewatering and draw down |  | 9d | 2026-12-19 | 2026-12-28 | UG-11-S06-A040 SS+2d, UG-11-S06-A040 FF+2d, UG-11A-S05-A060 FS-9d | 0d |  | F6 | UG-11 | UG-11-S06 | A050 | 43.204196 |
| UG-11-S06-A060 |  | Excavate and strut to formation |  | 5d | 2026-12-29 | 2027-01-03 | UG-11-S06-A050 SS+9d, UG-11-S06-A050 FF+2d, UG-11A-S05-A060 | 1d |  | F6 | UG-11 | UG-11-S06 | A060 | 1210.823767 |
| UG-11-S06-A070 |  | Trim piles, blinding and piled slab (incl. cure) |  | 7d | 2027-01-02 | 2027-01-09 | UG-11-S06-A060 SS+2d, UG-11-S06-A060 FF+2d, UG-11A-S05-A070 | 0d |  | F6 | UG-11 | UG-11-S06 | A070 | 43.204196 |
| UG-11-S06-A080 |  | Lay and joint pipe (incl. fittings, tie-in) |  | 3d | 2027-01-05 | 2027-01-07 | UG-11-S06-A070 SS+3d, UG-11-S06-A070 FF+2d, UG-11A-S05-A080 | 0d |  | F6 | UG-11 | UG-11-S06 | A080 | 43.204196 |
| UG-11-S06-A090 |  | Surround, joint test and line test |  | 3d | 2027-01-07 | 2027-01-10 | UG-11-S06-A080 SS+2d, UG-11-S06-A080 FF+2d | 0d |  | F6 | UG-11 | UG-11-S06 | A090 | 43.204196 |
| UG-11-S06-A100 |  | Backfill to NG and remove struts |  | 3d | 2027-01-09 | 2027-01-11 | UG-11-S06-A090 SS+2d, UG-11-S06-A090 FF+2d, UG-11A-S05-A100 | 0d |  | F6 | UG-11 | UG-11-S06 | A100 | 999.954872 |
| UG-11-S06-A110 |  | Dewatering off, extract sheets, reinstate |  | 3d | 2027-01-11 | 2027-01-13 | UG-11-S06-A100 SS+2d, UG-11-S06-A100 FF+2d |  |  | F6 | UG-11 | UG-11-S06 | A110 | 86.408393 |

Notes:
- UG-11-S02-A010: Notes: Front F6 / Line UG-11 / Package UG-11-S02 / Workbook logic: gates: START, D_DLU
- UG-11-S02-A020: Notes: Front F6 / Line UG-11 / Package UG-11-S02 / Quantity 26 m / Workbook logic: FS from A010
- UG-11-S02-A030: Notes: Front F6 / Line UG-11 / Package UG-11-S02 / Quantity 20 piles / Workbook logic: gate: D_PILEDES
- UG-11-S02-A040: Notes: Front F6 / Line UG-11 / Package UG-11-S02 / Quantity 52 m wall
- UG-11-S02-A050: Notes: Front F6 / Line UG-11 / Package UG-11-S02 / Quantity 26 m
- UG-11-S02-A060: Notes: Front F6 / Line UG-11 / Package UG-11-S02 / Quantity 384 m3
- UG-11-S02-A070: Notes: Front F6 / Line UG-11 / Package UG-11-S02 / Quantity 26 m
- UG-11-S02-A080: Notes: Front F6 / Line UG-11 / Package UG-11-S02 / Quantity 26 m
- UG-11-S02-A090: Notes: Front F6 / Line UG-11 / Package UG-11-S02 / Quantity 26 m
- UG-11-S02-A100: Notes: Front F6 / Line UG-11 / Package UG-11-S02 / Quantity 276 m3 / Workbook logic: UG-11A-S05-A080 (FS, shared trench laid)
- UG-11-S02-A110: Notes: Front F6 / Line UG-11 / Package UG-11-S02 / Quantity 52 m wall
- UG-11-S06-A010: Notes: Front F6 / Line UG-11 / Package UG-11-S06 / Workbook logic: gates: START, D_DLU
- UG-11-S06-A020: Notes: Front F6 / Line UG-11 / Package UG-11-S06 / Quantity 43 m / Workbook logic: FS from A010; UG-11A-S05-A030 (SS, set-out one package ahead of piling)
- UG-11-S06-A030: Notes: Front F6 / Line UG-11 / Package UG-11-S06 / Quantity 32 piles / Workbook logic: gate: D_PILEDES
- UG-11-S06-A040: Notes: Front F6 / Line UG-11 / Package UG-11-S06 / Quantity 86 m wall
- UG-11-S06-A050: Notes: Front F6 / Line UG-11 / Package UG-11-S06 / Quantity 43 m / Workbook logic: UG-11A-S05-A060 (FS, negative lag = own duration: drawdown complete when the excavation crew is free)
- UG-11-S06-A060: Notes: Front F6 / Line UG-11 / Package UG-11-S06 / Quantity 1,211 m3
- UG-11-S06-A070: Notes: Front F6 / Line UG-11 / Package UG-11-S06 / Quantity 43 m
- UG-11-S06-A080: Notes: Front F6 / Line UG-11 / Package UG-11-S06 / Quantity 43 m
- UG-11-S06-A090: Notes: Front F6 / Line UG-11 / Package UG-11-S06 / Quantity 43 m
- UG-11-S06-A100: Notes: Front F6 / Line UG-11 / Package UG-11-S06 / Quantity 1,000 m3
- UG-11-S06-A110: Notes: Front F6 / Line UG-11 / Package UG-11-S06 / Quantity 86 m wall

| ID | WBS | Activity | Type | Duration | Start | Finish | Predecessors | Free float | Constraint | Text1 | Text2 | Text3 | Text4 | Number1 |
| --- | --- | --- | --- | --- | --- | --- | --- | --- | --- | --- | --- | --- | --- | --- |
|  | UG-11-S05 | **UG-11-S05 / GRP-UG11-S05-CH041-CH082-(-7.58/-7.59)-41m / Run / Sheet piles** |  |  | 2026-12-01 | 2027-01-23 |  |  |  |  |  |  |  |  |
| UG-11-S05-A010 |  | Release: drawings, holds, access and gates | milestone | 0d | 2026-12-01 | 2026-12-01 |  | 11d | start on or after 2026-12-01 | F6 | UG-11 | UG-11-S05 | A010 |  |
| UG-11-S05-A020 |  | Set-out, crossing survey and working platform |  | 1d | 2026-12-14 | 2026-12-14 | UG-11-S05-A010, UG-11-S06-A030 SS | 7d |  | F6 | UG-11 | UG-11-S05 | A020 | 41.3 |
| UG-11-S05-A030 |  | Pipe-support piling from platform (incl. integrity tests) |  | 6d | 2026-12-23 | 2026-12-29 | UG-11-S05-A020 SS+1d, UG-11-S05-A020 FF+2d, UG-11-S06-A030 | 0d |  | F6 | UG-11 | UG-11-S05 | A030 | 30 |
| UG-11-S05-A040 |  | Install sheet piles (shored lengths) |  | 4d | 2026-12-26 | 2026-12-29 | UG-11-S05-A030 SS+3d, UG-11-S05-A030 FF+2d, UG-11-S06-A040 | 0d |  | F6 | UG-11 | UG-11-S05 | A040 | 82.6 |
| UG-11-S05-A050 |  | Install dewatering and draw down |  | 9d | 2026-12-28 | 2027-01-06 | UG-11-S05-A040 SS+2d, UG-11-S05-A040 FF+2d, UG-11-S06-A060 FS-9d | 0d |  | F6 | UG-11 | UG-11-S05 | A050 | 41.3 |
| UG-11-S05-A060 |  | Excavate and strut to formation |  | 5d | 2027-01-07 | 2027-01-12 | UG-11-S05-A050 SS+9d, UG-11-S05-A050 FF+2d, UG-11-S06-A060 | 0d |  | F6 | UG-11 | UG-11-S05 | A060 | 1102.998719 |
| UG-11-S05-A070 |  | Trim piles, blinding and piled slab (incl. cure) |  | 7d | 2027-01-11 | 2027-01-18 | UG-11-S05-A060 SS+2d, UG-11-S05-A060 FF+2d, UG-11-S06-A070 | 0d |  | F6 | UG-11 | UG-11-S05 | A070 | 41.3 |
| UG-11-S05-A080 |  | Lay and joint pipe (incl. fittings, tie-in) |  | 5d | 2027-01-14 | 2027-01-19 | UG-11-S05-A070 SS+3d, UG-11-S05-A070 FF+2d, UG-11-S06-A080 | 0d |  | F6 | UG-11 | UG-11-S05 | A080 | 41.3 |
| UG-11-S05-A090 |  | Surround, joint test and line test |  | 3d | 2027-01-16 | 2027-01-18 | UG-11-S05-A080 SS+2d, UG-11-S05-A080 FF+2d | 0d |  | F6 | UG-11 | UG-11-S05 | A090 | 41.3 |
| UG-11-S05-A100 |  | Backfill to NG and remove struts |  | 3d | 2027-01-18 | 2027-01-20 | UG-11-S05-A090 SS+2d, UG-11-S05-A090 FF+2d, UG-11-S06-A100 | 0d |  | F6 | UG-11 | UG-11-S05 | A100 | 919.685085 |
| UG-11-S05-A110 |  | Dewatering off, extract sheets, reinstate |  | 3d | 2027-01-20 | 2027-01-23 | UG-11-S05-A100 SS+2d, UG-11-S05-A100 FF+2d |  |  | F6 | UG-11 | UG-11-S05 | A110 | 82.6 |
|  | UG-11-S04 | **UG-11-S04 / GRP-UG11-S04-CH023-CH041-(-7.58/-7.58)-18m / Run / Sheet piles** |  |  | 2026-12-01 | 2027-01-28 |  |  |  |  |  |  |  |  |
| UG-11-S04-A010 |  | Release: drawings, holds, access and gates | milestone | 0d | 2026-12-01 | 2026-12-01 |  | 19d | start on or after 2026-12-01 | F6 | UG-11 | UG-11-S04 | A010 |  |
| UG-11-S04-A020 |  | Set-out, crossing survey and working platform |  | 1d | 2026-12-23 | 2026-12-23 | UG-11-S04-A010, UG-11-S05-A030 SS | 5d |  | F6 | UG-11 | UG-11-S04 | A020 | 18.1 |
| UG-11-S04-A030 |  | Pipe-support piling from platform (incl. integrity tests) |  | 4d | 2026-12-30 | 2027-01-03 | UG-11-S04-A020 SS+1d, UG-11-S04-A020 FF+2d, UG-11-S05-A030 | 0d |  | F6 | UG-11 | UG-11-S04 | A030 | 16 |
| UG-11-S04-A040 |  | Install sheet piles (shored lengths) |  | 2d | 2027-01-02 | 2027-01-03 | UG-11-S04-A030 SS+2d, UG-11-S04-A030 FF+2d, UG-11-S05-A040 | 0d |  | F6 | UG-11 | UG-11-S04 | A040 | 36.2 |
| UG-11-S04-A050 |  | Install dewatering and draw down |  | 8d | 2027-01-03 | 2027-01-11 | UG-11-S04-A040 SS+1d, UG-11-S04-A040 FF+2d, UG-11-S05-A060 FS-8d | 0d |  | F6 | UG-11 | UG-11-S04 | A050 | 18.1 |
| UG-11-S04-A060 |  | Excavate and strut to formation |  | 3d | 2027-01-13 | 2027-01-16 | UG-11-S04-A050 SS+9d, UG-11-S04-A050 FF+2d, UG-11-S05-A060 | 0d |  | F6 | UG-11 | UG-11-S04 | A060 | 506.878885 |
| UG-11-S04-A070 |  | Trim piles, blinding and piled slab (incl. cure) |  | 5d | 2027-01-20 | 2027-01-25 | UG-11-S04-A060 SS+2d, UG-11-S04-A060 FF+2d, UG-11-S05-A070 | 0d |  | F6 | UG-11 | UG-11-S04 | A070 | 18.1 |
| UG-11-S04-A080 |  | Lay and joint pipe (incl. fittings, tie-in) |  | 1d | 2027-01-23 | 2027-01-23 | UG-11-S04-A070 SS+2d, UG-11-S04-A070 FF+2d, UG-11-S05-A080 | 0d |  | F6 | UG-11 | UG-11-S04 | A080 | 18.1 |
| UG-11-S04-A090 |  | Surround, joint test and line test |  | 3d | 2027-01-23 | 2027-01-25 | UG-11-S04-A080 SS+1d, UG-11-S04-A080 FF+2d | 0d |  | F6 | UG-11 | UG-11-S04 | A090 | 18.1 |
| UG-11-S04-A100 |  | Backfill to NG and remove struts |  | 2d | 2027-01-26 | 2027-01-27 | UG-11-S04-A090 SS+2d, UG-11-S04-A090 FF+2d, UG-11-S05-A100 | 0d |  | F6 | UG-11 | UG-11-S04 | A100 | 418.209662 |
| UG-11-S04-A110 |  | Dewatering off, extract sheets, reinstate |  | 2d | 2027-01-27 | 2027-01-28 | UG-11-S04-A100 SS+1d, UG-11-S04-A100 FF+2d |  |  | F6 | UG-11 | UG-11-S04 | A110 | 36.2 |

Notes:
- UG-11-S05-A010: Notes: Front F6 / Line UG-11 / Package UG-11-S05 / Workbook logic: gates: START, D_DLU
- UG-11-S05-A020: Notes: Front F6 / Line UG-11 / Package UG-11-S05 / Quantity 41 m / Workbook logic: FS from A010; UG-11-S06-A030 (SS, set-out one package ahead of piling)
- UG-11-S05-A030: Notes: Front F6 / Line UG-11 / Package UG-11-S05 / Quantity 30 piles / Workbook logic: gate: D_PILEDES
- UG-11-S05-A040: Notes: Front F6 / Line UG-11 / Package UG-11-S05 / Quantity 83 m wall
- UG-11-S05-A050: Notes: Front F6 / Line UG-11 / Package UG-11-S05 / Quantity 41 m / Workbook logic: UG-11-S06-A060 (FS, negative lag = own duration: drawdown complete when the excavation crew is free)
- UG-11-S05-A060: Notes: Front F6 / Line UG-11 / Package UG-11-S05 / Quantity 1,103 m3
- UG-11-S05-A070: Notes: Front F6 / Line UG-11 / Package UG-11-S05 / Quantity 41 m
- UG-11-S05-A080: Notes: Front F6 / Line UG-11 / Package UG-11-S05 / Quantity 41 m
- UG-11-S05-A090: Notes: Front F6 / Line UG-11 / Package UG-11-S05 / Quantity 41 m
- UG-11-S05-A100: Notes: Front F6 / Line UG-11 / Package UG-11-S05 / Quantity 920 m3
- UG-11-S05-A110: Notes: Front F6 / Line UG-11 / Package UG-11-S05 / Quantity 83 m wall
- UG-11-S04-A010: Notes: Front F6 / Line UG-11 / Package UG-11-S04 / Workbook logic: gates: START, D_DLU
- UG-11-S04-A020: Notes: Front F6 / Line UG-11 / Package UG-11-S04 / Quantity 18 m / Workbook logic: FS from A010; UG-11-S05-A030 (SS, set-out one package ahead of piling)
- UG-11-S04-A030: Notes: Front F6 / Line UG-11 / Package UG-11-S04 / Quantity 16 piles / Workbook logic: gate: D_PILEDES
- UG-11-S04-A040: Notes: Front F6 / Line UG-11 / Package UG-11-S04 / Quantity 36 m wall
- UG-11-S04-A050: Notes: Front F6 / Line UG-11 / Package UG-11-S04 / Quantity 18 m / Workbook logic: UG-11-S05-A060 (FS, negative lag = own duration: drawdown complete when the excavation crew is free)
- UG-11-S04-A060: Notes: Front F6 / Line UG-11 / Package UG-11-S04 / Quantity 507 m3
- UG-11-S04-A070: Notes: Front F6 / Line UG-11 / Package UG-11-S04 / Quantity 18 m
- UG-11-S04-A080: Notes: Front F6 / Line UG-11 / Package UG-11-S04 / Quantity 18 m
- UG-11-S04-A090: Notes: Front F6 / Line UG-11 / Package UG-11-S04 / Quantity 18 m
- UG-11-S04-A100: Notes: Front F6 / Line UG-11 / Package UG-11-S04 / Quantity 418 m3
- UG-11-S04-A110: Notes: Front F6 / Line UG-11 / Package UG-11-S04 / Quantity 36 m wall

| ID | WBS | Activity | Type | Duration | Start | Finish | Predecessors | Free float | Constraint | Text1 | Text2 | Text3 | Text4 | Number1 |
| --- | --- | --- | --- | --- | --- | --- | --- | --- | --- | --- | --- | --- | --- | --- |
|  | UG-11-S03 | **UG-11-S03 / GRP-UG11-S03-FSTA-CH023-(-7.57/-7.58)-23m / Run / Sheet piles** |  |  | 2026-12-01 | 2027-02-03 |  |  |  |  |  |  |  |  |
| UG-11-S03-A010 |  | Release: drawings, holds, access and gates | milestone | 0d | 2026-12-01 | 2026-12-01 |  | 25d | start on or after 2026-12-01 | F6 | UG-11 | UG-11-S03 | A010 |  |
| UG-11-S03-A020 |  | Set-out, crossing survey and working platform |  | 1d | 2026-12-30 | 2026-12-30 | UG-11-S03-A010, UG-11-S04-A030 SS | 3d |  | F6 | UG-11 | UG-11-S03 | A020 | 23.1 |
| UG-11-S03-A030 |  | Pipe-support piling from platform (incl. integrity tests) |  | 4d | 2027-01-04 | 2027-01-07 | UG-11-S03-A020 SS+1d, UG-11-S03-A020 FF+2d, UG-11-S04-A030 | 0d |  | F6 | UG-11 | UG-11-S03 | A030 | 18 |
| UG-11-S03-A040 |  | Install sheet piles (shored lengths) |  | 2d | 2027-01-06 | 2027-01-07 | UG-11-S03-A030 SS+2d, UG-11-S03-A030 FF+2d, UG-11-S04-A040 | 0d |  | F6 | UG-11 | UG-11-S03 | A040 | 46.2 |
| UG-11-S03-A050 |  | Install dewatering and draw down |  | 8d | 2027-01-07 | 2027-01-16 | UG-11-S03-A040 SS+1d, UG-11-S03-A040 FF+2d, UG-11-S04-A060 FS-8d | 0d |  | F6 | UG-11 | UG-11-S03 | A050 | 23.1 |
| UG-11-S03-A060 |  | Excavate and strut to formation |  | 3d | 2027-01-17 | 2027-01-19 | UG-11-S03-A050 SS+9d, UG-11-S03-A050 FF+2d, UG-11-S04-A060 | 2d |  | F6 | UG-11 | UG-11-S03 | A060 | 646.432839 |
| UG-11-S03-A070 |  | Trim piles, blinding and piled slab (incl. cure) |  | 5d | 2027-01-26 | 2027-01-31 | UG-11-S03-A060 SS+2d, UG-11-S03-A060 FF+2d, UG-11-S04-A070 | 0d |  | F6 | UG-11 | UG-11-S03 | A070 | 23.1 |
| UG-11-S03-A080 |  | Lay and joint pipe (incl. fittings, tie-in) |  | 2d | 2027-01-28 | 2027-01-30 | UG-11-S03-A070 SS+2d, UG-11-S03-A070 FF+2d, UG-11-S04-A080 | 0d |  | F6 | UG-11 | UG-11-S03 | A080 | 23.1 |
| UG-11-S03-A090 |  | Surround, joint test and line test |  | 3d | 2027-01-30 | 2027-02-01 | UG-11-S03-A080 SS+1d, UG-11-S03-A080 FF+2d | 0d |  | F6 | UG-11 | UG-11-S03 | A090 | 23.1 |
| UG-11-S03-A100 |  | Backfill to NG and remove struts |  | 2d | 2027-02-01 | 2027-02-02 | UG-11-S03-A090 SS+2d, UG-11-S03-A090 FF+2d, UG-11-S04-A100 | 0d |  | F6 | UG-11 | UG-11-S03 | A100 | 533.269356 |
| UG-11-S03-A110 |  | Dewatering off, extract sheets, reinstate |  | 2d | 2027-02-02 | 2027-02-03 | UG-11-S03-A100 SS+1d, UG-11-S03-A100 FF+2d |  |  | F6 | UG-11 | UG-11-S03 | A110 | 46.2 |
|  | UG-11A | **UG-11A** |  |  | 2026-12-01 | 2027-08-03 |  |  |  |  |  |  |  |  |
|  | UG-11A-S05 | **UG-11A-S05 / HDPE-UG11A-S05-CH124-RASPS-(-4.29/-4.30)-40m / Run / Sheet piles** |  |  | 2026-12-01 | 2027-01-10 |  |  |  |  |  |  |  |  |
| UG-11A-S05-A010 |  | Release: drawings, holds, access and gates | milestone | 0d | 2026-12-01 | 2026-12-01 |  | 1d | start on or after 2026-12-01 | F6 | UG-11A | UG-11A-S05 | A010 |  |
| UG-11A-S05-A020 |  | Set-out, crossing survey and working platform |  | 1d | 2026-12-02 | 2026-12-02 | UG-11A-S05-A010, UG-11-S02-A030 SS | 3d |  | F6 | UG-11A | UG-11A-S05 | A020 | 40.190631 |
| UG-11A-S05-A030 |  | Pipe-support piling from platform (incl. integrity tests) |  | 6d | 2026-12-07 | 2026-12-13 | UG-11A-S05-A020 SS+1d, UG-11A-S05-A020 FF+2d, UG-11-S02-A030 | 0d |  | F6 | UG-11A | UG-11A-S05 | A030 | 30 |
| UG-11A-S05-A040 |  | Install sheet piles (shored lengths) |  | 4d | 2026-12-10 | 2026-12-14 | UG-11A-S05-A030 SS+3d, UG-11A-S05-A030 FF+2d, UG-11-S02-A040 | 0d |  | F6 | UG-11A | UG-11A-S05 | A040 | 80.381263 |
| UG-11A-S05-A050 |  | Install dewatering and draw down |  | 9d | 2026-12-12 | 2026-12-21 | UG-11A-S05-A040 SS+2d, UG-11A-S05-A040 FF+2d, UG-11-S02-A060 FS-9d | 0d |  | F6 | UG-11A | UG-11A-S05 | A050 | 40.190631 |
| UG-11A-S05-A060 |  | Excavate and strut to formation |  | 2d | 2026-12-22 | 2026-12-23 | UG-11A-S05-A050 SS+9d, UG-11A-S05-A050 FF+2d, UG-11-S02-A060 SS, UG-11-S02-A060 | 1d |  | F6 | UG-11A | UG-11A-S05 | A060 | 490.589395 |
| UG-11A-S05-A070 |  | Trim piles, blinding and piled slab (incl. cure) |  | 7d | 2026-12-24 | 2026-12-31 | UG-11A-S05-A060 SS+1d, UG-11A-S05-A060 FF+2d, UG-11-S02-A070 | 0d |  | F6 | UG-11A | UG-11A-S05 | A070 | 40.190631 |
| UG-11A-S05-A080 |  | Lay and joint pipe (incl. fittings, tie-in) |  | 2d | 2026-12-27 | 2026-12-28 | UG-11A-S05-A070 SS+3d, UG-11A-S05-A070 FF+2d, UG-11-S02-A080 | 0d |  | F6 | UG-11A | UG-11A-S05 | A080 | 40.190631 |
| UG-11A-S05-A090 |  | Surround, joint test and line test |  | 3d | 2026-12-28 | 2026-12-30 | UG-11A-S05-A080 SS+1d, UG-11A-S05-A080 FF+2d | 5d |  | F6 | UG-11A | UG-11A-S05 | A090 | 40.190631 |
| UG-11A-S05-A100 |  | Backfill to NG and remove struts |  | 2d | 2027-01-06 | 2027-01-07 | UG-11A-S05-A090 SS+2d, UG-11A-S05-A090 FF+2d, UG-11-S02-A080, UG-11-S02-A100 | 0d |  | F6 | UG-11A | UG-11A-S05 | A100 | 380.480419 |
| UG-11A-S05-A110 |  | Dewatering off, extract sheets, reinstate |  | 3d | 2027-01-07 | 2027-01-10 | UG-11A-S05-A100 SS+1d, UG-11A-S05-A100 FF+2d |  |  | F6 | UG-11A | UG-11A-S05 | A110 | 80.381263 |

Notes:
- UG-11-S03-A010: Notes: Front F6 / Line UG-11 / Package UG-11-S03 / Workbook logic: gates: START, D_DLU
- UG-11-S03-A020: Notes: Front F6 / Line UG-11 / Package UG-11-S03 / Quantity 23 m / Workbook logic: FS from A010; UG-11-S04-A030 (SS, set-out one package ahead of piling)
- UG-11-S03-A030: Notes: Front F6 / Line UG-11 / Package UG-11-S03 / Quantity 18 piles / Workbook logic: gate: D_PILEDES
- UG-11-S03-A040: Notes: Front F6 / Line UG-11 / Package UG-11-S03 / Quantity 46 m wall
- UG-11-S03-A050: Notes: Front F6 / Line UG-11 / Package UG-11-S03 / Quantity 23 m / Workbook logic: UG-11-S04-A060 (FS, negative lag = own duration: drawdown complete when the excavation crew is free)
- UG-11-S03-A060: Notes: Front F6 / Line UG-11 / Package UG-11-S03 / Quantity 646 m3
- UG-11-S03-A070: Notes: Front F6 / Line UG-11 / Package UG-11-S03 / Quantity 23 m
- UG-11-S03-A080: Notes: Front F6 / Line UG-11 / Package UG-11-S03 / Quantity 23 m
- UG-11-S03-A090: Notes: Front F6 / Line UG-11 / Package UG-11-S03 / Quantity 23 m
- UG-11-S03-A100: Notes: Front F6 / Line UG-11 / Package UG-11-S03 / Quantity 533 m3
- UG-11-S03-A110: Notes: Front F6 / Line UG-11 / Package UG-11-S03 / Quantity 46 m wall
- UG-11A-S05-A010: Notes: Front F6 / Line UG-11A / Package UG-11A-S05 / Workbook logic: gates: START, D_DLU
- UG-11A-S05-A020: Notes: Front F6 / Line UG-11A / Package UG-11A-S05 / Quantity 40 m / Workbook logic: FS from A010; UG-11-S02-A030 (SS, set-out one package ahead of piling)
- UG-11A-S05-A030: Notes: Front F6 / Line UG-11A / Package UG-11A-S05 / Quantity 30 piles / Workbook logic: gate: D_PILEDES
- UG-11A-S05-A040: Notes: Front F6 / Line UG-11A / Package UG-11A-S05 / Quantity 80 m wall
- UG-11A-S05-A050: Notes: Front F6 / Line UG-11A / Package UG-11A-S05 / Quantity 40 m / Workbook logic: UG-11-S02-A060 (FS, negative lag = own duration: drawdown complete when the excavation crew is free)
- UG-11A-S05-A060: Notes: Front F6 / Line UG-11A / Package UG-11A-S05 / Quantity 491 m3 / Workbook logic: UG-11-S02-A060 (SS, shared trench)
- UG-11A-S05-A070: Notes: Front F6 / Line UG-11A / Package UG-11A-S05 / Quantity 40 m
- UG-11A-S05-A080: Notes: Front F6 / Line UG-11A / Package UG-11A-S05 / Quantity 40 m
- UG-11A-S05-A090: Notes: Front F6 / Line UG-11A / Package UG-11A-S05 / Quantity 40 m
- UG-11A-S05-A100: Notes: Front F6 / Line UG-11A / Package UG-11A-S05 / Quantity 380 m3 / Workbook logic: UG-11-S02-A080 (FS, shared trench laid)
- UG-11A-S05-A110: Notes: Front F6 / Line UG-11A / Package UG-11A-S05 / Quantity 80 m wall

| ID | WBS | Activity | Type | Duration | Start | Finish | Predecessors | Free float | Constraint | Text1 | Text2 | Text3 | Text4 | Number1 |
| --- | --- | --- | --- | --- | --- | --- | --- | --- | --- | --- | --- | --- | --- | --- |
|  | UG-11A-S04 | **UG-11A-S04 / HDPE-UG11A-S04-TEE084-CH124-(-4.29/-4.29)-40m / Run / Sheet piles** |  |  | 2026-12-01 | 2027-06-30 |  |  |  |  |  |  |  |  |
| UG-11A-S04-A010 |  | Release: drawings, holds, access and gates | milestone | 0d | 2026-12-01 | 2026-12-01 |  | 109d | start on or after 2026-12-01 | F6 | UG-11A | UG-11A-S04 | A010 |  |
| UG-11A-S04-A020 |  | Set-out, crossing survey and working platform |  | 1d | 2027-04-07 | 2027-04-07 | UG-11A-S04-A010, UG-11B-S13-A030 SS | 3d |  | F6 | UG-11A | UG-11A-S04 | A020 | 39.672029 |
| UG-11A-S04-A030 |  | Pipe-support piling from platform (incl. integrity tests) |  | 6d | 2027-04-12 | 2027-04-18 | UG-11A-S04-A020 SS+1d, UG-11A-S04-A020 FF+2d, UG-11B-S13-A030 | 0d |  | F6 | UG-11A | UG-11A-S04 | A030 | 30 |
| UG-11A-S04-A040 |  | Install sheet piles (shored lengths) |  | 4d | 2027-04-15 | 2027-04-19 | UG-11A-S04-A030 SS+3d, UG-11A-S04-A030 FF+2d, UG-11B-S13-A040 | 0d |  | F6 | UG-11A | UG-11A-S04 | A040 | 79.344059 |
| UG-11A-S04-A050 |  | Install dewatering and draw down |  | 8d | 2027-04-17 | 2027-04-25 | UG-11A-S04-A040 SS+2d, UG-11A-S04-A040 FF+2d, UG-11B-S13-A060 FS-8d | 0d |  | F6 | UG-11A | UG-11A-S04 | A050 | 39.672029 |
| UG-11A-S04-A060 |  | Excavate and strut to formation |  | 2d | 2027-04-27 | 2027-04-28 | UG-11A-S04-A050 SS+9d, UG-11A-S04-A050 FF+2d, UG-11B-S13-A060 | 3d |  | F6 | UG-11A | UG-11A-S04 | A060 | 484.237592 |
| UG-11A-S04-A070 |  | Trim piles, blinding and piled slab (incl. cure) |  | 7d | 2027-06-21 | 2027-06-28 | UG-11A-S04-A060 SS+1d, UG-11A-S04-A060 FF+2d, UG-11B-S13-A070 | 0d |  | F6 | UG-11A | UG-11A-S04 | A070 | 39.672029 |
| UG-11A-S04-A080 |  | Lay and joint pipe (incl. fittings, tie-in) |  | 2d | 2027-06-24 | 2027-06-26 | UG-11A-S04-A070 SS+3d, UG-11A-S04-A070 FF+2d, UG-11B-S13-A080 | 0d |  | F6 | UG-11A | UG-11A-S04 | A080 | 39.672029 |
| UG-11A-S04-A090 |  | Surround, joint test and line test |  | 3d | 2027-06-26 | 2027-06-28 | UG-11A-S04-A080 SS+1d, UG-11A-S04-A080 FF+2d | 0d |  | F6 | UG-11A | UG-11A-S04 | A090 | 39.672029 |
| UG-11A-S04-A100 |  | Backfill to NG and remove struts |  | 2d | 2027-06-27 | 2027-06-28 | UG-11A-S04-A090 SS+2d, UG-11A-S04-A090 FF+2d, UG-11B-S13-A100 | 0d |  | F6 | UG-11A | UG-11A-S04 | A100 | 375.560403 |
| UG-11A-S04-A110 |  | Dewatering off, extract sheets, reinstate |  | 3d | 2027-06-28 | 2027-06-30 | UG-11A-S04-A100 SS+1d, UG-11A-S04-A100 FF+2d |  |  | F6 | UG-11A | UG-11A-S04 | A110 | 79.344059 |
|  | UG-11A-S03 | **UG-11A-S03 / HDPE-UG11A-S03-CH054-TEE084-(-4.29/-4.29)-30m / Run / Sheet piles** |  |  | 2026-12-01 | 2027-07-11 |  |  |  |  |  |  |  |  |
| UG-11A-S03-A010 |  | Release: drawings, holds, access and gates | milestone | 0d | 2026-12-01 | 2026-12-01 |  | 113d | start on or after 2026-12-01 | F6 | UG-11A | UG-11A-S03 | A010 |  |
| UG-11A-S03-A020 |  | Set-out, crossing survey and working platform |  | 1d | 2027-04-12 | 2027-04-12 | UG-11A-S03-A010, UG-11A-S04-A030 SS | 5d |  | F6 | UG-11A | UG-11A-S03 | A020 | 29.727971 |
| UG-11A-S03-A030 |  | Pipe-support piling from platform (incl. integrity tests) |  | 5d | 2027-04-19 | 2027-04-24 | UG-11A-S03-A020 SS+1d, UG-11A-S03-A020 FF+2d, UG-11A-S04-A030 | 0d |  | F6 | UG-11A | UG-11A-S03 | A030 | 22 |
| UG-11A-S03-A040 |  | Install sheet piles (shored lengths) |  | 3d | 2027-04-21 | 2027-04-24 | UG-11A-S03-A030 SS+2d, UG-11A-S03-A030 FF+2d, UG-11A-S04-A040 | 0d |  | F6 | UG-11A | UG-11A-S03 | A040 | 59.455941 |
| UG-11A-S03-A050 |  | Install dewatering and draw down |  | 8d | 2027-04-24 | 2027-05-02 | UG-11A-S03-A040 SS+2d, UG-11A-S03-A040 FF+2d, UG-11A-S04-A060 FS-8d | 0d |  | F6 | UG-11A | UG-11A-S03 | A050 | 29.727971 |
| UG-11A-S03-A060 |  | Excavate and strut to formation |  | 2d | 2027-05-03 | 2027-05-04 | UG-11A-S03-A050 SS+9d, UG-11A-S03-A050 FF+2d, UG-11A-S04-A060 | 4d |  | F6 | UG-11A | UG-11A-S03 | A060 | 362.814451 |
| UG-11A-S03-A070 |  | Trim piles, blinding and piled slab (incl. cure) |  | 6d | 2027-06-30 | 2027-07-06 | UG-11A-S03-A060 SS+1d, UG-11A-S03-A060 FF+2d, UG-11A-S04-A070 | 0d |  | F6 | UG-11A | UG-11A-S03 | A070 | 29.727971 |
| UG-11A-S03-A080 |  | Lay and joint pipe (incl. fittings, tie-in) |  | 3d | 2027-07-03 | 2027-07-05 | UG-11A-S03-A070 SS+3d, UG-11A-S03-A070 FF+2d, UG-11A-S04-A080 | 0d |  | F6 | UG-11A | UG-11A-S03 | A080 | 29.727971 |
| UG-11A-S03-A090 |  | Surround, joint test and line test |  | 3d | 2027-07-05 | 2027-07-07 | UG-11A-S03-A080 SS+2d, UG-11A-S03-A080 FF+2d | 0d |  | F6 | UG-11A | UG-11A-S03 | A090 | 29.727971 |
| UG-11A-S03-A100 |  | Backfill to NG and remove struts |  | 1d | 2027-07-07 | 2027-07-07 | UG-11A-S03-A090 SS+2d, UG-11A-S03-A090 FF+2d, UG-11A-S04-A100 | 0d |  | F6 | UG-11A | UG-11A-S03 | A100 | 281.401267 |
| UG-11A-S03-A110 |  | Dewatering off, extract sheets, reinstate |  | 3d | 2027-07-08 | 2027-07-11 | UG-11A-S03-A100 SS+1d, UG-11A-S03-A100 FF+2d |  |  | F6 | UG-11A | UG-11A-S03 | A110 | 59.455941 |

Notes:
- UG-11A-S04-A010: Notes: Front F6 / Line UG-11A / Package UG-11A-S04 / Workbook logic: gates: START, D_DLU
- UG-11A-S04-A020: Notes: Front F6 / Line UG-11A / Package UG-11A-S04 / Quantity 40 m / Workbook logic: FS from A010; UG-11B-S13-A030 (SS, set-out one package ahead of piling)
- UG-11A-S04-A030: Notes: Front F6 / Line UG-11A / Package UG-11A-S04 / Quantity 30 piles / Workbook logic: gate: D_PILEDES
- UG-11A-S04-A040: Notes: Front F6 / Line UG-11A / Package UG-11A-S04 / Quantity 79 m wall
- UG-11A-S04-A050: Notes: Front F6 / Line UG-11A / Package UG-11A-S04 / Quantity 40 m / Workbook logic: UG-11B-S13-A060 (FS, negative lag = own duration: drawdown complete when the excavation crew is free)
- UG-11A-S04-A060: Notes: Front F6 / Line UG-11A / Package UG-11A-S04 / Quantity 484 m3
- UG-11A-S04-A070: Notes: Front F6 / Line UG-11A / Package UG-11A-S04 / Quantity 40 m
- UG-11A-S04-A080: Notes: Front F6 / Line UG-11A / Package UG-11A-S04 / Quantity 40 m
- UG-11A-S04-A090: Notes: Front F6 / Line UG-11A / Package UG-11A-S04 / Quantity 40 m
- UG-11A-S04-A100: Notes: Front F6 / Line UG-11A / Package UG-11A-S04 / Quantity 376 m3
- UG-11A-S04-A110: Notes: Front F6 / Line UG-11A / Package UG-11A-S04 / Quantity 79 m wall
- UG-11A-S03-A010: Notes: Front F6 / Line UG-11A / Package UG-11A-S03 / Workbook logic: gates: START, D_DLU
- UG-11A-S03-A020: Notes: Front F6 / Line UG-11A / Package UG-11A-S03 / Quantity 30 m / Workbook logic: FS from A010; UG-11A-S04-A030 (SS, set-out one package ahead of piling)
- UG-11A-S03-A030: Notes: Front F6 / Line UG-11A / Package UG-11A-S03 / Quantity 22 piles / Workbook logic: gate: D_PILEDES
- UG-11A-S03-A040: Notes: Front F6 / Line UG-11A / Package UG-11A-S03 / Quantity 59 m wall
- UG-11A-S03-A050: Notes: Front F6 / Line UG-11A / Package UG-11A-S03 / Quantity 30 m / Workbook logic: UG-11A-S04-A060 (FS, negative lag = own duration: drawdown complete when the excavation crew is free)
- UG-11A-S03-A060: Notes: Front F6 / Line UG-11A / Package UG-11A-S03 / Quantity 363 m3
- UG-11A-S03-A070: Notes: Front F6 / Line UG-11A / Package UG-11A-S03 / Quantity 30 m
- UG-11A-S03-A080: Notes: Front F6 / Line UG-11A / Package UG-11A-S03 / Quantity 30 m
- UG-11A-S03-A090: Notes: Front F6 / Line UG-11A / Package UG-11A-S03 / Quantity 30 m
- UG-11A-S03-A100: Notes: Front F6 / Line UG-11A / Package UG-11A-S03 / Quantity 281 m3
- UG-11A-S03-A110: Notes: Front F6 / Line UG-11A / Package UG-11A-S03 / Quantity 59 m wall

| ID | WBS | Activity | Type | Duration | Start | Finish | Predecessors | Free float | Constraint | Text1 | Text2 | Text3 | Text4 | Number1 |
| --- | --- | --- | --- | --- | --- | --- | --- | --- | --- | --- | --- | --- | --- | --- |
|  | UG-11A-S02 | **UG-11A-S02 / HDPE-UG11A-S02-CH006-CH054-(-4.09/-4.29)-48m / Run / Sheet piles** |  |  | 2026-12-01 | 2027-07-18 |  |  |  |  |  |  |  |  |
| UG-11A-S02-A010 |  | Release: drawings, holds, access and gates | milestone | 0d | 2026-12-01 | 2026-12-01 |  | 119d | start on or after 2026-12-01 | F6 | UG-11A | UG-11A-S02 | A010 |  |
| UG-11A-S02-A020 |  | Set-out, crossing survey and working platform |  | 1d | 2027-04-19 | 2027-04-19 | UG-11A-S02-A010, UG-11A-S03-A030 SS | 4d |  | F6 | UG-11A | UG-11A-S02 | A020 | 48.3 |
| UG-11A-S02-A030 |  | Pipe-support piling from platform (incl. integrity tests) |  | 8d | 2027-04-25 | 2027-05-03 | UG-11A-S02-A020 SS+1d, UG-11A-S02-A020 FF+2d, UG-11A-S03-A030 | 0d |  | F6 | UG-11A | UG-11A-S02 | A030 | 36 |
| UG-11A-S02-A040 |  | Install sheet piles (shored lengths) |  | 4d | 2027-04-28 | 2027-05-02 | UG-11A-S02-A030 SS+3d, UG-11A-S02-A030 FF+2d, UG-11A-S03-A040 | 0d |  | F6 | UG-11A | UG-11A-S02 | A040 | 96.6 |
| UG-11A-S02-A050 |  | Install dewatering and draw down |  | 9d | 2027-05-01 | 2027-05-10 | UG-11A-S02-A040 SS+2d, UG-11A-S02-A040 FF+2d, UG-11A-S03-A060 FS-9d | 0d |  | F6 | UG-11A | UG-11A-S02 | A050 | 48.3 |
| UG-11A-S02-A060 |  | Excavate and strut to formation |  | 3d | 2027-05-10 | 2027-05-12 | UG-11A-S02-A050 SS+9d, UG-11A-S02-A050 FF+2d, UG-11A-S03-A060 | 5d |  | F6 | UG-11A | UG-11A-S02 | A060 | 528.49073 |
| UG-11A-S02-A070 |  | Trim piles, blinding and piled slab (incl. cure) |  | 8d | 2027-07-07 | 2027-07-15 | UG-11A-S02-A060 SS+2d, UG-11A-S02-A060 FF+2d, UG-11A-S03-A070 | 0d |  | F6 | UG-11A | UG-11A-S02 | A070 | 48.3 |
| UG-11A-S02-A080 |  | Lay and joint pipe (incl. fittings, tie-in) |  | 3d | 2027-07-10 | 2027-07-12 | UG-11A-S02-A070 SS+3d, UG-11A-S02-A070 FF+2d, UG-11A-S03-A080 | 0d |  | F6 | UG-11A | UG-11A-S02 | A080 | 48.3 |
| UG-11A-S02-A090 |  | Surround, joint test and line test |  | 3d | 2027-07-12 | 2027-07-14 | UG-11A-S02-A080 SS+2d, UG-11A-S02-A080 FF+2d | 0d |  | F6 | UG-11A | UG-11A-S02 | A090 | 48.3 |
| UG-11A-S02-A100 |  | Backfill to NG and remove struts |  | 2d | 2027-07-14 | 2027-07-15 | UG-11A-S02-A090 SS+2d, UG-11A-S02-A090 FF+2d, UG-14G-S01-A080, UG-11A-S03-A100 | 0d |  | F6 | UG-11A | UG-11A-S02 | A100 | 424.788088 |
| UG-11A-S02-A110 |  | Dewatering off, extract sheets, reinstate |  | 3d | 2027-07-15 | 2027-07-18 | UG-11A-S02-A100 SS+1d, UG-11A-S02-A100 FF+2d |  |  | F6 | UG-11A | UG-11A-S02 | A110 | 96.6 |
|  | UG-11A-S01 | **UG-11A-S01 / HDPE-UG11A-S01-FSTG-CH006-(-4.09/-4.09)-6m / Tie-in / Sheet piles** |  |  | 2026-12-01 | 2027-07-25 |  |  |  |  |  |  |  |  |
| UG-11A-S01-A010 |  | Release: drawings, holds, access and gates | milestone | 0d | 2026-12-01 | 2026-12-01 |  | 124d | start on or after 2026-12-01 | F6 | UG-11A | UG-11A-S01 | A010 |  |
| UG-11A-S01-A020 |  | Set-out, crossing survey and working platform |  | 1d | 2027-04-25 | 2027-04-25 | UG-11A-S01-A010, UG-11A-S02-A030 SS | 0d |  | F6 | UG-11A | UG-11A-S01 | A020 | 6 |
| UG-11A-S01-A030 |  | Pipe-support piling from platform (incl. integrity tests) |  | 1d | 2027-04-26 | 2027-04-26 | UG-11A-S01-A020 SS+1d, UG-11A-S01-A020 FF+2d | 0d |  | F6 | UG-11A | UG-11A-S01 | A030 | 3 |
| UG-11A-S01-A040 |  | Install sheet piles (shored lengths) |  | 1d | 2027-04-27 | 2027-04-27 | UG-11A-S01-A030 SS+1d, UG-11A-S01-A030 FF+2d | 0d |  | F6 | UG-11A | UG-11A-S01 | A040 | 12 |
| UG-11A-S01-A050 |  | Install dewatering and draw down |  | 8d | 2027-04-28 | 2027-05-06 | UG-11A-S01-A040 SS+1d, UG-11A-S01-A040 FF+2d | 0d |  | F6 | UG-11A | UG-11A-S01 | A050 | 6 |
| UG-11A-S01-A060 |  | Excavate and strut to formation |  | 1d | 2027-05-08 | 2027-05-08 | UG-11A-S01-A050 SS+9d, UG-11A-S01-A050 FF+2d | 0d |  | F6 | UG-11A | UG-11A-S01 | A060 | 61.019592 |
| UG-11A-S01-A070 |  | Trim piles, blinding and piled slab (incl. cure) |  | 4d | 2027-05-09 | 2027-05-12 | UG-11A-S01-A060 SS+1d, UG-11A-S01-A060 FF+2d | 59d |  | F6 | UG-11A | UG-11A-S01 | A070 | 6 |
| UG-11A-S01-A080 |  | Lay and joint pipe (incl. fittings, tie-in) |  | 4d | 2027-07-19 | 2027-07-22 | UG-11A-S01-A070 SS+2d, UG-11A-S01-A070 FF+2d, UG-11A-S02-A080 | 0d |  | F6 | UG-11A | UG-11A-S01 | A080 | 6 |
| UG-11A-S01-A090 |  | Surround, joint test and line test |  | 3d | 2027-07-21 | 2027-07-24 | UG-11A-S01-A080 SS+2d, UG-11A-S01-A080 FF+2d | 0d |  | F6 | UG-11A | UG-11A-S01 | A090 | 6 |
| UG-11A-S01-A100 |  | Backfill to NG and remove struts |  | 1d | 2027-07-24 | 2027-07-24 | UG-11A-S01-A090 SS+2d, UG-11A-S01-A090 FF+2d, UG-14G-S01-A080 | 0d |  | F6 | UG-11A | UG-11A-S01 | A100 | 50.307376 |
| UG-11A-S01-A110 |  | Dewatering off, extract sheets, reinstate |  | 2d | 2027-07-24 | 2027-07-25 | UG-11A-S01-A100 SS+1d, UG-11A-S01-A100 FF+2d |  |  | F6 | UG-11A | UG-11A-S01 | A110 | 12 |

Notes:
- UG-11A-S02-A010: Notes: Front F6 / Line UG-11A / Package UG-11A-S02 / Workbook logic: gates: START, D_DLU
- UG-11A-S02-A020: Notes: Front F6 / Line UG-11A / Package UG-11A-S02 / Quantity 48 m / Workbook logic: FS from A010; UG-11A-S03-A030 (SS, set-out one package ahead of piling)
- UG-11A-S02-A030: Notes: Front F6 / Line UG-11A / Package UG-11A-S02 / Quantity 36 piles / Workbook logic: gate: D_PILEDES
- UG-11A-S02-A040: Notes: Front F6 / Line UG-11A / Package UG-11A-S02 / Quantity 97 m wall
- UG-11A-S02-A050: Notes: Front F6 / Line UG-11A / Package UG-11A-S02 / Quantity 48 m / Workbook logic: UG-11A-S03-A060 (FS, negative lag = own duration: drawdown complete when the excavation crew is free)
- UG-11A-S02-A060: Notes: Front F6 / Line UG-11A / Package UG-11A-S02 / Quantity 528 m3
- UG-11A-S02-A070: Notes: Front F6 / Line UG-11A / Package UG-11A-S02 / Quantity 48 m
- UG-11A-S02-A080: Notes: Front F6 / Line UG-11A / Package UG-11A-S02 / Quantity 48 m
- UG-11A-S02-A090: Notes: Front F6 / Line UG-11A / Package UG-11A-S02 / Quantity 48 m
- UG-11A-S02-A100: Notes: Front F6 / Line UG-11A / Package UG-11A-S02 / Quantity 425 m3 / Workbook logic: UG-14G-S01-A080 (FS, shared trench laid)
- UG-11A-S02-A110: Notes: Front F6 / Line UG-11A / Package UG-11A-S02 / Quantity 97 m wall
- UG-11A-S01-A010: Notes: Front F6 / Line UG-11A / Package UG-11A-S01 / Workbook logic: gates: START, D_DLU, structure ready
- UG-11A-S01-A020: Notes: Front F6 / Line UG-11A / Package UG-11A-S01 / Quantity 6 m / Workbook logic: FS from A010; UG-11A-S02-A030 (SS, tie-in team follows the adjacent run)
- UG-11A-S01-A030: Notes: Front F6 / Line UG-11A / Package UG-11A-S01 / Quantity 3 piles / Workbook logic: gate: D_PILEDES
- UG-11A-S01-A040: Notes: Front F6 / Line UG-11A / Package UG-11A-S01 / Quantity 12 m wall
- UG-11A-S01-A050: Notes: Front F6 / Line UG-11A / Package UG-11A-S01 / Quantity 6 m
- UG-11A-S01-A060: Notes: Front F6 / Line UG-11A / Package UG-11A-S01 / Quantity 61 m3
- UG-11A-S01-A070: Notes: Front F6 / Line UG-11A / Package UG-11A-S01 / Quantity 6 m
- UG-11A-S01-A080: Notes: Front F6 / Line UG-11A / Package UG-11A-S01 / Quantity 6 m / Workbook logic: UG-11A-S02-A080 (FS, closure)
- UG-11A-S01-A090: Notes: Front F6 / Line UG-11A / Package UG-11A-S01 / Quantity 6 m
- UG-11A-S01-A100: Notes: Front F6 / Line UG-11A / Package UG-11A-S01 / Quantity 50 m3 / Workbook logic: UG-14G-S01-A080 (FS, shared trench laid)
- UG-11A-S01-A110: Notes: Front F6 / Line UG-11A / Package UG-11A-S01 / Quantity 12 m wall

| ID | WBS | Activity | Type | Duration | Start | Finish | Predecessors | Free float | Constraint | Text1 | Text2 | Text3 | Text4 | Number1 |
| --- | --- | --- | --- | --- | --- | --- | --- | --- | --- | --- | --- | --- | --- | --- |
|  | UG-11A-S07 | **UG-11A-S07 / HDPE-UG11A-S07-CH006-TEE-(-4.09/-4.19)-36m / Run / Sheet piles** |  |  | 2026-12-01 | 2027-07-27 |  |  |  |  |  |  |  |  |
| UG-11A-S07-A010 |  | Release: drawings, holds, access and gates | milestone | 0d | 2026-12-01 | 2026-12-01 |  | 124d | start on or after 2026-12-01 | F6 | UG-11A | UG-11A-S07 | A010 |  |
| UG-11A-S07-A020 |  | Set-out, crossing survey and working platform |  | 1d | 2027-04-25 | 2027-04-25 | UG-11A-S07-A010, UG-11A-S02-A030 SS | 8d |  | F6 | UG-11A | UG-11A-S07 | A020 | 36.14029 |
| UG-11A-S07-A030 |  | Pipe-support piling from platform (incl. integrity tests) |  | 6d | 2027-05-05 | 2027-05-11 | UG-11A-S07-A020 SS+1d, UG-11A-S07-A020 FF+2d, UG-11A-S02-A030 | 0d |  | F6 | UG-11A | UG-11A-S07 | A030 | 28 |
| UG-11A-S07-A040 |  | Install sheet piles (shored lengths) |  | 3d | 2027-05-08 | 2027-05-10 | UG-11A-S07-A030 SS+3d, UG-11A-S07-A030 FF+2d, UG-11A-S02-A040 | 0d |  | F6 | UG-11A | UG-11A-S07 | A040 | 72.280581 |
| UG-11A-S07-A050 |  | Install dewatering and draw down |  | 8d | 2027-05-10 | 2027-05-18 | UG-11A-S07-A040 SS+2d, UG-11A-S07-A040 FF+2d, UG-11A-S02-A060 FS-8d | 0d |  | F6 | UG-11A | UG-11A-S07 | A050 | 36.14029 |
| UG-11A-S07-A060 |  | Excavate and strut to formation |  | 2d | 2027-05-20 | 2027-05-22 | UG-11A-S07-A050 SS+9d, UG-11A-S07-A050 FF+2d, UG-11A-S02-A060 | 0d |  | F6 | UG-11A | UG-11A-S07 | A060 | 370.216993 |
| UG-11A-S07-A070 |  | Trim piles, blinding and piled slab (incl. cure) |  | 7d | 2027-07-17 | 2027-07-24 | UG-11A-S07-A060 SS+1d, UG-11A-S07-A060 FF+2d, UG-11A-S02-A070 | 0d |  | F6 | UG-11A | UG-11A-S07 | A070 | 36.14029 |
| UG-11A-S07-A080 |  | Lay and joint pipe (incl. fittings, tie-in) |  | 3d | 2027-07-20 | 2027-07-22 | UG-11A-S07-A070 SS+3d, UG-11A-S07-A070 FF+2d, UG-11A-S02-A080 | 0d |  | F6 | UG-11A | UG-11A-S07 | A080 | 36.14029 |
| UG-11A-S07-A090 |  | Surround, joint test and line test |  | 3d | 2027-07-22 | 2027-07-25 | UG-11A-S07-A080 SS+2d, UG-11A-S07-A080 FF+2d | 0d |  | F6 | UG-11A | UG-11A-S07 | A090 | 36.14029 |
| UG-11A-S07-A100 |  | Backfill to NG and remove struts |  | 1d | 2027-07-24 | 2027-07-24 | UG-11A-S07-A090 SS+2d, UG-11A-S07-A090 FF+2d, UG-14H-S01-A080, UG-11A-S02-A100 | 0d |  | F6 | UG-11A | UG-11A-S07 | A100 | 304.500005 |
| UG-11A-S07-A110 |  | Dewatering off, extract sheets, reinstate |  | 3d | 2027-07-25 | 2027-07-27 | UG-11A-S07-A100 SS+1d, UG-11A-S07-A100 FF+2d |  |  | F6 | UG-11A | UG-11A-S07 | A110 | 72.280581 |
|  | UG-11A-S06 | **UG-11A-S06 / HDPE-UG11A-S06-FSTH-CH006-(-4.09/-4.09)-6m / Tie-in / Sheet piles** |  |  | 2026-12-01 | 2027-08-03 |  |  |  |  |  |  |  |  |
| UG-11A-S06-A010 |  | Release: drawings, holds, access and gates | milestone | 0d | 2026-12-01 | 2026-12-01 |  | 133d | start on or after 2026-12-01 | F6 | UG-11A | UG-11A-S06 | A010 |  |
| UG-11A-S06-A020 |  | Set-out, crossing survey and working platform |  | 1d | 2027-05-05 | 2027-05-05 | UG-11A-S06-A010, UG-11A-S07-A030 SS | 0d |  | F6 | UG-11A | UG-11A-S06 | A020 | 6 |
| UG-11A-S06-A030 |  | Pipe-support piling from platform (incl. integrity tests) |  | 1d | 2027-05-06 | 2027-05-06 | UG-11A-S06-A020 SS+1d, UG-11A-S06-A020 FF+2d | 0d |  | F6 | UG-11A | UG-11A-S06 | A030 | 3 |
| UG-11A-S06-A040 |  | Install sheet piles (shored lengths) |  | 1d | 2027-05-08 | 2027-05-08 | UG-11A-S06-A030 SS+1d, UG-11A-S06-A030 FF+2d | 0d |  | F6 | UG-11A | UG-11A-S06 | A040 | 12 |
| UG-11A-S06-A050 |  | Install dewatering and draw down |  | 8d | 2027-05-08 | 2027-05-16 | UG-11A-S06-A040 SS+1d, UG-11A-S06-A040 FF+2d | 0d |  | F6 | UG-11A | UG-11A-S06 | A050 | 6 |
| UG-11A-S06-A060 |  | Excavate and strut to formation |  | 1d | 2027-05-18 | 2027-05-18 | UG-11A-S06-A050 SS+9d, UG-11A-S06-A050 FF+2d | 0d |  | F6 | UG-11A | UG-11A-S06 | A060 | 61.019752 |
| UG-11A-S06-A070 |  | Trim piles, blinding and piled slab (incl. cure) |  | 4d | 2027-05-19 | 2027-05-23 | UG-11A-S06-A060 SS+1d, UG-11A-S06-A060 FF+2d | 58d |  | F6 | UG-11A | UG-11A-S06 | A070 | 6 |
| UG-11A-S06-A080 |  | Lay and joint pipe (incl. fittings, tie-in) |  | 4d | 2027-07-28 | 2027-08-01 | UG-11A-S06-A070 SS+2d, UG-11A-S06-A070 FF+2d, UG-11A-S07-A080 | 0d |  | F6 | UG-11A | UG-11A-S06 | A080 | 6 |
| UG-11A-S06-A090 |  | Surround, joint test and line test |  | 3d | 2027-07-31 | 2027-08-02 | UG-11A-S06-A080 SS+2d, UG-11A-S06-A080 FF+2d | 0d |  | F6 | UG-11A | UG-11A-S06 | A090 | 6 |
| UG-11A-S06-A100 |  | Backfill to NG and remove struts |  | 1d | 2027-08-01 | 2027-08-01 | UG-11A-S06-A090 SS+2d, UG-11A-S06-A090 FF+2d, UG-14H-S01-A080 | 0d |  | F6 | UG-11A | UG-11A-S06 | A100 | 50.307468 |
| UG-11A-S06-A110 |  | Dewatering off, extract sheets, reinstate |  | 2d | 2027-08-02 | 2027-08-03 | UG-11A-S06-A100 SS+1d, UG-11A-S06-A100 FF+2d |  |  | F6 | UG-11A | UG-11A-S06 | A110 | 12 |

Notes:
- UG-11A-S07-A010: Notes: Front F6 / Line UG-11A / Package UG-11A-S07 / Workbook logic: gates: START, D_DLU
- UG-11A-S07-A020: Notes: Front F6 / Line UG-11A / Package UG-11A-S07 / Quantity 36 m / Workbook logic: FS from A010; UG-11A-S02-A030 (SS, set-out one package ahead of piling)
- UG-11A-S07-A030: Notes: Front F6 / Line UG-11A / Package UG-11A-S07 / Quantity 28 piles / Workbook logic: gate: D_PILEDES
- UG-11A-S07-A040: Notes: Front F6 / Line UG-11A / Package UG-11A-S07 / Quantity 72 m wall
- UG-11A-S07-A050: Notes: Front F6 / Line UG-11A / Package UG-11A-S07 / Quantity 36 m / Workbook logic: UG-11A-S02-A060 (FS, negative lag = own duration: drawdown complete when the excavation crew is free)
- UG-11A-S07-A060: Notes: Front F6 / Line UG-11A / Package UG-11A-S07 / Quantity 370 m3
- UG-11A-S07-A070: Notes: Front F6 / Line UG-11A / Package UG-11A-S07 / Quantity 36 m
- UG-11A-S07-A080: Notes: Front F6 / Line UG-11A / Package UG-11A-S07 / Quantity 36 m
- UG-11A-S07-A090: Notes: Front F6 / Line UG-11A / Package UG-11A-S07 / Quantity 36 m
- UG-11A-S07-A100: Notes: Front F6 / Line UG-11A / Package UG-11A-S07 / Quantity 305 m3 / Workbook logic: UG-14H-S01-A080 (FS, shared trench laid)
- UG-11A-S07-A110: Notes: Front F6 / Line UG-11A / Package UG-11A-S07 / Quantity 72 m wall
- UG-11A-S06-A010: Notes: Front F6 / Line UG-11A / Package UG-11A-S06 / Workbook logic: gates: START, D_DLU, structure ready
- UG-11A-S06-A020: Notes: Front F6 / Line UG-11A / Package UG-11A-S06 / Quantity 6 m / Workbook logic: FS from A010; UG-11A-S07-A030 (SS, tie-in team follows the adjacent run)
- UG-11A-S06-A030: Notes: Front F6 / Line UG-11A / Package UG-11A-S06 / Quantity 3 piles / Workbook logic: gate: D_PILEDES
- UG-11A-S06-A040: Notes: Front F6 / Line UG-11A / Package UG-11A-S06 / Quantity 12 m wall
- UG-11A-S06-A050: Notes: Front F6 / Line UG-11A / Package UG-11A-S06 / Quantity 6 m
- UG-11A-S06-A060: Notes: Front F6 / Line UG-11A / Package UG-11A-S06 / Quantity 61 m3
- UG-11A-S06-A070: Notes: Front F6 / Line UG-11A / Package UG-11A-S06 / Quantity 6 m
- UG-11A-S06-A080: Notes: Front F6 / Line UG-11A / Package UG-11A-S06 / Quantity 6 m / Workbook logic: UG-11A-S07-A080 (FS, closure)
- UG-11A-S06-A090: Notes: Front F6 / Line UG-11A / Package UG-11A-S06 / Quantity 6 m
- UG-11A-S06-A100: Notes: Front F6 / Line UG-11A / Package UG-11A-S06 / Quantity 50 m3 / Workbook logic: UG-14H-S01-A080 (FS, shared trench laid)
- UG-11A-S06-A110: Notes: Front F6 / Line UG-11A / Package UG-11A-S06 / Quantity 12 m wall

| ID | WBS | Activity | Type | Duration | Start | Finish | Predecessors | Free float | Constraint | Text1 | Text2 | Text3 | Text4 | Number1 |
| --- | --- | --- | --- | --- | --- | --- | --- | --- | --- | --- | --- | --- | --- | --- |
|  | UG-23 | **UG-23** |  |  | 2026-12-01 | 2027-04-19 |  |  |  |  |  |  |  |  |
|  | UG-23-S09 | **UG-23-S09 / HDPE-UG23-S09-CH197-CH287-(-1.96/-1.97)-90m / Run / Open cut** |  |  | 2026-12-01 | 2027-02-13 |  |  |  |  |  |  |  |  |
| UG-23-S09-A010 |  | Release: drawings, holds, access and gates | milestone | 0d | 2026-12-01 | 2026-12-01 |  | 29d | start on or after 2026-12-01 | F6 | UG-23 | UG-23-S09 | A010 |  |
| UG-23-S09-A020 |  | Set-out, crossing survey and working platform |  | 2d | 2027-01-04 | 2027-01-05 | UG-23-S09-A010, UG-11-S03-A030 SS | 3d |  | F6 | UG-23 | UG-23-S09 | A020 | 90.079 |
| UG-23-S09-A030 |  | Pipe-support piling from platform (incl. integrity tests) |  | 7d | 2027-01-09 | 2027-01-16 | UG-23-S09-A020 SS+1d, UG-23-S09-A020 FF+2d, UG-11-S03-A030 | 0d |  | F6 | UG-23 | UG-23-S09 | A030 | 32 |
| UG-23-S09-A050 |  | Install dewatering and draw down |  | 10d | 2027-01-12 | 2027-01-23 | UG-11-S03-A060 FS-10d, UG-23-S09-A030 SS+3d, UG-23-S09-A030 SF+5d, UG-23-S09-A030 FF+2d | 0d |  | F6 | UG-23 | UG-23-S09 | A050 | 90.079 |
| UG-23-S09-A060 |  | Excavate and strut to formation |  | 2d | 2027-01-23 | 2027-01-24 | UG-23-S09-A050 SS+9d, UG-23-S09-A050 FF+2d, UG-11-S03-A060 | 5d |  | F6 | UG-23 | UG-23-S09 | A060 | 559.156884 |
| UG-23-S09-A070 |  | Trim piles, blinding and piled slab (incl. cure) |  | 11d | 2027-02-01 | 2027-02-13 | UG-23-S09-A060 SS+1d, UG-23-S09-A060 FF+2d, UG-11-S03-A070 | 0d |  | F6 | UG-23 | UG-23-S09 | A070 | 90.079 |
| UG-23-S09-A080 |  | Lay and joint pipe (incl. fittings, tie-in) |  | 4d | 2027-02-06 | 2027-02-09 | UG-23-S09-A070 SS+3d, UG-23-S09-A070 FF+2d, UG-11-S03-A080 | 0d |  | F6 | UG-23 | UG-23-S09 | A080 | 90.079 |
| UG-23-S09-A090 |  | Surround, joint test and line test |  | 3d | 2027-02-07 | 2027-02-09 | UG-23-S09-A080 SS+2d, UG-23-S09-A080 FF+2d | 0d |  | F6 | UG-23 | UG-23-S09 | A090 | 90.079 |
| UG-23-S09-A100 |  | Backfill to NG and remove struts |  | 2d | 2027-02-09 | 2027-02-10 | UG-23-S09-A090 SS+2d, UG-23-S09-A090 FF+2d, UG-11-S03-A100 | 0d |  | F6 | UG-23 | UG-23-S09 | A100 | 457.66252 |
| UG-23-S09-A110 |  | Dewatering off, extract sheets, reinstate |  | 1d | 2027-02-10 | 2027-02-10 | UG-23-S09-A100 SS+1d, UG-23-S09-A100 FF+2d |  |  | F6 | UG-23 | UG-23-S09 | A110 | 0 |
|  | UG-23-S10 | **UG-23-S10 / HDPE-UG23-S10-CH287-WPD-(-1.97/-1.97)-6m / Tie-in / Open cut** |  |  | 2026-12-01 | 2027-02-21 |  |  |  |  |  |  |  |  |
| UG-23-S10-A010 |  | Release: drawings, holds, access and gates | milestone | 0d | 2026-12-01 | 2026-12-01 |  | 33d | start on or after 2026-12-01 | F6 | UG-23 | UG-23-S10 | A010 |  |
| UG-23-S10-A020 |  | Set-out, crossing survey and working platform |  | 1d | 2027-01-09 | 2027-01-09 | UG-23-S10-A010, UG-23-S09-A030 SS | 0d |  | F6 | UG-23 | UG-23-S10 | A020 | 5.999942 |
| UG-23-S10-A030 |  | Pipe-support piling from platform (incl. integrity tests) |  | 1d | 2027-01-10 | 2027-01-10 | UG-23-S10-A020 SS+1d, UG-23-S10-A020 FF+2d | 0d |  | F6 | UG-23 | UG-23-S10 | A030 | 3 |
| UG-23-S10-A050 |  | Install dewatering and draw down |  | 8d | 2027-01-11 | 2027-01-19 | UG-23-S10-A030 SS+1d, UG-23-S10-A030 SF+3d, UG-23-S10-A030 FF+2d | 0d |  | F6 | UG-23 | UG-23-S10 | A050 | 5.999942 |
| UG-23-S10-A060 |  | Excavate and strut to formation |  | 1d | 2027-01-21 | 2027-01-21 | UG-23-S10-A050 SS+9d, UG-23-S10-A050 FF+2d | 0d |  | F6 | UG-23 | UG-23-S10 | A060 | 37.244175 |
| UG-23-S10-A070 |  | Trim piles, blinding and piled slab (incl. cure) |  | 4d | 2027-01-23 | 2027-01-26 | UG-23-S10-A060 SS+1d, UG-23-S10-A060 FF+2d | 19d |  | F6 | UG-23 | UG-23-S10 | A070 | 5.999942 |
| UG-23-S10-A080 |  | Lay and joint pipe (incl. fittings, tie-in) |  | 4d | 2027-02-16 | 2027-02-20 | UG-23-S10-A070 SS+2d, UG-23-S10-A070 FF+2d, UG-23-S09-A080 | 0d |  | F6 | UG-23 | UG-23-S10 | A080 | 5.999942 |
| UG-23-S10-A090 |  | Surround, joint test and line test |  | 3d | 2027-02-18 | 2027-02-21 | UG-23-S10-A080 SS+2d, UG-23-S10-A080 FF+2d | 0d |  | F6 | UG-23 | UG-23-S10 | A090 | 5.999942 |
| UG-23-S10-A100 |  | Backfill to NG and remove struts |  | 1d | 2027-02-20 | 2027-02-20 | UG-23-S10-A090 SS+2d, UG-23-S10-A090 FF+2d | 0d |  | F6 | UG-23 | UG-23-S10 | A100 | 30.483854 |
| UG-23-S10-A110 |  | Dewatering off, extract sheets, reinstate |  | 1d | 2027-02-21 | 2027-02-21 | UG-23-S10-A100 SS+1d, UG-23-S10-A100 FF+2d |  |  | F6 | UG-23 | UG-23-S10 | A110 | 0 |
|  | UG-23-S08 | **UG-23-S08 / HDPE-UG23-S08-CH151-CH197-(-1.96/-1.96)-46m / Run / Open cut** |  |  | 2026-12-01 | 2027-03-18 |  |  |  |  |  |  |  |  |
| UG-23-S08-A010 |  | Release: drawings, holds, access and gates | milestone | 0d | 2026-12-01 | 2026-12-01 |  | 33d | start on or after 2026-12-01 | F6 | UG-23 | UG-23-S08 | A010 |  |
| UG-23-S08-A020 |  | Set-out, crossing survey and working platform |  | 1d | 2027-01-09 | 2027-01-09 | UG-23-S08-A010, UG-23-S09-A030 SS | 7d |  | F6 | UG-23 | UG-23-S08 | A020 | 46 |
| UG-23-S08-A030 |  | Pipe-support piling from platform (incl. integrity tests) |  | 4d | 2027-01-18 | 2027-01-21 | UG-23-S08-A020 SS+1d, UG-23-S08-A020 FF+2d, UG-23-S09-A030 | 0d |  | F6 | UG-23 | UG-23-S08 | A030 | 17 |
| UG-23-S08-A050 |  | Install dewatering and draw down |  | 9d | 2027-01-20 | 2027-01-30 | UG-23-S09-A060 FS-9d, UG-23-S08-A030 SS+2d, UG-23-S08-A030 SF+4d, UG-23-S08-A030 FF+2d | 32d |  | F6 | UG-23 | UG-23-S08 | A050 | 46 |
| UG-23-S08-A060 |  | Excavate and strut to formation |  | 1d | 2027-03-10 | 2027-03-10 | UG-23-S08-A050 SS+9d, UG-23-S08-A050 FF+2d, UG-11-S01-A100, UG-11-S02-A100, UG-11B-S14-A100, UG-23-S09-A060 | 0d |  | F6 | UG-23 | UG-23-S08 | A060 | 285.539052 |
| UG-23-S08-A070 |  | Trim piles, blinding and piled slab (incl. cure) |  | 7d | 2027-03-11 | 2027-03-18 | UG-23-S08-A060 SS+1d, UG-23-S08-A060 FF+2d, UG-23-S09-A070 | 0d |  | F6 | UG-23 | UG-23-S08 | A070 | 46 |
| UG-23-S08-A080 |  | Lay and joint pipe (incl. fittings, tie-in) |  | 2d | 2027-03-14 | 2027-03-15 | UG-23-S08-A070 SS+3d, UG-23-S08-A070 FF+2d, UG-23-S09-A080 | 0d |  | F6 | UG-23 | UG-23-S08 | A080 | 46 |
| UG-23-S08-A090 |  | Surround, joint test and line test |  | 3d | 2027-03-15 | 2027-03-17 | UG-23-S08-A080 SS+1d, UG-23-S08-A080 FF+2d | 0d |  | F6 | UG-23 | UG-23-S08 | A090 | 46 |
| UG-23-S08-A100 |  | Backfill to NG and remove struts |  | 1d | 2027-03-17 | 2027-03-17 | UG-23-S08-A090 SS+2d, UG-23-S08-A090 FF+2d, UG-23-S09-A100 | 0d |  | F6 | UG-23 | UG-23-S08 | A100 | 233.710116 |
| UG-23-S08-A110 |  | Dewatering off, extract sheets, reinstate |  | 1d | 2027-03-18 | 2027-03-18 | UG-23-S08-A100 SS+1d, UG-23-S08-A100 FF+2d |  |  | F6 | UG-23 | UG-23-S08 | A110 | 0 |

Notes:
- UG-23-S09-A010: Notes: Front F6 / Line UG-23 / Package UG-23-S09 / Workbook logic: gates: START, D_DLU
- UG-23-S09-A020: Notes: Front F6 / Line UG-23 / Package UG-23-S09 / Quantity 90 m / Workbook logic: FS from A010; UG-11-S03-A030 (SS, set-out one package ahead of piling)
- UG-23-S09-A030: Notes: Front F6 / Line UG-23 / Package UG-23-S09 / Quantity 32 piles / Workbook logic: gate: D_PILEDES
- UG-23-S09-A050: Notes: Front F6 / Line UG-23 / Package UG-23-S09 / Quantity 90 m / Workbook logic: UG-11-S03-A060 (FS, negative lag = own duration: drawdown complete when the excavation crew is free)
- UG-23-S09-A060: Notes: Front F6 / Line UG-23 / Package UG-23-S09 / Quantity 559 m3
- UG-23-S09-A070: Notes: Front F6 / Line UG-23 / Package UG-23-S09 / Quantity 90 m
- UG-23-S09-A080: Notes: Front F6 / Line UG-23 / Package UG-23-S09 / Quantity 90 m
- UG-23-S09-A090: Notes: Front F6 / Line UG-23 / Package UG-23-S09 / Quantity 90 m
- UG-23-S09-A100: Notes: Front F6 / Line UG-23 / Package UG-23-S09 / Quantity 458 m3
- UG-23-S09-A110: Notes: Front F6 / Line UG-23 / Package UG-23-S09 / Quantity 0 m wall
- UG-23-S10-A010: Notes: Front F6 / Line UG-23 / Package UG-23-S10 / Workbook logic: gates: START, D_DLU, structure ready
- UG-23-S10-A020: Notes: Front F6 / Line UG-23 / Package UG-23-S10 / Quantity 6 m / Workbook logic: FS from A010; UG-23-S09-A030 (SS, tie-in team follows the adjacent run)
- UG-23-S10-A030: Notes: Front F6 / Line UG-23 / Package UG-23-S10 / Quantity 3 piles / Workbook logic: gate: D_PILEDES
- UG-23-S10-A050: Notes: Front F6 / Line UG-23 / Package UG-23-S10 / Quantity 6 m
- UG-23-S10-A060: Notes: Front F6 / Line UG-23 / Package UG-23-S10 / Quantity 37 m3
- UG-23-S10-A070: Notes: Front F6 / Line UG-23 / Package UG-23-S10 / Quantity 6 m
- UG-23-S10-A080: Notes: Front F6 / Line UG-23 / Package UG-23-S10 / Quantity 6 m / Workbook logic: UG-23-S09-A080 (FS, closure)
- UG-23-S10-A090: Notes: Front F6 / Line UG-23 / Package UG-23-S10 / Quantity 6 m
- UG-23-S10-A100: Notes: Front F6 / Line UG-23 / Package UG-23-S10 / Quantity 30 m3
- UG-23-S10-A110: Notes: Front F6 / Line UG-23 / Package UG-23-S10 / Quantity 0 m wall
- UG-23-S08-A010: Notes: Front F6 / Line UG-23 / Package UG-23-S08 / Workbook logic: gates: START, D_DLU
- UG-23-S08-A020: Notes: Front F6 / Line UG-23 / Package UG-23-S08 / Quantity 46 m / Workbook logic: FS from A010; UG-23-S09-A030 (SS, set-out one package ahead of piling)
- UG-23-S08-A030: Notes: Front F6 / Line UG-23 / Package UG-23-S08 / Quantity 17 piles / Workbook logic: gate: D_PILEDES
- UG-23-S08-A050: Notes: Front F6 / Line UG-23 / Package UG-23-S08 / Quantity 46 m / Workbook logic: UG-23-S09-A060 (FS, negative lag = own duration: drawdown complete when the excavation crew is free)
- UG-23-S08-A060: Notes: Front F6 / Line UG-23 / Package UG-23-S08 / Quantity 286 m3 / Workbook logic: UG-11-S01-A100 (FS, deeper first); UG-11-S02-A100 (FS, deeper first); UG-11B-S14-A100 (FS, deeper first)
- UG-23-S08-A070: Notes: Front F6 / Line UG-23 / Package UG-23-S08 / Quantity 46 m
- UG-23-S08-A080: Notes: Front F6 / Line UG-23 / Package UG-23-S08 / Quantity 46 m
- UG-23-S08-A090: Notes: Front F6 / Line UG-23 / Package UG-23-S08 / Quantity 46 m
- UG-23-S08-A100: Notes: Front F6 / Line UG-23 / Package UG-23-S08 / Quantity 234 m3
- UG-23-S08-A110: Notes: Front F6 / Line UG-23 / Package UG-23-S08 / Quantity 0 m wall

| ID | WBS | Activity | Type | Duration | Start | Finish | Predecessors | Free float | Constraint | Text1 | Text2 | Text3 | Text4 | Number1 |
| --- | --- | --- | --- | --- | --- | --- | --- | --- | --- | --- | --- | --- | --- | --- |
|  | UG-23-S07 | **UG-23-S07 / HDPE-UG23-S07-CH135-CH151-(-1.96/-1.96)-16m / Run / Open cut** |  |  | 2026-12-01 | 2027-03-27 |  |  |  |  |  |  |  |  |
| UG-23-S07-A010 |  | Release: drawings, holds, access and gates | milestone | 0d | 2026-12-01 | 2026-12-01 |  | 41d | start on or after 2026-12-01 | F6 | UG-23 | UG-23-S07 | A010 |  |
| UG-23-S07-A020 |  | Set-out, crossing survey and working platform |  | 1d | 2027-01-18 | 2027-01-18 | UG-23-S07-A010, UG-23-S08-A030 SS | 3d |  | F6 | UG-23 | UG-23-S07 | A020 | 16 |
| UG-23-S07-A030 |  | Pipe-support piling from platform (incl. integrity tests) |  | 2d | 2027-01-23 | 2027-01-24 | UG-23-S07-A020 SS+1d, UG-23-S07-A020 FF+2d, UG-23-S08-A030 | 0d |  | F6 | UG-23 | UG-23-S07 | A030 | 7 |
| UG-23-S07-A050 |  | Install dewatering and draw down |  | 8d | 2027-03-02 | 2027-03-10 | UG-23-S08-A060 FS-8d, UG-23-S07-A030 SS+1d, UG-23-S07-A030 SF+3d, UG-23-S07-A030 FF+2d | 0d |  | F6 | UG-23 | UG-23-S07 | A050 | 16 |
| UG-23-S07-A060 |  | Excavate and strut to formation |  | 1d | 2027-03-13 | 2027-03-13 | UG-23-S07-A050 SS+9d, UG-23-S07-A050 FF+2d, UG-07-S03-A100, UG-11-S01-A100, UG-11-S06-A100, UG-12-S07-A100, UG-23-S08-A060 | 0d |  | F6 | UG-23 | UG-23-S07 | A060 | 99.317931 |
| UG-23-S07-A070 |  | Trim piles, blinding and piled slab (incl. cure) |  | 5d | 2027-03-20 | 2027-03-24 | UG-23-S07-A060 SS+1d, UG-23-S07-A060 FF+2d, UG-23-S08-A070 | 0d |  | F6 | UG-23 | UG-23-S07 | A070 | 16 |
| UG-23-S07-A080 |  | Lay and joint pipe (incl. fittings, tie-in) |  | 1d | 2027-03-22 | 2027-03-22 | UG-23-S07-A070 SS+2d, UG-23-S07-A070 FF+2d, UG-23-S08-A080 | 0d |  | F6 | UG-23 | UG-23-S07 | A080 | 16 |
| UG-23-S07-A090 |  | Surround, joint test and line test |  | 3d | 2027-03-23 | 2027-03-25 | UG-23-S07-A080 SS+1d, UG-23-S07-A080 FF+2d | 0d |  | F6 | UG-23 | UG-23-S07 | A090 | 16 |
| UG-23-S07-A100 |  | Backfill to NG and remove struts |  | 1d | 2027-03-27 | 2027-03-27 | UG-23-S07-A090 SS+2d, UG-23-S07-A090 FF+2d, UG-23-S08-A100 | 0d |  | F6 | UG-23 | UG-23-S07 | A100 | 81.290475 |
| UG-23-S07-A110 |  | Dewatering off, extract sheets, reinstate |  | 1d | 2027-03-27 | 2027-03-27 | UG-23-S07-A100 SS+1d, UG-23-S07-A100 FF+2d |  |  | F6 | UG-23 | UG-23-S07 | A110 | 0 |
|  | UG-23-S06 | **UG-23-S06 / HDPE-UG23-S06-TEE090-CH135-(-2.96/-1.96)-45m / Run / Mixed: 14 m sheet piles** |  |  | 2026-12-01 | 2027-04-05 |  |  |  |  |  |  |  |  |
| UG-23-S06-A010 |  | Release: drawings, holds, access and gates | milestone | 0d | 2026-12-01 | 2026-12-01 |  | 45d | start on or after 2026-12-01 | F6 | UG-23 | UG-23-S06 | A010 |  |
| UG-23-S06-A020 |  | Set-out, crossing survey and working platform |  | 1d | 2027-01-23 | 2027-01-23 | UG-23-S06-A010, UG-23-S07-A030 SS | 2d |  | F6 | UG-23 | UG-23-S06 | A020 | 45.387471 |
| UG-23-S06-A030 |  | Pipe-support piling from platform (incl. integrity tests) |  | 4d | 2027-01-26 | 2027-01-30 | UG-23-S06-A020 SS+1d, UG-23-S06-A020 FF+2d, UG-23-S07-A030 | 0d |  | F6 | UG-23 | UG-23-S06 | A030 | 17 |
| UG-23-S06-A040 |  | Install sheet piles (shored lengths) |  | 2d | 2027-01-28 | 2027-01-30 | UG-23-S06-A030 SS+2d, UG-23-S06-A030 FF+2d, UG-11-S03-A040 | 2d |  | F6 | UG-23 | UG-23-S06 | A040 | 27.978103 |
| UG-23-S06-A050 |  | Install dewatering and draw down |  | 9d | 2027-03-03 | 2027-03-13 | UG-23-S06-A040 SS+1d, UG-23-S06-A040 FF+2d, UG-23-S07-A060 FS-9d | 0d |  | F6 | UG-23 | UG-23-S06 | A050 | 45.387471 |
| UG-23-S06-A060 |  | Excavate and strut to formation |  | 1d | 2027-03-14 | 2027-03-14 | UG-23-S06-A050 SS+9d, UG-23-S06-A050 FF+2d, UG-07-S03-A100, UG-11-S05-A100, UG-11-S06-A100, UG-12-S07-A100, UG-23-S07-A060 | 0d |  | F6 | UG-23 | UG-23-S06 | A060 | 247.401394 |
| UG-23-S06-A070 |  | Trim piles, blinding and piled slab (incl. cure) |  | 7d | 2027-03-27 | 2027-04-03 | UG-23-S06-A060 SS+1d, UG-23-S06-A060 FF+2d, UG-23-S07-A070 | 0d |  | F6 | UG-23 | UG-23-S06 | A070 | 45.387471 |
| UG-23-S06-A080 |  | Lay and joint pipe (incl. fittings, tie-in) |  | 6d | 2027-03-29 | 2027-04-04 | UG-23-S06-A070 SS+3d, UG-23-S06-A070 FF+2d, UG-23-S07-A080 | 0d |  | F6 | UG-23 | UG-23-S06 | A080 | 45.387471 |
| UG-23-S06-A090 |  | Surround, joint test and line test |  | 3d | 2027-04-01 | 2027-04-04 | UG-23-S06-A080 SS+3d, UG-23-S06-A080 FF+2d | 0d |  | F6 | UG-23 | UG-23-S06 | A090 | 45.387471 |
| UG-23-S06-A100 |  | Backfill to NG and remove struts |  | 1d | 2027-04-03 | 2027-04-03 | UG-23-S06-A090 SS+2d, UG-23-S06-A090 FF+2d, UG-23-S07-A100 | 0d |  | F6 | UG-23 | UG-23-S06 | A100 | 196.26251 |
| UG-23-S06-A110 |  | Dewatering off, extract sheets, reinstate |  | 2d | 2027-04-04 | 2027-04-05 | UG-23-S06-A100 SS+1d, UG-23-S06-A100 FF+2d |  |  | F6 | UG-23 | UG-23-S06 | A110 | 27.978103 |
|  | UG-23-S05 | **UG-23-S05 / HDPE-UG23-S05-CH058-TEE090-(-5.07/-2.96)-33m / Run / Mixed: 33 m sheet piles** |  |  | 2026-12-01 | 2027-04-14 |  |  |  |  |  |  |  |  |
| UG-23-S05-A010 |  | Release: drawings, holds, access and gates | milestone | 0d | 2026-12-01 | 2026-12-01 |  | 48d | start on or after 2026-12-01 | F6 | UG-23 | UG-23-S05 | A010 |  |
| UG-23-S05-A020 |  | Set-out, crossing survey and working platform |  | 1d | 2027-01-26 | 2027-01-26 | UG-23-S05-A010, UG-23-S06-A030 SS | 3d |  | F6 | UG-23 | UG-23-S05 | A020 | 32.626199 |
| UG-23-S05-A030 |  | Pipe-support piling from platform (incl. integrity tests) |  | 3d | 2027-01-31 | 2027-02-02 | UG-23-S05-A020 SS+1d, UG-23-S05-A020 FF+2d, UG-23-S06-A030 | 0d |  | F6 | UG-23 | UG-23-S05 | A030 | 12 |
| UG-23-S05-A040 |  | Install sheet piles (shored lengths) |  | 3d | 2027-02-02 | 2027-02-04 | UG-23-S05-A030 SS+2d, UG-23-S05-A030 FF+2d, UG-23-S06-A040 | 0d |  | F6 | UG-23 | UG-23-S05 | A040 | 65.110978 |
| UG-23-S05-A050 |  | Install dewatering and draw down |  | 8d | 2027-03-06 | 2027-03-14 | UG-23-S05-A040 SS+2d, UG-23-S05-A040 FF+2d, UG-23-S06-A060 FS-8d | 0d |  | F6 | UG-23 | UG-23-S05 | A050 | 32.626199 |
| UG-23-S05-A060 |  | Excavate and strut to formation |  | 2d | 2027-03-16 | 2027-03-17 | UG-23-S05-A050 SS+9d, UG-23-S05-A050 FF+2d, UG-23-S06-A060 | 0d |  | F6 | UG-23 | UG-23-S05 | A060 | 366.815746 |
| UG-23-S05-A070 |  | Trim piles, blinding and piled slab (incl. cure) |  | 6d | 2027-04-04 | 2027-04-10 | UG-23-S05-A060 SS+1d, UG-23-S05-A060 FF+2d, UG-23-S06-A070 | 0d |  | F6 | UG-23 | UG-23-S05 | A070 | 32.626199 |
| UG-23-S05-A080 |  | Lay and joint pipe (incl. fittings, tie-in) |  | 4d | 2027-04-07 | 2027-04-11 | UG-23-S05-A070 SS+3d, UG-23-S05-A070 FF+2d, UG-23-S06-A080 | 0d |  | F6 | UG-23 | UG-23-S05 | A080 | 32.626199 |
| UG-23-S05-A090 |  | Surround, joint test and line test |  | 3d | 2027-04-10 | 2027-04-12 | UG-23-S05-A080 SS+2d, UG-23-S05-A080 FF+2d | 0d |  | F6 | UG-23 | UG-23-S05 | A090 | 32.626199 |
| UG-23-S05-A100 |  | Backfill to NG and remove struts |  | 1d | 2027-04-11 | 2027-04-11 | UG-23-S05-A090 SS+2d, UG-23-S05-A090 FF+2d, UG-23-S06-A100 | 0d |  | F6 | UG-23 | UG-23-S05 | A100 | 330.070149 |
| UG-23-S05-A110 |  | Dewatering off, extract sheets, reinstate |  | 3d | 2027-04-12 | 2027-04-14 | UG-23-S05-A100 SS+1d, UG-23-S05-A100 FF+2d |  |  | F6 | UG-23 | UG-23-S05 | A110 | 65.110978 |

Notes:
- UG-23-S07-A010: Notes: Front F6 / Line UG-23 / Package UG-23-S07 / Workbook logic: gates: START, D_DLU
- UG-23-S07-A020: Notes: Front F6 / Line UG-23 / Package UG-23-S07 / Quantity 16 m / Workbook logic: FS from A010; UG-23-S08-A030 (SS, set-out one package ahead of piling)
- UG-23-S07-A030: Notes: Front F6 / Line UG-23 / Package UG-23-S07 / Quantity 7 piles / Workbook logic: gate: D_PILEDES
- UG-23-S07-A050: Notes: Front F6 / Line UG-23 / Package UG-23-S07 / Quantity 16 m / Workbook logic: UG-23-S08-A060 (FS, negative lag = own duration: drawdown complete when the excavation crew is free)
- UG-23-S07-A060: Notes: Front F6 / Line UG-23 / Package UG-23-S07 / Quantity 99 m3 / Workbook logic: UG-07-S03-A100 (FS, deeper first); UG-11-S01-A100 (FS, deeper first); UG-11-S06-A100 (FS, deeper first); UG-12-S07-A100 (FS, deeper first)
- UG-23-S07-A070: Notes: Front F6 / Line UG-23 / Package UG-23-S07 / Quantity 16 m
- UG-23-S07-A080: Notes: Front F6 / Line UG-23 / Package UG-23-S07 / Quantity 16 m
- UG-23-S07-A090: Notes: Front F6 / Line UG-23 / Package UG-23-S07 / Quantity 16 m
- UG-23-S07-A100: Notes: Front F6 / Line UG-23 / Package UG-23-S07 / Quantity 81 m3
- UG-23-S07-A110: Notes: Front F6 / Line UG-23 / Package UG-23-S07 / Quantity 0 m wall
- UG-23-S06-A010: Notes: Front F6 / Line UG-23 / Package UG-23-S06 / Workbook logic: gates: START, D_DLU
- UG-23-S06-A020: Notes: Front F6 / Line UG-23 / Package UG-23-S06 / Quantity 45 m / Workbook logic: FS from A010; UG-23-S07-A030 (SS, set-out one package ahead of piling)
- UG-23-S06-A030: Notes: Front F6 / Line UG-23 / Package UG-23-S06 / Quantity 17 piles / Workbook logic: gate: D_PILEDES
- UG-23-S06-A040: Notes: Front F6 / Line UG-23 / Package UG-23-S06 / Quantity 28 m wall
- UG-23-S06-A050: Notes: Front F6 / Line UG-23 / Package UG-23-S06 / Quantity 45 m / Workbook logic: UG-23-S07-A060 (FS, negative lag = own duration: drawdown complete when the excavation crew is free)
- UG-23-S06-A060: Notes: Front F6 / Line UG-23 / Package UG-23-S06 / Quantity 247 m3 / Workbook logic: UG-07-S03-A100 (FS, deeper first); UG-11-S05-A100 (FS, deeper first); UG-11-S06-A100 (FS, deeper first); UG-12-S07-A100 (FS, deeper first)
- UG-23-S06-A070: Notes: Front F6 / Line UG-23 / Package UG-23-S06 / Quantity 45 m
- UG-23-S06-A080: Notes: Front F6 / Line UG-23 / Package UG-23-S06 / Quantity 45 m
- UG-23-S06-A090: Notes: Front F6 / Line UG-23 / Package UG-23-S06 / Quantity 45 m
- UG-23-S06-A100: Notes: Front F6 / Line UG-23 / Package UG-23-S06 / Quantity 196 m3
- UG-23-S06-A110: Notes: Front F6 / Line UG-23 / Package UG-23-S06 / Quantity 28 m wall
- UG-23-S05-A010: Notes: Front F6 / Line UG-23 / Package UG-23-S05 / Workbook logic: gates: START, D_DLU
- UG-23-S05-A020: Notes: Front F6 / Line UG-23 / Package UG-23-S05 / Quantity 33 m / Workbook logic: FS from A010; UG-23-S06-A030 (SS, set-out one package ahead of piling)
- UG-23-S05-A030: Notes: Front F6 / Line UG-23 / Package UG-23-S05 / Quantity 12 piles / Workbook logic: gate: D_PILEDES
- UG-23-S05-A040: Notes: Front F6 / Line UG-23 / Package UG-23-S05 / Quantity 65 m wall
- UG-23-S05-A050: Notes: Front F6 / Line UG-23 / Package UG-23-S05 / Quantity 33 m / Workbook logic: UG-23-S06-A060 (FS, negative lag = own duration: drawdown complete when the excavation crew is free)
- UG-23-S05-A060: Notes: Front F6 / Line UG-23 / Package UG-23-S05 / Quantity 367 m3
- UG-23-S05-A070: Notes: Front F6 / Line UG-23 / Package UG-23-S05 / Quantity 33 m
- UG-23-S05-A080: Notes: Front F6 / Line UG-23 / Package UG-23-S05 / Quantity 33 m
- UG-23-S05-A090: Notes: Front F6 / Line UG-23 / Package UG-23-S05 / Quantity 33 m
- UG-23-S05-A100: Notes: Front F6 / Line UG-23 / Package UG-23-S05 / Quantity 330 m3
- UG-23-S05-A110: Notes: Front F6 / Line UG-23 / Package UG-23-S05 / Quantity 65 m wall

| ID | WBS | Activity | Type | Duration | Start | Finish | Predecessors | Free float | Constraint | Text1 | Text2 | Text3 | Text4 | Number1 |
| --- | --- | --- | --- | --- | --- | --- | --- | --- | --- | --- | --- | --- | --- | --- |
|  | UG-23-S04 | **UG-23-S04 / HDPE-UG23-S04-CH035-CH058-(-5.07/-5.07)-23m / Run / Sheet piles** |  |  | 2026-12-01 | 2027-04-19 |  |  |  |  |  |  |  |  |
| UG-23-S04-A010 |  | Release: drawings, holds, access and gates | milestone | 0d | 2026-12-01 | 2026-12-01 |  | 52d | start on or after 2026-12-01 | F6 | UG-23 | UG-23-S04 | A010 |  |
| UG-23-S04-A020 |  | Set-out, crossing survey and working platform |  | 1d | 2027-01-31 | 2027-01-31 | UG-23-S04-A010, UG-23-S05-A030 SS | 3d |  | F6 | UG-23 | UG-23-S04 | A020 | 23 |
| UG-23-S04-A030 |  | Pipe-support piling from platform (incl. integrity tests) |  | 2d | 2027-02-04 | 2027-02-06 | UG-23-S04-A020 SS+1d, UG-23-S04-A020 FF+2d, UG-23-S05-A030 | 0d |  | F6 | UG-23 | UG-23-S04 | A030 | 9 |
| UG-23-S04-A040 |  | Install sheet piles (shored lengths) |  | 2d | 2027-02-06 | 2027-02-07 | UG-23-S04-A030 SS+1d, UG-23-S04-A030 FF+2d, UG-23-S05-A040 | 4d |  | F6 | UG-23 | UG-23-S04 | A040 | 46 |
| UG-23-S04-A050 |  | Install dewatering and draw down |  | 8d | 2027-03-09 | 2027-03-17 | UG-23-S04-A040 SS+1d, UG-23-S04-A040 FF+2d, UG-23-S05-A060 FS-8d | 0d |  | F6 | UG-23 | UG-23-S04 | A050 | 23 |
| UG-23-S04-A060 |  | Excavate and strut to formation |  | 2d | 2027-03-20 | 2027-03-21 | UG-23-S04-A050 SS+9d, UG-23-S04-A050 FF+2d, UG-11-S04-A100, UG-11-S05-A100, UG-23-S05-A060 | 0d |  | F6 | UG-23 | UG-23-S04 | A060 | 264.643566 |
| UG-23-S04-A070 |  | Trim piles, blinding and piled slab (incl. cure) |  | 5d | 2027-04-11 | 2027-04-15 | UG-23-S04-A060 SS+1d, UG-23-S04-A060 FF+2d, UG-23-S05-A070 | 0d |  | F6 | UG-23 | UG-23-S04 | A070 | 23 |
| UG-23-S04-A080 |  | Lay and joint pipe (incl. fittings, tie-in) |  | 1d | 2027-04-13 | 2027-04-13 | UG-23-S04-A070 SS+2d, UG-23-S04-A070 FF+2d, UG-23-S05-A080 | 0d |  | F6 | UG-23 | UG-23-S04 | A080 | 23 |
| UG-23-S04-A090 |  | Surround, joint test and line test |  | 3d | 2027-04-14 | 2027-04-17 | UG-23-S04-A080 SS+1d, UG-23-S04-A080 FF+2d | 0d |  | F6 | UG-23 | UG-23-S04 | A090 | 23 |
| UG-23-S04-A100 |  | Backfill to NG and remove struts |  | 1d | 2027-04-17 | 2027-04-17 | UG-23-S04-A090 SS+2d, UG-23-S04-A090 FF+2d, UG-23-S05-A100 | 0d |  | F6 | UG-23 | UG-23-S04 | A100 | 238.72895 |
| UG-23-S04-A110 |  | Dewatering off, extract sheets, reinstate |  | 2d | 2027-04-18 | 2027-04-19 | UG-23-S04-A100 SS+1d, UG-23-S04-A100 FF+2d |  |  | F6 | UG-23 | UG-23-S04 | A110 | 46 |
|  | UG-11B | **UG-11B** |  |  | 2026-12-01 | 2027-06-23 |  |  |  |  |  |  |  |  |
|  | UG-11B-S07 | **UG-11B-S07 / HDPE-UG11B-S07-TEE259-EL339-(-4.30/-4.10)-80m / Run / Sheet piles** |  |  | 2026-12-01 | 2027-05-02 |  |  |  |  |  |  |  |  |
| UG-11B-S07-A010 |  | Release: drawings, holds, access and gates | milestone | 0d | 2026-12-01 | 2026-12-01 |  | 56d | start on or after 2026-12-01 | F6 | UG-11B | UG-11B-S07 | A010 |  |
| UG-11B-S07-A020 |  | Set-out, crossing survey and working platform |  | 1d | 2027-02-04 | 2027-02-04 | UG-11B-S07-A010, UG-23-S04-A030 SS | 1d |  | F6 | UG-11B | UG-11B-S07 | A020 | 79.931228 |
| UG-11B-S07-A030 |  | Pipe-support piling from platform (incl. integrity tests) |  | 12d | 2027-02-07 | 2027-02-20 | UG-11B-S07-A020 SS+1d, UG-11B-S07-A020 FF+2d, UG-23-S04-A030 | 0d |  | F6 | UG-11B | UG-11B-S07 | A030 | 56 |
| UG-11B-S07-A040 |  | Install sheet piles (shored lengths) |  | 7d | 2027-02-13 | 2027-02-20 | UG-11B-S07-A030 SS+4d, UG-11B-S07-A030 FF+2d, UG-23-S04-A040 | 3d |  | F6 | UG-11B | UG-11B-S07 | A040 | 159.862456 |
| UG-11B-S07-A050 |  | Install dewatering and draw down |  | 9d | 2027-03-11 | 2027-03-21 | UG-11B-S07-A040 SS+3d, UG-11B-S07-A040 FF+2d, UG-23-S04-A060 FS-9d | 0d |  | F6 | UG-11B | UG-11B-S07 | A050 | 79.931228 |
| UG-11B-S07-A060 |  | Excavate and strut to formation |  | 4d | 2027-03-22 | 2027-03-25 | UG-11B-S07-A050 SS+9d, UG-11B-S07-A050 FF+2d, UG-23-S04-A060 | 0d |  | F6 | UG-11B | UG-11B-S07 | A060 | 843.448965 |
| UG-11B-S07-A070 |  | Trim piles, blinding and piled slab (incl. cure) |  | 10d | 2027-04-17 | 2027-04-27 | UG-11B-S07-A060 SS+2d, UG-11B-S07-A060 FF+2d, UG-23-S04-A070 | 0d |  | F6 | UG-11B | UG-11B-S07 | A070 | 79.931228 |
| UG-11B-S07-A080 |  | Lay and joint pipe (incl. fittings, tie-in) |  | 8d | 2027-04-21 | 2027-04-29 | UG-11B-S07-A070 SS+3d, UG-11B-S07-A070 FF+2d, UG-23-S04-A080 | 0d |  | F6 | UG-11B | UG-11B-S07 | A080 | 79.931228 |
| UG-11B-S07-A090 |  | Surround, joint test and line test |  | 3d | 2027-04-24 | 2027-04-26 | UG-11B-S07-A080 SS+3d, UG-11B-S07-A080 FF+2d | 0d |  | F6 | UG-11B | UG-11B-S07 | A090 | 79.931228 |
| UG-11B-S07-A100 |  | Backfill to NG and remove struts |  | 2d | 2027-04-26 | 2027-04-27 | UG-11B-S07-A090 SS+2d, UG-11B-S07-A090 FF+2d, UG-23-S04-A100 | 0d |  | F6 | UG-11B | UG-11B-S07 | A100 | 687.573868 |
| UG-11B-S07-A110 |  | Dewatering off, extract sheets, reinstate |  | 5d | 2027-04-27 | 2027-05-02 | UG-11B-S07-A100 SS+1d, UG-11B-S07-A100 FF+2d |  |  | F6 | UG-11B | UG-11B-S07 | A110 | 159.862456 |

Notes:
- UG-23-S04-A010: Notes: Front F6 / Line UG-23 / Package UG-23-S04 / Workbook logic: gates: START, D_DLU
- UG-23-S04-A020: Notes: Front F6 / Line UG-23 / Package UG-23-S04 / Quantity 23 m / Workbook logic: FS from A010; UG-23-S05-A030 (SS, set-out one package ahead of piling)
- UG-23-S04-A030: Notes: Front F6 / Line UG-23 / Package UG-23-S04 / Quantity 9 piles / Workbook logic: gate: D_PILEDES
- UG-23-S04-A040: Notes: Front F6 / Line UG-23 / Package UG-23-S04 / Quantity 46 m wall
- UG-23-S04-A050: Notes: Front F6 / Line UG-23 / Package UG-23-S04 / Quantity 23 m / Workbook logic: UG-23-S05-A060 (FS, negative lag = own duration: drawdown complete when the excavation crew is free)
- UG-23-S04-A060: Notes: Front F6 / Line UG-23 / Package UG-23-S04 / Quantity 265 m3 / Workbook logic: UG-11-S04-A100 (FS, deeper first); UG-11-S05-A100 (FS, deeper first)
- UG-23-S04-A070: Notes: Front F6 / Line UG-23 / Package UG-23-S04 / Quantity 23 m
- UG-23-S04-A080: Notes: Front F6 / Line UG-23 / Package UG-23-S04 / Quantity 23 m
- UG-23-S04-A090: Notes: Front F6 / Line UG-23 / Package UG-23-S04 / Quantity 23 m
- UG-23-S04-A100: Notes: Front F6 / Line UG-23 / Package UG-23-S04 / Quantity 239 m3
- UG-23-S04-A110: Notes: Front F6 / Line UG-23 / Package UG-23-S04 / Quantity 46 m wall
- UG-11B-S07-A010: Notes: Front F6 / Line UG-11B / Package UG-11B-S07 / Workbook logic: gates: START, D_DLU
- UG-11B-S07-A020: Notes: Front F6 / Line UG-11B / Package UG-11B-S07 / Quantity 80 m / Workbook logic: FS from A010; UG-23-S04-A030 (SS, set-out one package ahead of piling)
- UG-11B-S07-A030: Notes: Front F6 / Line UG-11B / Package UG-11B-S07 / Quantity 56 piles / Workbook logic: gate: D_PILEDES
- UG-11B-S07-A040: Notes: Front F6 / Line UG-11B / Package UG-11B-S07 / Quantity 160 m wall
- UG-11B-S07-A050: Notes: Front F6 / Line UG-11B / Package UG-11B-S07 / Quantity 80 m / Workbook logic: UG-23-S04-A060 (FS, negative lag = own duration: drawdown complete when the excavation crew is free)
- UG-11B-S07-A060: Notes: Front F6 / Line UG-11B / Package UG-11B-S07 / Quantity 843 m3
- UG-11B-S07-A070: Notes: Front F6 / Line UG-11B / Package UG-11B-S07 / Quantity 80 m
- UG-11B-S07-A080: Notes: Front F6 / Line UG-11B / Package UG-11B-S07 / Quantity 80 m
- UG-11B-S07-A090: Notes: Front F6 / Line UG-11B / Package UG-11B-S07 / Quantity 80 m
- UG-11B-S07-A100: Notes: Front F6 / Line UG-11B / Package UG-11B-S07 / Quantity 688 m3
- UG-11B-S07-A110: Notes: Front F6 / Line UG-11B / Package UG-11B-S07 / Quantity 160 m wall

| ID | WBS | Activity | Type | Duration | Start | Finish | Predecessors | Free float | Constraint | Text1 | Text2 | Text3 | Text4 | Number1 |
| --- | --- | --- | --- | --- | --- | --- | --- | --- | --- | --- | --- | --- | --- | --- |
|  | UG-11B-S04 | **UG-11B-S04 / HDPE-UG11B-S04-TEE126-CH166-(-4.63/-4.30)-40m / Run / Sheet piles** |  |  | 2026-12-01 | 2027-05-10 |  |  |  |  |  |  |  |  |
| UG-11B-S04-A010 |  | Release: drawings, holds, access and gates | milestone | 0d | 2026-12-01 | 2026-12-01 |  | 58d | start on or after 2026-12-01 | F6 | UG-11B | UG-11B-S04 | A010 |  |
| UG-11B-S04-A020 |  | Set-out, crossing survey and working platform |  | 1d | 2027-02-07 | 2027-02-07 | UG-11B-S04-A010, UG-11B-S07-A030 SS | 11d |  | F6 | UG-11B | UG-11B-S04 | A020 | 40.255704 |
| UG-11B-S04-A030 |  | Pipe-support piling from platform (incl. integrity tests) |  | 6d | 2027-02-21 | 2027-02-27 | UG-11B-S04-A020 SS+1d, UG-11B-S04-A020 FF+2d, UG-11B-S07-A030 | 0d |  | F6 | UG-11B | UG-11B-S04 | A030 | 30 |
| UG-11B-S04-A040 |  | Install sheet piles (shored lengths) |  | 4d | 2027-02-24 | 2027-02-28 | UG-11B-S04-A030 SS+3d, UG-11B-S04-A030 FF+2d, UG-11B-S07-A040 | 3d |  | F6 | UG-11B | UG-11B-S04 | A040 | 80.511408 |
| UG-11B-S04-A050 |  | Install dewatering and draw down |  | 9d | 2027-03-16 | 2027-03-25 | UG-11B-S04-A040 SS+2d, UG-11B-S04-A040 FF+2d, UG-11B-S07-A060 FS-9d | 0d |  | F6 | UG-11B | UG-11B-S04 | A050 | 40.255704 |
| UG-11B-S04-A060 |  | Excavate and strut to formation |  | 3d | 2027-03-27 | 2027-03-29 | UG-11B-S04-A050 SS+9d, UG-11B-S04-A050 FF+2d, UG-11B-S07-A060 | 0d |  | F6 | UG-11B | UG-11B-S04 | A060 | 531.155222 |
| UG-11B-S04-A070 |  | Trim piles, blinding and piled slab (incl. cure) |  | 7d | 2027-04-29 | 2027-05-06 | UG-11B-S04-A060 SS+2d, UG-11B-S04-A060 FF+2d, UG-11B-S07-A070 | 0d |  | F6 | UG-11B | UG-11B-S04 | A070 | 40.255704 |
| UG-11B-S04-A080 |  | Lay and joint pipe (incl. fittings, tie-in) |  | 5d | 2027-05-02 | 2027-05-06 | UG-11B-S04-A070 SS+3d, UG-11B-S04-A070 FF+2d, UG-11B-S07-A080 | 0d |  | F6 | UG-11B | UG-11B-S04 | A080 | 40.255704 |
| UG-11B-S04-A090 |  | Surround, joint test and line test |  | 3d | 2027-05-04 | 2027-05-06 | UG-11B-S04-A080 SS+2d, UG-11B-S04-A080 FF+2d | 0d |  | F6 | UG-11B | UG-11B-S04 | A090 | 40.255704 |
| UG-11B-S04-A100 |  | Backfill to NG and remove struts |  | 2d | 2027-05-06 | 2027-05-08 | UG-11B-S04-A090 SS+2d, UG-11B-S04-A090 FF+2d, UG-11B-S07-A100 | 0d |  | F6 | UG-11B | UG-11B-S04 | A100 | 398.921926 |
| UG-11B-S04-A110 |  | Dewatering off, extract sheets, reinstate |  | 3d | 2027-05-08 | 2027-05-10 | UG-11B-S04-A100 SS+1d, UG-11B-S04-A100 FF+2d |  |  | F6 | UG-11B | UG-11B-S04 | A110 | 80.511408 |
|  | UG-11B-S03 | **UG-11B-S03 / HDPE-UG11B-S03-TEE056-TEE126-(-4.63/-4.63)-70m / Run / Sheet piles** |  |  | 2026-12-01 | 2027-05-22 |  |  |  |  |  |  |  |  |
| UG-11B-S03-A010 |  | Release: drawings, holds, access and gates | milestone | 0d | 2026-12-01 | 2026-12-01 |  | 70d | start on or after 2026-12-01 | F6 | UG-11B | UG-11B-S03 | A010 |  |
| UG-11B-S03-A020 |  | Set-out, crossing survey and working platform |  | 1d | 2027-02-21 | 2027-02-21 | UG-11B-S03-A010, UG-11B-S04-A030 SS | 5d |  | F6 | UG-11B | UG-11B-S03 | A020 | 70.215215 |
| UG-11B-S03-A030 |  | Pipe-support piling from platform (incl. integrity tests) |  | 10d | 2027-02-28 | 2027-03-10 | UG-11B-S03-A020 SS+1d, UG-11B-S03-A020 FF+2d, UG-11B-S04-A030 | 0d |  | F6 | UG-11B | UG-11B-S03 | A030 | 50 |
| UG-11B-S03-A040 |  | Install sheet piles (shored lengths) |  | 6d | 2027-03-04 | 2027-03-10 | UG-11B-S03-A030 SS+3d, UG-11B-S03-A030 FF+2d, UG-11B-S04-A040 | 3d |  | F6 | UG-11B | UG-11B-S03 | A040 | 140.430429 |
| UG-11B-S03-A050 |  | Install dewatering and draw down |  | 9d | 2027-03-20 | 2027-03-29 | UG-11B-S03-A040 SS+3d, UG-11B-S03-A040 FF+2d, UG-11B-S04-A060 FS-9d | 1d |  | F6 | UG-11B | UG-11B-S03 | A050 | 70.215215 |
| UG-11B-S03-A060 |  | Excavate and strut to formation |  | 5d | 2027-03-31 | 2027-04-05 | UG-11B-S03-A050 SS+9d, UG-11B-S03-A050 FF+2d, UG-11B-S04-A060 | 0d |  | F6 | UG-11B | UG-11B-S03 | A060 | 1124.358992 |
| UG-11B-S03-A070 |  | Trim piles, blinding and piled slab (incl. cure) |  | 9d | 2027-05-08 | 2027-05-17 | UG-11B-S03-A060 SS+2d, UG-11B-S03-A060 FF+2d, UG-11B-S04-A070 | 0d |  | F6 | UG-11B | UG-11B-S03 | A070 | 70.215215 |
| UG-11B-S03-A080 |  | Lay and joint pipe (incl. fittings, tie-in) |  | 4d | 2027-05-12 | 2027-05-16 | UG-11B-S03-A070 SS+3d, UG-11B-S03-A070 FF+2d, UG-11B-S04-A080 | 0d |  | F6 | UG-11B | UG-11B-S03 | A080 | 70.215215 |
| UG-11B-S03-A090 |  | Surround, joint test and line test |  | 3d | 2027-05-15 | 2027-05-17 | UG-11B-S03-A080 SS+2d, UG-11B-S03-A080 FF+2d | 0d |  | F6 | UG-11B | UG-11B-S03 | A090 | 70.215215 |
| UG-11B-S03-A100 |  | Backfill to NG and remove struts |  | 3d | 2027-05-16 | 2027-05-18 | UG-11B-S03-A090 SS+2d, UG-11B-S03-A090 FF+2d, UG-11B-S04-A100 | 0d |  | F6 | UG-11B | UG-11B-S03 | A100 | 780.386045 |
| UG-11B-S03-A110 |  | Dewatering off, extract sheets, reinstate |  | 4d | 2027-05-18 | 2027-05-22 | UG-11B-S03-A100 SS+2d, UG-11B-S03-A100 FF+2d |  |  | F6 | UG-11B | UG-11B-S03 | A110 | 140.430429 |

Notes:
- UG-11B-S04-A010: Notes: Front F6 / Line UG-11B / Package UG-11B-S04 / Workbook logic: gates: START, D_DLU
- UG-11B-S04-A020: Notes: Front F6 / Line UG-11B / Package UG-11B-S04 / Quantity 40 m / Workbook logic: FS from A010; UG-11B-S07-A030 (SS, set-out one package ahead of piling)
- UG-11B-S04-A030: Notes: Front F6 / Line UG-11B / Package UG-11B-S04 / Quantity 30 piles / Workbook logic: gate: D_PILEDES
- UG-11B-S04-A040: Notes: Front F6 / Line UG-11B / Package UG-11B-S04 / Quantity 81 m wall
- UG-11B-S04-A050: Notes: Front F6 / Line UG-11B / Package UG-11B-S04 / Quantity 40 m / Workbook logic: UG-11B-S07-A060 (FS, negative lag = own duration: drawdown complete when the excavation crew is free)
- UG-11B-S04-A060: Notes: Front F6 / Line UG-11B / Package UG-11B-S04 / Quantity 531 m3
- UG-11B-S04-A070: Notes: Front F6 / Line UG-11B / Package UG-11B-S04 / Quantity 40 m
- UG-11B-S04-A080: Notes: Front F6 / Line UG-11B / Package UG-11B-S04 / Quantity 40 m
- UG-11B-S04-A090: Notes: Front F6 / Line UG-11B / Package UG-11B-S04 / Quantity 40 m
- UG-11B-S04-A100: Notes: Front F6 / Line UG-11B / Package UG-11B-S04 / Quantity 399 m3
- UG-11B-S04-A110: Notes: Front F6 / Line UG-11B / Package UG-11B-S04 / Quantity 81 m wall
- UG-11B-S03-A010: Notes: Front F6 / Line UG-11B / Package UG-11B-S03 / Workbook logic: gates: START, D_DLU
- UG-11B-S03-A020: Notes: Front F6 / Line UG-11B / Package UG-11B-S03 / Quantity 70 m / Workbook logic: FS from A010; UG-11B-S04-A030 (SS, set-out one package ahead of piling)
- UG-11B-S03-A030: Notes: Front F6 / Line UG-11B / Package UG-11B-S03 / Quantity 50 piles / Workbook logic: gate: D_PILEDES
- UG-11B-S03-A040: Notes: Front F6 / Line UG-11B / Package UG-11B-S03 / Quantity 140 m wall
- UG-11B-S03-A050: Notes: Front F6 / Line UG-11B / Package UG-11B-S03 / Quantity 70 m / Workbook logic: UG-11B-S04-A060 (FS, negative lag = own duration: drawdown complete when the excavation crew is free)
- UG-11B-S03-A060: Notes: Front F6 / Line UG-11B / Package UG-11B-S03 / Quantity 1,124 m3
- UG-11B-S03-A070: Notes: Front F6 / Line UG-11B / Package UG-11B-S03 / Quantity 70 m
- UG-11B-S03-A080: Notes: Front F6 / Line UG-11B / Package UG-11B-S03 / Quantity 70 m
- UG-11B-S03-A090: Notes: Front F6 / Line UG-11B / Package UG-11B-S03 / Quantity 70 m
- UG-11B-S03-A100: Notes: Front F6 / Line UG-11B / Package UG-11B-S03 / Quantity 780 m3
- UG-11B-S03-A110: Notes: Front F6 / Line UG-11B / Package UG-11B-S03 / Quantity 140 m wall

| ID | WBS | Activity | Type | Duration | Start | Finish | Predecessors | Free float | Constraint | Text1 | Text2 | Text3 | Text4 | Number1 |
| --- | --- | --- | --- | --- | --- | --- | --- | --- | --- | --- | --- | --- | --- | --- |
|  | UG-11B-S02 | **UG-11B-S02 / HDPE-UG11B-S02-CH006-TEE056-(-4.10/-4.11)-50m / Run / Sheet piles** |  |  | 2026-12-01 | 2027-05-29 |  |  |  |  |  |  |  |  |
| UG-11B-S02-A010 |  | Release: drawings, holds, access and gates | milestone | 0d | 2026-12-01 | 2026-12-01 |  | 76d | start on or after 2026-12-01 | F6 | UG-11B | UG-11B-S02 | A010 |  |
| UG-11B-S02-A020 |  | Set-out, crossing survey and working platform |  | 1d | 2027-02-28 | 2027-02-28 | UG-11B-S02-A010, UG-11B-S03-A030 SS | 10d |  | F6 | UG-11B | UG-11B-S02 | A020 | 49.629081 |
| UG-11B-S02-A030 |  | Pipe-support piling from platform (incl. integrity tests) |  | 8d | 2027-03-13 | 2027-03-21 | UG-11B-S02-A020 SS+1d, UG-11B-S02-A020 FF+2d, UG-11B-S03-A030 | 0d |  | F6 | UG-11B | UG-11B-S02 | A030 | 36 |
| UG-11B-S02-A040 |  | Install sheet piles (shored lengths) |  | 4d | 2027-03-15 | 2027-03-18 | UG-11B-S02-A030 SS+3d, UG-11B-S02-A030 FF+2d, UG-11B-S03-A040 | 5d |  | F6 | UG-11B | UG-11B-S02 | A040 | 99.258163 |
| UG-11B-S02-A050 |  | Install dewatering and draw down |  | 9d | 2027-03-27 | 2027-04-05 | UG-11B-S02-A040 SS+2d, UG-11B-S02-A040 FF+2d, UG-11B-S03-A060 FS-9d | 0d |  | F6 | UG-11B | UG-11B-S02 | A050 | 49.629081 |
| UG-11B-S02-A060 |  | Excavate and strut to formation |  | 3d | 2027-04-06 | 2027-04-08 | UG-11B-S02-A050 SS+9d, UG-11B-S02-A050 FF+2d, UG-11B-S03-A060 | 0d |  | F6 | UG-11B | UG-11B-S02 | A060 | 506.934466 |
| UG-11B-S02-A070 |  | Trim piles, blinding and piled slab (incl. cure) |  | 8d | 2027-05-19 | 2027-05-27 | UG-11B-S02-A060 SS+2d, UG-11B-S02-A060 FF+2d, UG-11B-S03-A070 | 0d |  | F6 | UG-11B | UG-11B-S02 | A070 | 49.629081 |
| UG-11B-S02-A080 |  | Lay and joint pipe (incl. fittings, tie-in) |  | 2d | 2027-05-22 | 2027-05-23 | UG-11B-S02-A070 SS+3d, UG-11B-S02-A070 FF+2d, UG-11B-S03-A080 | 0d |  | F6 | UG-11B | UG-11B-S02 | A080 | 49.629081 |
| UG-11B-S02-A090 |  | Surround, joint test and line test |  | 3d | 2027-05-23 | 2027-05-25 | UG-11B-S02-A080 SS+1d, UG-11B-S02-A080 FF+2d | 0d |  | F6 | UG-11B | UG-11B-S02 | A090 | 49.629081 |
| UG-11B-S02-A100 |  | Backfill to NG and remove struts |  | 2d | 2027-05-25 | 2027-05-26 | UG-11B-S02-A090 SS+2d, UG-11B-S02-A090 FF+2d, UG-16A-S01-A080, UG-11B-S03-A100 | 0d |  | F6 | UG-11B | UG-11B-S02 | A100 | 418.021567 |
| UG-11B-S02-A110 |  | Dewatering off, extract sheets, reinstate |  | 3d | 2027-05-26 | 2027-05-29 | UG-11B-S02-A100 SS+1d, UG-11B-S02-A100 FF+2d |  |  | F6 | UG-11B | UG-11B-S02 | A110 | 99.258163 |
|  | UG-11B-S01 | **UG-11B-S01 / HDPE-UG11B-S01-FSTA-CH006-(-4.10/-4.10)-6m / Tie-in / Sheet piles** |  |  | 2026-12-01 | 2027-06-06 |  |  |  |  |  |  |  |  |
| UG-11B-S01-A010 |  | Release: drawings, holds, access and gates | milestone | 0d | 2026-12-01 | 2026-12-01 |  | 87d | start on or after 2026-12-01 | F6 | UG-11B | UG-11B-S01 | A010 |  |
| UG-11B-S01-A020 |  | Set-out, crossing survey and working platform |  | 1d | 2027-03-13 | 2027-03-13 | UG-11B-S01-A010, UG-11B-S02-A030 SS | 0d |  | F6 | UG-11B | UG-11B-S01 | A020 | 6 |
| UG-11B-S01-A030 |  | Pipe-support piling from platform (incl. integrity tests) |  | 1d | 2027-03-13 | 2027-03-13 | UG-11B-S01-A020 SS+1d, UG-11B-S01-A020 FF+2d | 0d |  | F6 | UG-11B | UG-11B-S01 | A030 | 3 |
| UG-11B-S01-A040 |  | Install sheet piles (shored lengths) |  | 1d | 2027-03-14 | 2027-03-14 | UG-11B-S01-A030 SS+1d, UG-11B-S01-A030 FF+2d | 0d |  | F6 | UG-11B | UG-11B-S01 | A040 | 12 |
| UG-11B-S01-A050 |  | Install dewatering and draw down |  | 8d | 2027-03-15 | 2027-03-23 | UG-11B-S01-A040 SS+1d, UG-11B-S01-A040 FF+2d | 0d |  | F6 | UG-11B | UG-11B-S01 | A050 | 6 |
| UG-11B-S01-A060 |  | Excavate and strut to formation |  | 1d | 2027-03-25 | 2027-03-25 | UG-11B-S01-A050 SS+9d, UG-11B-S01-A050 FF+2d | 0d |  | F6 | UG-11B | UG-11B-S01 | A060 | 61.199815 |
| UG-11B-S01-A070 |  | Trim piles, blinding and piled slab (incl. cure) |  | 4d | 2027-03-27 | 2027-03-30 | UG-11B-S01-A060 SS+1d, UG-11B-S01-A060 FF+2d | 54d |  | F6 | UG-11B | UG-11B-S01 | A070 | 6 |
| UG-11B-S01-A080 |  | Lay and joint pipe (incl. fittings, tie-in) |  | 4d | 2027-05-31 | 2027-06-03 | UG-11B-S01-A070 SS+2d, UG-11B-S01-A070 FF+2d, UG-11B-S02-A080 | 0d |  | F6 | UG-11B | UG-11B-S01 | A080 | 6 |
| UG-11B-S01-A090 |  | Surround, joint test and line test |  | 3d | 2027-06-02 | 2027-06-05 | UG-11B-S01-A080 SS+2d, UG-11B-S01-A080 FF+2d | 0d |  | F6 | UG-11B | UG-11B-S01 | A090 | 6 |
| UG-11B-S01-A100 |  | Backfill to NG and remove struts |  | 1d | 2027-06-05 | 2027-06-05 | UG-11B-S01-A090 SS+2d, UG-11B-S01-A090 FF+2d, UG-16A-S01-A080 | 0d |  | F6 | UG-11B | UG-11B-S01 | A100 | 50.487504 |
| UG-11B-S01-A110 |  | Dewatering off, extract sheets, reinstate |  | 2d | 2027-06-05 | 2027-06-06 | UG-11B-S01-A100 SS+1d, UG-11B-S01-A100 FF+2d |  |  | F6 | UG-11B | UG-11B-S01 | A110 | 12 |

Notes:
- UG-11B-S02-A010: Notes: Front F6 / Line UG-11B / Package UG-11B-S02 / Workbook logic: gates: START, D_DLU
- UG-11B-S02-A020: Notes: Front F6 / Line UG-11B / Package UG-11B-S02 / Quantity 50 m / Workbook logic: FS from A010; UG-11B-S03-A030 (SS, set-out one package ahead of piling)
- UG-11B-S02-A030: Notes: Front F6 / Line UG-11B / Package UG-11B-S02 / Quantity 36 piles / Workbook logic: gate: D_PILEDES
- UG-11B-S02-A040: Notes: Front F6 / Line UG-11B / Package UG-11B-S02 / Quantity 99 m wall
- UG-11B-S02-A050: Notes: Front F6 / Line UG-11B / Package UG-11B-S02 / Quantity 50 m / Workbook logic: UG-11B-S03-A060 (FS, negative lag = own duration: drawdown complete when the excavation crew is free)
- UG-11B-S02-A060: Notes: Front F6 / Line UG-11B / Package UG-11B-S02 / Quantity 507 m3
- UG-11B-S02-A070: Notes: Front F6 / Line UG-11B / Package UG-11B-S02 / Quantity 50 m
- UG-11B-S02-A080: Notes: Front F6 / Line UG-11B / Package UG-11B-S02 / Quantity 50 m
- UG-11B-S02-A090: Notes: Front F6 / Line UG-11B / Package UG-11B-S02 / Quantity 50 m
- UG-11B-S02-A100: Notes: Front F6 / Line UG-11B / Package UG-11B-S02 / Quantity 418 m3 / Workbook logic: UG-16A-S01-A080 (FS, shared trench laid)
- UG-11B-S02-A110: Notes: Front F6 / Line UG-11B / Package UG-11B-S02 / Quantity 99 m wall
- UG-11B-S01-A010: Notes: Front F6 / Line UG-11B / Package UG-11B-S01 / Workbook logic: gates: START, D_DLU, structure ready
- UG-11B-S01-A020: Notes: Front F6 / Line UG-11B / Package UG-11B-S01 / Quantity 6 m / Workbook logic: FS from A010; UG-11B-S02-A030 (SS, tie-in team follows the adjacent run)
- UG-11B-S01-A030: Notes: Front F6 / Line UG-11B / Package UG-11B-S01 / Quantity 3 piles / Workbook logic: gate: D_PILEDES
- UG-11B-S01-A040: Notes: Front F6 / Line UG-11B / Package UG-11B-S01 / Quantity 12 m wall
- UG-11B-S01-A050: Notes: Front F6 / Line UG-11B / Package UG-11B-S01 / Quantity 6 m
- UG-11B-S01-A060: Notes: Front F6 / Line UG-11B / Package UG-11B-S01 / Quantity 61 m3
- UG-11B-S01-A070: Notes: Front F6 / Line UG-11B / Package UG-11B-S01 / Quantity 6 m
- UG-11B-S01-A080: Notes: Front F6 / Line UG-11B / Package UG-11B-S01 / Quantity 6 m / Workbook logic: UG-11B-S02-A080 (FS, closure)
- UG-11B-S01-A090: Notes: Front F6 / Line UG-11B / Package UG-11B-S01 / Quantity 6 m
- UG-11B-S01-A100: Notes: Front F6 / Line UG-11B / Package UG-11B-S01 / Quantity 50 m3 / Workbook logic: UG-16A-S01-A080 (FS, shared trench laid)
- UG-11B-S01-A110: Notes: Front F6 / Line UG-11B / Package UG-11B-S01 / Quantity 12 m wall

| ID | WBS | Activity | Type | Duration | Start | Finish | Predecessors | Free float | Constraint | Text1 | Text2 | Text3 | Text4 | Number1 |
| --- | --- | --- | --- | --- | --- | --- | --- | --- | --- | --- | --- | --- | --- | --- |
|  | UG-11B-S10 | **UG-11B-S10 / HDPE-UG11B-S10-CH006-TEE-(-4.10/-4.11)-49m / Run / Sheet piles** |  |  | 2026-12-01 | 2027-06-07 |  |  |  |  |  |  |  |  |
| UG-11B-S10-A010 |  | Release: drawings, holds, access and gates | milestone | 0d | 2026-12-01 | 2026-12-01 |  | 87d | start on or after 2026-12-01 | F6 | UG-11B | UG-11B-S10 | A010 |  |
| UG-11B-S10-A020 |  | Set-out, crossing survey and working platform |  | 1d | 2027-03-13 | 2027-03-13 | UG-11B-S10-A010, UG-11B-S02-A030 SS | 7d |  | F6 | UG-11B | UG-11B-S10 | A020 | 49.44476 |
| UG-11B-S10-A030 |  | Pipe-support piling from platform (incl. integrity tests) |  | 8d | 2027-03-22 | 2027-03-30 | UG-11B-S10-A020 SS+1d, UG-11B-S10-A020 FF+2d, UG-11B-S02-A030 | 0d |  | F6 | UG-11B | UG-11B-S10 | A030 | 36 |
| UG-11B-S10-A040 |  | Install sheet piles (shored lengths) |  | 4d | 2027-03-25 | 2027-03-29 | UG-11B-S10-A030 SS+3d, UG-11B-S10-A030 FF+2d, UG-11B-S02-A040 | 2d |  | F6 | UG-11B | UG-11B-S10 | A040 | 98.889521 |
| UG-11B-S10-A050 |  | Install dewatering and draw down |  | 9d | 2027-03-30 | 2027-04-08 | UG-11B-S10-A040 SS+2d, UG-11B-S10-A040 FF+2d, UG-11B-S02-A060 FS-9d | 0d |  | F6 | UG-11B | UG-11B-S10 | A050 | 49.44476 |
| UG-11B-S10-A060 |  | Excavate and strut to formation |  | 3d | 2027-04-10 | 2027-04-12 | UG-11B-S10-A050 SS+9d, UG-11B-S10-A050 FF+2d, UG-11B-S02-A060 | 0d |  | F6 | UG-11B | UG-11B-S10 | A060 | 505.028523 |
| UG-11B-S10-A070 |  | Trim piles, blinding and piled slab (incl. cure) |  | 8d | 2027-05-29 | 2027-06-06 | UG-11B-S10-A060 SS+2d, UG-11B-S10-A060 FF+2d, UG-11B-S02-A070 | 0d |  | F6 | UG-11B | UG-11B-S10 | A070 | 49.44476 |
| UG-11B-S10-A080 |  | Lay and joint pipe (incl. fittings, tie-in) |  | 2d | 2027-06-01 | 2027-06-02 | UG-11B-S10-A070 SS+3d, UG-11B-S10-A070 FF+2d, UG-11B-S02-A080 | 0d |  | F6 | UG-11B | UG-11B-S10 | A080 | 49.44476 |
| UG-11B-S10-A090 |  | Surround, joint test and line test |  | 3d | 2027-06-02 | 2027-06-05 | UG-11B-S10-A080 SS+1d, UG-11B-S10-A080 FF+2d | 0d |  | F6 | UG-11B | UG-11B-S10 | A090 | 49.44476 |
| UG-11B-S10-A100 |  | Backfill to NG and remove struts |  | 2d | 2027-06-05 | 2027-06-06 | UG-11B-S10-A090 SS+2d, UG-11B-S10-A090 FF+2d, UG-16C-S01-A080, UG-11B-S02-A100 | 0d |  | F6 | UG-11B | UG-11B-S10 | A100 | 416.455731 |
| UG-11B-S10-A110 |  | Dewatering off, extract sheets, reinstate |  | 3d | 2027-06-05 | 2027-06-07 | UG-11B-S10-A100 SS+1d, UG-11B-S10-A100 FF+2d |  |  | F6 | UG-11B | UG-11B-S10 | A110 | 98.889521 |
|  | UG-11B-S09 | **UG-11B-S09 / HDPE-UG11B-S09-FSTC-CH006-(-4.10/-4.10)-6m / Tie-in / Sheet piles** |  |  | 2026-12-01 | 2027-06-16 |  |  |  |  |  |  |  |  |
| UG-11B-S09-A010 |  | Release: drawings, holds, access and gates | milestone | 0d | 2026-12-01 | 2026-12-01 |  | 95d | start on or after 2026-12-01 | F6 | UG-11B | UG-11B-S09 | A010 |  |
| UG-11B-S09-A020 |  | Set-out, crossing survey and working platform |  | 1d | 2027-03-22 | 2027-03-22 | UG-11B-S09-A010, UG-11B-S10-A030 SS | 0d |  | F6 | UG-11B | UG-11B-S09 | A020 | 6 |
| UG-11B-S09-A030 |  | Pipe-support piling from platform (incl. integrity tests) |  | 1d | 2027-03-23 | 2027-03-23 | UG-11B-S09-A020 SS+1d, UG-11B-S09-A020 FF+2d | 0d |  | F6 | UG-11B | UG-11B-S09 | A030 | 3 |
| UG-11B-S09-A040 |  | Install sheet piles (shored lengths) |  | 1d | 2027-03-24 | 2027-03-24 | UG-11B-S09-A030 SS+1d, UG-11B-S09-A030 FF+2d | 0d |  | F6 | UG-11B | UG-11B-S09 | A040 | 12 |
| UG-11B-S09-A050 |  | Install dewatering and draw down |  | 8d | 2027-03-25 | 2027-04-03 | UG-11B-S09-A040 SS+1d, UG-11B-S09-A040 FF+2d | 0d |  | F6 | UG-11B | UG-11B-S09 | A050 | 6 |
| UG-11B-S09-A060 |  | Excavate and strut to formation |  | 1d | 2027-04-04 | 2027-04-04 | UG-11B-S09-A050 SS+9d, UG-11B-S09-A050 FF+2d | 0d |  | F6 | UG-11B | UG-11B-S09 | A060 | 61.19995 |
| UG-11B-S09-A070 |  | Trim piles, blinding and piled slab (incl. cure) |  | 4d | 2027-04-05 | 2027-04-08 | UG-11B-S09-A060 SS+1d, UG-11B-S09-A060 FF+2d | 55d |  | F6 | UG-11B | UG-11B-S09 | A070 | 6 |
| UG-11B-S09-A080 |  | Lay and joint pipe (incl. fittings, tie-in) |  | 4d | 2027-06-10 | 2027-06-14 | UG-11B-S09-A070 SS+2d, UG-11B-S09-A070 FF+2d, UG-11B-S10-A080 | 0d |  | F6 | UG-11B | UG-11B-S09 | A080 | 6 |
| UG-11B-S09-A090 |  | Surround, joint test and line test |  | 3d | 2027-06-12 | 2027-06-14 | UG-11B-S09-A080 SS+2d, UG-11B-S09-A080 FF+2d | 0d |  | F6 | UG-11B | UG-11B-S09 | A090 | 6 |
| UG-11B-S09-A100 |  | Backfill to NG and remove struts |  | 1d | 2027-06-14 | 2027-06-14 | UG-11B-S09-A090 SS+2d, UG-11B-S09-A090 FF+2d, UG-16C-S01-A080 | 0d |  | F6 | UG-11B | UG-11B-S09 | A100 | 50.487582 |
| UG-11B-S09-A110 |  | Dewatering off, extract sheets, reinstate |  | 2d | 2027-06-15 | 2027-06-16 | UG-11B-S09-A100 SS+1d, UG-11B-S09-A100 FF+2d |  |  | F6 | UG-11B | UG-11B-S09 | A110 | 12 |

Notes:
- UG-11B-S10-A010: Notes: Front F6 / Line UG-11B / Package UG-11B-S10 / Workbook logic: gates: START, D_DLU
- UG-11B-S10-A020: Notes: Front F6 / Line UG-11B / Package UG-11B-S10 / Quantity 49 m / Workbook logic: FS from A010; UG-11B-S02-A030 (SS, set-out one package ahead of piling)
- UG-11B-S10-A030: Notes: Front F6 / Line UG-11B / Package UG-11B-S10 / Quantity 36 piles / Workbook logic: gate: D_PILEDES
- UG-11B-S10-A040: Notes: Front F6 / Line UG-11B / Package UG-11B-S10 / Quantity 99 m wall
- UG-11B-S10-A050: Notes: Front F6 / Line UG-11B / Package UG-11B-S10 / Quantity 49 m / Workbook logic: UG-11B-S02-A060 (FS, negative lag = own duration: drawdown complete when the excavation crew is free)
- UG-11B-S10-A060: Notes: Front F6 / Line UG-11B / Package UG-11B-S10 / Quantity 505 m3
- UG-11B-S10-A070: Notes: Front F6 / Line UG-11B / Package UG-11B-S10 / Quantity 49 m
- UG-11B-S10-A080: Notes: Front F6 / Line UG-11B / Package UG-11B-S10 / Quantity 49 m
- UG-11B-S10-A090: Notes: Front F6 / Line UG-11B / Package UG-11B-S10 / Quantity 49 m
- UG-11B-S10-A100: Notes: Front F6 / Line UG-11B / Package UG-11B-S10 / Quantity 416 m3 / Workbook logic: UG-16C-S01-A080 (FS, shared trench laid)
- UG-11B-S10-A110: Notes: Front F6 / Line UG-11B / Package UG-11B-S10 / Quantity 99 m wall
- UG-11B-S09-A010: Notes: Front F6 / Line UG-11B / Package UG-11B-S09 / Workbook logic: gates: START, D_DLU, structure ready
- UG-11B-S09-A020: Notes: Front F6 / Line UG-11B / Package UG-11B-S09 / Quantity 6 m / Workbook logic: FS from A010; UG-11B-S10-A030 (SS, tie-in team follows the adjacent run)
- UG-11B-S09-A030: Notes: Front F6 / Line UG-11B / Package UG-11B-S09 / Quantity 3 piles / Workbook logic: gate: D_PILEDES
- UG-11B-S09-A040: Notes: Front F6 / Line UG-11B / Package UG-11B-S09 / Quantity 12 m wall
- UG-11B-S09-A050: Notes: Front F6 / Line UG-11B / Package UG-11B-S09 / Quantity 6 m
- UG-11B-S09-A060: Notes: Front F6 / Line UG-11B / Package UG-11B-S09 / Quantity 61 m3
- UG-11B-S09-A070: Notes: Front F6 / Line UG-11B / Package UG-11B-S09 / Quantity 6 m
- UG-11B-S09-A080: Notes: Front F6 / Line UG-11B / Package UG-11B-S09 / Quantity 6 m / Workbook logic: UG-11B-S10-A080 (FS, closure)
- UG-11B-S09-A090: Notes: Front F6 / Line UG-11B / Package UG-11B-S09 / Quantity 6 m
- UG-11B-S09-A100: Notes: Front F6 / Line UG-11B / Package UG-11B-S09 / Quantity 50 m3 / Workbook logic: UG-16C-S01-A080 (FS, shared trench laid)
- UG-11B-S09-A110: Notes: Front F6 / Line UG-11B / Package UG-11B-S09 / Quantity 12 m wall

| ID | WBS | Activity | Type | Duration | Start | Finish | Predecessors | Free float | Constraint | Text1 | Text2 | Text3 | Text4 | Number1 |
| --- | --- | --- | --- | --- | --- | --- | --- | --- | --- | --- | --- | --- | --- | --- |
|  | UG-11B-S12 | **UG-11B-S12 / HDPE-UG11B-S12-CH006-TEE-(-4.10/-4.10)-33m / Run / Sheet piles** |  |  | 2026-12-01 | 2027-06-17 |  |  |  |  |  |  |  |  |
| UG-11B-S12-A010 |  | Release: drawings, holds, access and gates | milestone | 0d | 2026-12-01 | 2026-12-01 |  | 95d | start on or after 2026-12-01 | F6 | UG-11B | UG-11B-S12 | A010 |  |
| UG-11B-S12-A020 |  | Set-out, crossing survey and working platform |  | 1d | 2027-03-22 | 2027-03-22 | UG-11B-S12-A010, UG-11B-S10-A030 SS | 8d |  | F6 | UG-11B | UG-11B-S12 | A020 | 32.762931 |
| UG-11B-S12-A030 |  | Pipe-support piling from platform (incl. integrity tests) |  | 5d | 2027-04-01 | 2027-04-06 | UG-11B-S12-A020 SS+1d, UG-11B-S12-A020 FF+2d, UG-11B-S10-A030 | 0d |  | F6 | UG-11B | UG-11B-S12 | A030 | 24 |
| UG-11B-S12-A040 |  | Install sheet piles (shored lengths) |  | 3d | 2027-04-03 | 2027-04-05 | UG-11B-S12-A030 SS+2d, UG-11B-S12-A030 FF+2d, UG-11B-S10-A040 | 0d |  | F6 | UG-11B | UG-11B-S12 | A040 | 65.525862 |
| UG-11B-S12-A050 |  | Install dewatering and draw down |  | 8d | 2027-04-05 | 2027-04-13 | UG-11B-S12-A040 SS+2d, UG-11B-S12-A040 FF+2d, UG-11B-S10-A060 FS-8d | 0d |  | F6 | UG-11B | UG-11B-S12 | A050 | 32.762931 |
| UG-11B-S12-A060 |  | Excavate and strut to formation |  | 2d | 2027-04-15 | 2027-04-17 | UG-11B-S12-A050 SS+9d, UG-11B-S12-A050 FF+2d, UG-11B-S10-A060 | 1d |  | F6 | UG-11B | UG-11B-S12 | A060 | 334.181901 |
| UG-11B-S12-A070 |  | Trim piles, blinding and piled slab (incl. cure) |  | 6d | 2027-06-08 | 2027-06-14 | UG-11B-S12-A060 SS+1d, UG-11B-S12-A060 FF+2d, UG-11B-S10-A070 | 0d |  | F6 | UG-11B | UG-11B-S12 | A070 | 32.762931 |
| UG-11B-S12-A080 |  | Lay and joint pipe (incl. fittings, tie-in) |  | 1d | 2027-06-12 | 2027-06-12 | UG-11B-S12-A070 SS+3d, UG-11B-S12-A070 FF+2d, UG-11B-S10-A080 | 0d |  | F6 | UG-11B | UG-11B-S12 | A080 | 32.762931 |
| UG-11B-S12-A090 |  | Surround, joint test and line test |  | 3d | 2027-06-12 | 2027-06-14 | UG-11B-S12-A080 SS+1d, UG-11B-S12-A080 FF+2d | 0d |  | F6 | UG-11B | UG-11B-S12 | A090 | 32.762931 |
| UG-11B-S12-A100 |  | Backfill to NG and remove struts |  | 1d | 2027-06-14 | 2027-06-14 | UG-11B-S12-A090 SS+2d, UG-11B-S12-A090 FF+2d, UG-16D-S01-A080, UG-11B-S10-A100 | 0d |  | F6 | UG-11B | UG-11B-S12 | A100 | 275.687022 |
| UG-11B-S12-A110 |  | Dewatering off, extract sheets, reinstate |  | 3d | 2027-06-15 | 2027-06-17 | UG-11B-S12-A100 SS+1d, UG-11B-S12-A100 FF+2d |  |  | F6 | UG-11B | UG-11B-S12 | A110 | 65.525862 |
|  | UG-11B-S11 | **UG-11B-S11 / HDPE-UG11B-S11-FSTD-CH006-(-4.10/-4.10)-6m / Tie-in / Sheet piles** |  |  | 2026-12-01 | 2027-06-23 |  |  |  |  |  |  |  |  |
| UG-11B-S11-A010 |  | Release: drawings, holds, access and gates | milestone | 0d | 2026-12-01 | 2026-12-01 |  | 104d | start on or after 2026-12-01 | F6 | UG-11B | UG-11B-S11 | A010 |  |
| UG-11B-S11-A020 |  | Set-out, crossing survey and working platform |  | 1d | 2027-04-01 | 2027-04-01 | UG-11B-S11-A010, UG-11B-S12-A030 SS | 0d |  | F6 | UG-11B | UG-11B-S11 | A020 | 6 |
| UG-11B-S11-A030 |  | Pipe-support piling from platform (incl. integrity tests) |  | 2d | 2027-04-03 | 2027-04-04 | UG-11B-S11-A020 SS+1d, UG-11B-S11-A020 FF+2d | 0d |  | F6 | UG-11B | UG-11B-S11 | A030 | 6 |
| UG-11B-S11-A040 |  | Install sheet piles (shored lengths) |  | 1d | 2027-04-03 | 2027-04-03 | UG-11B-S11-A030 SS+1d, UG-11B-S11-A030 FF+2d | 0d |  | F6 | UG-11B | UG-11B-S11 | A040 | 12 |
| UG-11B-S11-A050 |  | Install dewatering and draw down |  | 8d | 2027-04-04 | 2027-04-12 | UG-11B-S11-A040 SS+1d, UG-11B-S11-A040 FF+2d | 0d |  | F6 | UG-11B | UG-11B-S11 | A050 | 6 |
| UG-11B-S11-A060 |  | Excavate and strut to formation |  | 1d | 2027-04-14 | 2027-04-14 | UG-11B-S11-A050 SS+9d, UG-11B-S11-A050 FF+2d | 0d |  | F6 | UG-11B | UG-11B-S11 | A060 | 61.2 |
| UG-11B-S11-A070 |  | Trim piles, blinding and piled slab (incl. cure) |  | 4d | 2027-04-15 | 2027-04-19 | UG-11B-S11-A060 SS+1d, UG-11B-S11-A060 FF+2d | 52d |  | F6 | UG-11B | UG-11B-S11 | A070 | 6 |
| UG-11B-S11-A080 |  | Lay and joint pipe (incl. fittings, tie-in) |  | 4d | 2027-06-17 | 2027-06-21 | UG-11B-S11-A070 SS+2d, UG-11B-S11-A070 FF+2d, UG-11B-S12-A080 | 0d |  | F6 | UG-11B | UG-11B-S11 | A080 | 6 |
| UG-11B-S11-A090 |  | Surround, joint test and line test |  | 3d | 2027-06-19 | 2027-06-21 | UG-11B-S11-A080 SS+2d, UG-11B-S11-A080 FF+2d | 0d |  | F6 | UG-11B | UG-11B-S11 | A090 | 6 |
| UG-11B-S11-A100 |  | Backfill to NG and remove struts |  | 1d | 2027-06-21 | 2027-06-21 | UG-11B-S11-A090 SS+2d, UG-11B-S11-A090 FF+2d, UG-16D-S01-A080 | 0d |  | F6 | UG-11B | UG-11B-S11 | A100 | 50.487611 |
| UG-11B-S11-A110 |  | Dewatering off, extract sheets, reinstate |  | 2d | 2027-06-22 | 2027-06-23 | UG-11B-S11-A100 SS+1d, UG-11B-S11-A100 FF+2d |  |  | F6 | UG-11B | UG-11B-S11 | A110 | 12 |

Notes:
- UG-11B-S12-A010: Notes: Front F6 / Line UG-11B / Package UG-11B-S12 / Workbook logic: gates: START, D_DLU
- UG-11B-S12-A020: Notes: Front F6 / Line UG-11B / Package UG-11B-S12 / Quantity 33 m / Workbook logic: FS from A010; UG-11B-S10-A030 (SS, set-out one package ahead of piling)
- UG-11B-S12-A030: Notes: Front F6 / Line UG-11B / Package UG-11B-S12 / Quantity 24 piles / Workbook logic: gate: D_PILEDES
- UG-11B-S12-A040: Notes: Front F6 / Line UG-11B / Package UG-11B-S12 / Quantity 66 m wall
- UG-11B-S12-A050: Notes: Front F6 / Line UG-11B / Package UG-11B-S12 / Quantity 33 m / Workbook logic: UG-11B-S10-A060 (FS, negative lag = own duration: drawdown complete when the excavation crew is free)
- UG-11B-S12-A060: Notes: Front F6 / Line UG-11B / Package UG-11B-S12 / Quantity 334 m3
- UG-11B-S12-A070: Notes: Front F6 / Line UG-11B / Package UG-11B-S12 / Quantity 33 m
- UG-11B-S12-A080: Notes: Front F6 / Line UG-11B / Package UG-11B-S12 / Quantity 33 m
- UG-11B-S12-A090: Notes: Front F6 / Line UG-11B / Package UG-11B-S12 / Quantity 33 m
- UG-11B-S12-A100: Notes: Front F6 / Line UG-11B / Package UG-11B-S12 / Quantity 276 m3 / Workbook logic: UG-16D-S01-A080 (FS, shared trench laid)
- UG-11B-S12-A110: Notes: Front F6 / Line UG-11B / Package UG-11B-S12 / Quantity 66 m wall
- UG-11B-S11-A010: Notes: Front F6 / Line UG-11B / Package UG-11B-S11 / Workbook logic: gates: START, D_DLU, structure ready
- UG-11B-S11-A020: Notes: Front F6 / Line UG-11B / Package UG-11B-S11 / Quantity 6 m / Workbook logic: FS from A010; UG-11B-S12-A030 (SS, tie-in team follows the adjacent run)
- UG-11B-S11-A030: Notes: Front F6 / Line UG-11B / Package UG-11B-S11 / Quantity 6 piles / Workbook logic: gate: D_PILEDES
- UG-11B-S11-A040: Notes: Front F6 / Line UG-11B / Package UG-11B-S11 / Quantity 12 m wall
- UG-11B-S11-A050: Notes: Front F6 / Line UG-11B / Package UG-11B-S11 / Quantity 6 m
- UG-11B-S11-A060: Notes: Front F6 / Line UG-11B / Package UG-11B-S11 / Quantity 61 m3
- UG-11B-S11-A070: Notes: Front F6 / Line UG-11B / Package UG-11B-S11 / Quantity 6 m
- UG-11B-S11-A080: Notes: Front F6 / Line UG-11B / Package UG-11B-S11 / Quantity 6 m / Workbook logic: UG-11B-S12-A080 (FS, closure)
- UG-11B-S11-A090: Notes: Front F6 / Line UG-11B / Package UG-11B-S11 / Quantity 6 m
- UG-11B-S11-A100: Notes: Front F6 / Line UG-11B / Package UG-11B-S11 / Quantity 50 m3 / Workbook logic: UG-16D-S01-A080 (FS, shared trench laid)
- UG-11B-S11-A110: Notes: Front F6 / Line UG-11B / Package UG-11B-S11 / Quantity 12 m wall

| ID | WBS | Activity | Type | Duration | Start | Finish | Predecessors | Free float | Constraint | Text1 | Text2 | Text3 | Text4 | Number1 |
| --- | --- | --- | --- | --- | --- | --- | --- | --- | --- | --- | --- | --- | --- | --- |
|  | UG-11B-S13 | **UG-11B-S13 / HDPE-UG11B-S13-TEE-CH018-(-4.63/-4.63)-18m / Run / Sheet piles** |  |  | 2026-12-01 | 2027-06-23 |  |  |  |  |  |  |  |  |
| UG-11B-S13-A010 |  | Release: drawings, holds, access and gates | milestone | 0d | 2026-12-01 | 2026-12-01 |  | 104d | start on or after 2026-12-01 | F6 | UG-11B | UG-11B-S13 | A010 |  |
| UG-11B-S13-A020 |  | Set-out, crossing survey and working platform |  | 1d | 2027-04-01 | 2027-04-01 | UG-11B-S13-A010, UG-11B-S12-A030 SS | 4d |  | F6 | UG-11B | UG-11B-S13 | A020 | 18.1 |
| UG-11B-S13-A030 |  | Pipe-support piling from platform (incl. integrity tests) |  | 4d | 2027-04-07 | 2027-04-11 | UG-11B-S13-A020 SS+1d, UG-11B-S13-A020 FF+2d, UG-11B-S12-A030 | 0d |  | F6 | UG-11B | UG-11B-S13 | A030 | 16 |
| UG-11B-S13-A040 |  | Install sheet piles (shored lengths) |  | 2d | 2027-04-10 | 2027-04-11 | UG-11B-S13-A030 SS+2d, UG-11B-S13-A030 FF+2d, UG-11B-S12-A040 | 0d |  | F6 | UG-11B | UG-11B-S13 | A040 | 36.2 |
| UG-11B-S13-A050 |  | Install dewatering and draw down |  | 8d | 2027-04-10 | 2027-04-18 | UG-11B-S13-A040 SS+1d, UG-11B-S13-A040 FF+2d, UG-11B-S12-A060 FS-8d | 0d |  | F6 | UG-11B | UG-11B-S13 | A050 | 18.1 |
| UG-11B-S13-A060 |  | Excavate and strut to formation |  | 2d | 2027-04-20 | 2027-04-21 | UG-11B-S13-A050 SS+9d, UG-11B-S13-A050 FF+2d, UG-11B-S12-A060 | 3d |  | F6 | UG-11B | UG-11B-S13 | A060 | 289.836315 |
| UG-11B-S13-A070 |  | Trim piles, blinding and piled slab (incl. cure) |  | 5d | 2027-06-15 | 2027-06-20 | UG-11B-S13-A060 SS+1d, UG-11B-S13-A060 FF+2d, UG-11B-S12-A070 | 0d |  | F6 | UG-11B | UG-11B-S13 | A070 | 18.1 |
| UG-11B-S13-A080 |  | Lay and joint pipe (incl. fittings, tie-in) |  | 1d | 2027-06-17 | 2027-06-17 | UG-11B-S13-A070 SS+2d, UG-11B-S13-A070 FF+2d, UG-11B-S12-A080 | 0d |  | F6 | UG-11B | UG-11B-S13 | A080 | 18.1 |
| UG-11B-S13-A090 |  | Surround, joint test and line test |  | 3d | 2027-06-19 | 2027-06-21 | UG-11B-S13-A080 SS+1d, UG-11B-S13-A080 FF+2d | 0d |  | F6 | UG-11B | UG-11B-S13 | A090 | 18.1 |
| UG-11B-S13-A100 |  | Backfill to NG and remove struts |  | 1d | 2027-06-21 | 2027-06-21 | UG-11B-S13-A090 SS+2d, UG-11B-S13-A090 FF+2d, UG-11B-S12-A100 | 0d |  | F6 | UG-11B | UG-11B-S13 | A100 | 201.16716 |
| UG-11B-S13-A110 |  | Dewatering off, extract sheets, reinstate |  | 2d | 2027-06-22 | 2027-06-23 | UG-11B-S13-A100 SS+1d, UG-11B-S13-A100 FF+2d |  |  | F6 | UG-11B | UG-11B-S13 | A110 | 36.2 |
|  | UG-16A | **UG-16A** |  |  | 2026-12-01 | 2027-06-08 |  |  |  |  |  |  |  |  |
|  | UG-16A-S01 | **UG-16A-S01 / HDPE-UG16A-S01-SDCA-FSTA-(0.79/-4.00)-38m / Short connection / Mixed: 28 m sheet piles** |  |  | 2026-12-01 | 2027-06-08 |  |  |  |  |  |  |  |  |
| UG-16A-S01-A010 |  | Release: drawings, holds, access and gates | milestone | 0d | 2026-12-01 | 2026-12-01 |  | 0d | start on or after 2026-12-01 | F6 | UG-16A | UG-16A-S01 | A010 |  |
| UG-16A-S01-A020 |  | Set-out, crossing survey and working platform |  | 1d | 2026-12-01 | 2026-12-01 | UG-16A-S01-A010 | 0d |  | F6 | UG-16A | UG-16A-S01 | A020 | 37.777533 |
| UG-16A-S01-A030 |  | Pipe-support piling from platform (incl. integrity tests) |  | 6d | 2026-12-02 | 2026-12-08 | UG-16A-S01-A020 SS+1d, UG-16A-S01-A020 FF+2d | 0d |  | F6 | UG-16A | UG-16A-S01 | A030 | 28 |
| UG-16A-S01-A040 |  | Install sheet piles (shored lengths) |  | 3d | 2026-12-05 | 2026-12-07 | UG-16A-S01-A030 SS+3d, UG-16A-S01-A030 FF+2d | 0d |  | F6 | UG-16A | UG-16A-S01 | A040 | 55.555066 |
| UG-16A-S01-A050 |  | Install dewatering and draw down |  | 8d | 2026-12-07 | 2026-12-15 | UG-16A-S01-A040 SS+2d, UG-16A-S01-A040 FF+2d | 94d |  | F6 | UG-16A | UG-16A-S01 | A050 | 37.777533 |
| UG-16A-S01-A060 |  | Excavate and strut to formation |  | 2d | 2027-04-06 | 2027-04-07 | UG-16A-S01-A050 SS+9d, UG-16A-S01-A050 FF+2d, UG-10-S05-A100, UG-11B-S01-A060 SS, UG-11B-S02-A060 SS | 0d |  | F6 | UG-16A | UG-16A-S01 | A060 | 394.901745 |
| UG-16A-S01-A070 |  | Trim piles, blinding and piled slab (incl. cure) |  | 7d | 2027-04-07 | 2027-04-14 | UG-16A-S01-A060 SS+1d, UG-16A-S01-A060 FF+2d | 0d |  | F6 | UG-16A | UG-16A-S01 | A070 | 37.777533 |
| UG-16A-S01-A080 |  | Lay and joint pipe (incl. fittings, tie-in) |  | 9d | 2027-04-10 | 2027-04-19 | UG-16A-S01-A070 SS+3d, UG-16A-S01-A070 FF+2d | 0d |  | F6 | UG-16A | UG-16A-S01 | A080 | 37.777533 |
| UG-16A-S01-A090 |  | Surround, joint test and line test |  | 3d | 2027-04-14 | 2027-04-17 | UG-16A-S01-A080 SS+3d, UG-16A-S01-A080 FF+2d | 40d |  | F6 | UG-16A | UG-16A-S01 | A090 | 37.777533 |
| UG-16A-S01-A100 |  | Backfill to NG and remove struts |  | 1d | 2027-06-05 | 2027-06-05 | UG-16A-S01-A090 SS+2d, UG-16A-S01-A090 FF+2d, UG-11B-S01-A080, UG-11B-S02-A080 | 0d |  | F6 | UG-16A | UG-16A-S01 | A100 | 280.22892 |
| UG-16A-S01-A110 |  | Dewatering off, extract sheets, reinstate |  | 3d | 2027-06-06 | 2027-06-08 | UG-16A-S01-A100 SS+1d, UG-16A-S01-A100 FF+2d |  |  | F6 | UG-16A | UG-16A-S01 | A110 | 55.555066 |

Notes:
- UG-11B-S13-A010: Notes: Front F6 / Line UG-11B / Package UG-11B-S13 / Workbook logic: gates: START, D_DLU
- UG-11B-S13-A020: Notes: Front F6 / Line UG-11B / Package UG-11B-S13 / Quantity 18 m / Workbook logic: FS from A010; UG-11B-S12-A030 (SS, set-out one package ahead of piling)
- UG-11B-S13-A030: Notes: Front F6 / Line UG-11B / Package UG-11B-S13 / Quantity 16 piles / Workbook logic: gate: D_PILEDES
- UG-11B-S13-A040: Notes: Front F6 / Line UG-11B / Package UG-11B-S13 / Quantity 36 m wall
- UG-11B-S13-A050: Notes: Front F6 / Line UG-11B / Package UG-11B-S13 / Quantity 18 m / Workbook logic: UG-11B-S12-A060 (FS, negative lag = own duration: drawdown complete when the excavation crew is free)
- UG-11B-S13-A060: Notes: Front F6 / Line UG-11B / Package UG-11B-S13 / Quantity 290 m3
- UG-11B-S13-A070: Notes: Front F6 / Line UG-11B / Package UG-11B-S13 / Quantity 18 m
- UG-11B-S13-A080: Notes: Front F6 / Line UG-11B / Package UG-11B-S13 / Quantity 18 m
- UG-11B-S13-A090: Notes: Front F6 / Line UG-11B / Package UG-11B-S13 / Quantity 18 m
- UG-11B-S13-A100: Notes: Front F6 / Line UG-11B / Package UG-11B-S13 / Quantity 201 m3
- UG-11B-S13-A110: Notes: Front F6 / Line UG-11B / Package UG-11B-S13 / Quantity 36 m wall
- UG-16A-S01-A010: Notes: Front F6 / Line UG-16A / Package UG-16A-S01 / Workbook logic: gates: START, D_DLU, structure ready
- UG-16A-S01-A020: Notes: Front F6 / Line UG-16A / Package UG-16A-S01 / Quantity 38 m / Workbook logic: FS from A010
- UG-16A-S01-A030: Notes: Front F6 / Line UG-16A / Package UG-16A-S01 / Quantity 28 piles / Workbook logic: gate: D_PILEDES
- UG-16A-S01-A040: Notes: Front F6 / Line UG-16A / Package UG-16A-S01 / Quantity 56 m wall
- UG-16A-S01-A050: Notes: Front F6 / Line UG-16A / Package UG-16A-S01 / Quantity 38 m
- UG-16A-S01-A060: Notes: Front F6 / Line UG-16A / Package UG-16A-S01 / Quantity 395 m3 / Workbook logic: UG-10-S05-A100 (FS, deeper first); UG-11B-S01-A060 (SS, shared trench); UG-11B-S02-A060 (SS, shared trench)
- UG-16A-S01-A070: Notes: Front F6 / Line UG-16A / Package UG-16A-S01 / Quantity 38 m
- UG-16A-S01-A080: Notes: Front F6 / Line UG-16A / Package UG-16A-S01 / Quantity 38 m
- UG-16A-S01-A090: Notes: Front F6 / Line UG-16A / Package UG-16A-S01 / Quantity 38 m
- UG-16A-S01-A100: Notes: Front F6 / Line UG-16A / Package UG-16A-S01 / Quantity 280 m3 / Workbook logic: UG-11B-S01-A080 (FS, shared trench laid); UG-11B-S02-A080 (FS, shared trench laid)
- UG-16A-S01-A110: Notes: Front F6 / Line UG-16A / Package UG-16A-S01 / Quantity 56 m wall

| ID | WBS | Activity | Type | Duration | Start | Finish | Predecessors | Free float | Constraint | Text1 | Text2 | Text3 | Text4 | Number1 |
| --- | --- | --- | --- | --- | --- | --- | --- | --- | --- | --- | --- | --- | --- | --- |
|  | UG-16C | **UG-16C** |  |  | 2026-12-01 | 2027-06-17 |  |  |  |  |  |  |  |  |
|  | UG-16C-S01 | **UG-16C-S01 / HDPE-UG16C-S01-SDCA-FSTC-(0.80/-4.00)-38m / Short connection / Open cut** |  |  | 2026-12-01 | 2027-06-17 |  |  |  |  |  |  |  |  |
| UG-16C-S01-A010 |  | Release: drawings, holds, access and gates | milestone | 0d | 2026-12-01 | 2026-12-01 |  | 0d | start on or after 2026-12-01 | F6 | UG-16C | UG-16C-S01 | A010 |  |
| UG-16C-S01-A020 |  | Set-out, crossing survey and working platform |  | 1d | 2026-12-01 | 2026-12-01 | UG-16C-S01-A010 | 0d |  | F6 | UG-16C | UG-16C-S01 | A020 | 38.38381 |
| UG-16C-S01-A030 |  | Pipe-support piling from platform (incl. integrity tests) |  | 6d | 2026-12-02 | 2026-12-08 | UG-16C-S01-A020 SS+1d, UG-16C-S01-A020 FF+2d | 0d |  | F6 | UG-16C | UG-16C-S01 | A030 | 28 |
| UG-16C-S01-A050 |  | Install dewatering and draw down |  | 8d | 2026-12-05 | 2026-12-13 | UG-16C-S01-A030 SS+3d, UG-16C-S01-A030 SF+5d, UG-16C-S01-A030 FF+2d | 99d |  | F6 | UG-16C | UG-16C-S01 | A050 | 38.38381 |
| UG-16C-S01-A060 |  | Excavate and strut to formation |  | 3d | 2027-04-10 | 2027-04-12 | UG-16C-S01-A050 SS+9d, UG-16C-S01-A050 FF+2d, UG-11B-S09-A060 SS, UG-11B-S10-A060 SS | 0d |  | F6 | UG-16C | UG-16C-S01 | A060 | 1012.689017 |
| UG-16C-S01-A070 |  | Trim piles, blinding and piled slab (incl. cure) |  | 7d | 2027-04-12 | 2027-04-19 | UG-16C-S01-A060 SS+2d, UG-16C-S01-A060 FF+2d | 0d |  | F6 | UG-16C | UG-16C-S01 | A070 | 38.38381 |
| UG-16C-S01-A080 |  | Lay and joint pipe (incl. fittings, tie-in) |  | 7d | 2027-04-15 | 2027-04-22 | UG-16C-S01-A070 SS+3d, UG-16C-S01-A070 FF+2d | 0d |  | F6 | UG-16C | UG-16C-S01 | A080 | 38.38381 |
| UG-16C-S01-A090 |  | Surround, joint test and line test |  | 3d | 2027-04-18 | 2027-04-20 | UG-16C-S01-A080 SS+3d, UG-16C-S01-A080 FF+2d | 48d |  | F6 | UG-16C | UG-16C-S01 | A090 | 38.38381 |
| UG-16C-S01-A100 |  | Backfill to NG and remove struts |  | 3d | 2027-06-15 | 2027-06-17 | UG-16C-S01-A090 SS+2d, UG-16C-S01-A090 FF+2d, UG-11B-S09-A080, UG-11B-S10-A080 | 0d |  | F6 | UG-16C | UG-16C-S01 | A100 | 895.525926 |
| UG-16C-S01-A110 |  | Dewatering off, extract sheets, reinstate |  | 1d | 2027-06-17 | 2027-06-17 | UG-16C-S01-A100 SS+2d, UG-16C-S01-A100 FF+2d |  |  | F6 | UG-16C | UG-16C-S01 | A110 | 0 |
|  | UG-16D | **UG-16D** |  |  | 2026-12-01 | 2027-06-26 |  |  |  |  |  |  |  |  |
|  | UG-16D-S01 | **UG-16D-S01 / HDPE-UG16D-S01-SDCA-FSTD-(0.79/-4.00)-36m / Short connection / Mixed: 26 m sheet piles** |  |  | 2026-12-01 | 2027-06-26 |  |  |  |  |  |  |  |  |
| UG-16D-S01-A010 |  | Release: drawings, holds, access and gates | milestone | 0d | 2026-12-01 | 2026-12-01 |  | 0d | start on or after 2026-12-01 | F6 | UG-16D | UG-16D-S01 | A010 |  |
| UG-16D-S01-A020 |  | Set-out, crossing survey and working platform |  | 1d | 2026-12-01 | 2026-12-01 | UG-16D-S01-A010 | 0d |  | F6 | UG-16D | UG-16D-S01 | A020 | 36.300132 |
| UG-16D-S01-A030 |  | Pipe-support piling from platform (incl. integrity tests) |  | 6d | 2026-12-02 | 2026-12-08 | UG-16D-S01-A020 SS+1d, UG-16D-S01-A020 FF+2d | 0d |  | F6 | UG-16D | UG-16D-S01 | A030 | 28 |
| UG-16D-S01-A040 |  | Install sheet piles (shored lengths) |  | 3d | 2026-12-05 | 2026-12-07 | UG-16D-S01-A030 SS+3d, UG-16D-S01-A030 FF+2d | 0d |  | F6 | UG-16D | UG-16D-S01 | A040 | 52.600263 |
| UG-16D-S01-A050 |  | Install dewatering and draw down |  | 8d | 2026-12-07 | 2026-12-15 | UG-16D-S01-A040 SS+2d, UG-16D-S01-A040 FF+2d | 119d |  | F6 | UG-16D | UG-16D-S01 | A050 | 36.300132 |
| UG-16D-S01-A060 |  | Excavate and strut to formation |  | 2d | 2027-05-05 | 2027-05-06 | UG-16D-S01-A050 SS+9d, UG-16D-S01-A050 FF+2d, UG-11B-S07-A100, UG-11B-S11-A060 SS, UG-11B-S12-A060 SS | 0d |  | F6 | UG-16D | UG-16D-S01 | A060 | 376.844773 |
| UG-16D-S01-A070 |  | Trim piles, blinding and piled slab (incl. cure) |  | 7d | 2027-05-06 | 2027-05-13 | UG-16D-S01-A060 SS+1d, UG-16D-S01-A060 FF+2d | 0d |  | F6 | UG-16D | UG-16D-S01 | A070 | 36.300132 |
| UG-16D-S01-A080 |  | Lay and joint pipe (incl. fittings, tie-in) |  | 8d | 2027-05-09 | 2027-05-17 | UG-16D-S01-A070 SS+3d, UG-16D-S01-A070 FF+2d | 0d |  | F6 | UG-16D | UG-16D-S01 | A080 | 36.300132 |
| UG-16D-S01-A090 |  | Surround, joint test and line test |  | 3d | 2027-05-12 | 2027-05-15 | UG-16D-S01-A080 SS+3d, UG-16D-S01-A080 FF+2d | 31d |  | F6 | UG-16D | UG-16D-S01 | A090 | 36.300132 |
| UG-16D-S01-A100 |  | Backfill to NG and remove struts |  | 1d | 2027-06-22 | 2027-06-22 | UG-16D-S01-A090 SS+2d, UG-16D-S01-A090 FF+2d, UG-11B-S11-A080, UG-11B-S12-A080 | 0d |  | F6 | UG-16D | UG-16D-S01 | A100 | 267.835626 |
| UG-16D-S01-A110 |  | Dewatering off, extract sheets, reinstate |  | 3d | 2027-06-23 | 2027-06-26 | UG-16D-S01-A100 SS+1d, UG-16D-S01-A100 FF+2d |  |  | F6 | UG-16D | UG-16D-S01 | A110 | 52.600263 |

Notes:
- UG-16C-S01-A010: Notes: Front F6 / Line UG-16C / Package UG-16C-S01 / Workbook logic: gates: START, D_DLU, structure ready
- UG-16C-S01-A020: Notes: Front F6 / Line UG-16C / Package UG-16C-S01 / Quantity 38 m / Workbook logic: FS from A010
- UG-16C-S01-A030: Notes: Front F6 / Line UG-16C / Package UG-16C-S01 / Quantity 28 piles / Workbook logic: gate: D_PILEDES
- UG-16C-S01-A050: Notes: Front F6 / Line UG-16C / Package UG-16C-S01 / Quantity 38 m
- UG-16C-S01-A060: Notes: Front F6 / Line UG-16C / Package UG-16C-S01 / Quantity 1,013 m3 / Workbook logic: UG-11B-S09-A060 (SS, shared trench); UG-11B-S10-A060 (SS, shared trench)
- UG-16C-S01-A070: Notes: Front F6 / Line UG-16C / Package UG-16C-S01 / Quantity 38 m
- UG-16C-S01-A080: Notes: Front F6 / Line UG-16C / Package UG-16C-S01 / Quantity 38 m
- UG-16C-S01-A090: Notes: Front F6 / Line UG-16C / Package UG-16C-S01 / Quantity 38 m
- UG-16C-S01-A100: Notes: Front F6 / Line UG-16C / Package UG-16C-S01 / Quantity 896 m3 / Workbook logic: UG-11B-S09-A080 (FS, shared trench laid); UG-11B-S10-A080 (FS, shared trench laid)
- UG-16C-S01-A110: Notes: Front F6 / Line UG-16C / Package UG-16C-S01 / Quantity 0 m wall
- UG-16D-S01-A010: Notes: Front F6 / Line UG-16D / Package UG-16D-S01 / Workbook logic: gates: START, D_DLU, structure ready
- UG-16D-S01-A020: Notes: Front F6 / Line UG-16D / Package UG-16D-S01 / Quantity 36 m / Workbook logic: FS from A010
- UG-16D-S01-A030: Notes: Front F6 / Line UG-16D / Package UG-16D-S01 / Quantity 28 piles / Workbook logic: gate: D_PILEDES
- UG-16D-S01-A040: Notes: Front F6 / Line UG-16D / Package UG-16D-S01 / Quantity 53 m wall
- UG-16D-S01-A050: Notes: Front F6 / Line UG-16D / Package UG-16D-S01 / Quantity 36 m
- UG-16D-S01-A060: Notes: Front F6 / Line UG-16D / Package UG-16D-S01 / Quantity 377 m3 / Workbook logic: UG-11B-S07-A100 (FS, deeper first); UG-11B-S11-A060 (SS, shared trench); UG-11B-S12-A060 (SS, shared trench)
- UG-16D-S01-A070: Notes: Front F6 / Line UG-16D / Package UG-16D-S01 / Quantity 36 m
- UG-16D-S01-A080: Notes: Front F6 / Line UG-16D / Package UG-16D-S01 / Quantity 36 m
- UG-16D-S01-A090: Notes: Front F6 / Line UG-16D / Package UG-16D-S01 / Quantity 36 m
- UG-16D-S01-A100: Notes: Front F6 / Line UG-16D / Package UG-16D-S01 / Quantity 268 m3 / Workbook logic: UG-11B-S11-A080 (FS, shared trench laid); UG-11B-S12-A080 (FS, shared trench laid)
- UG-16D-S01-A110: Notes: Front F6 / Line UG-16D / Package UG-16D-S01 / Quantity 53 m wall

| ID | WBS | Activity | Type | Duration | Start | Finish | Predecessors | Free float | Constraint | Text1 | Text2 | Text3 | Text4 | Number1 |
| --- | --- | --- | --- | --- | --- | --- | --- | --- | --- | --- | --- | --- | --- | --- |
|  | UG-14G | **UG-14G** |  |  | 2026-12-01 | 2027-07-26 |  |  |  |  |  |  |  |  |
|  | UG-14G-S01 | **UG-14G-S01 / HDPE-UG14G-S01-SDCB-FSTG-(0.81/-3.98)-38m / Short connection / Open cut** |  |  | 2026-12-01 | 2027-07-26 |  |  |  |  |  |  |  |  |
| UG-14G-S01-A010 |  | Release: drawings, holds, access and gates | milestone | 0d | 2026-12-01 | 2026-12-01 |  | 0d | start on or after 2026-12-01 | F6 | UG-14G | UG-14G-S01 | A010 |  |
| UG-14G-S01-A020 |  | Set-out, crossing survey and working platform |  | 1d | 2026-12-01 | 2026-12-01 | UG-14G-S01-A010 | 0d |  | F6 | UG-14G | UG-14G-S01 | A020 | 38.298824 |
| UG-14G-S01-A030 |  | Pipe-support piling from platform (incl. integrity tests) |  | 6d | 2026-12-02 | 2026-12-08 | UG-14G-S01-A020 SS+1d, UG-14G-S01-A020 FF+2d | 0d |  | F6 | UG-14G | UG-14G-S01 | A030 | 28 |
| UG-14G-S01-A050 |  | Install dewatering and draw down |  | 8d | 2026-12-05 | 2026-12-13 | UG-14G-S01-A030 SS+3d, UG-14G-S01-A030 SF+5d, UG-14G-S01-A030 FF+2d | 137d |  | F6 | UG-14G | UG-14G-S01 | A050 | 38.298824 |
| UG-14G-S01-A060 |  | Excavate and strut to formation |  | 3d | 2027-05-24 | 2027-05-26 | UG-14G-S01-A050 SS+9d, UG-14G-S01-A050 FF+2d, UG-13B-S02-A100, UG-13B-S03-A100, UG-11A-S01-A060 SS, UG-11A-S02-A060 SS | 0d |  | F6 | UG-14G | UG-14G-S01 | A060 | 988.520717 |
| UG-14G-S01-A070 |  | Trim piles, blinding and piled slab (incl. cure) |  | 7d | 2027-05-26 | 2027-06-02 | UG-14G-S01-A060 SS+2d, UG-14G-S01-A060 FF+2d | 0d |  | F6 | UG-14G | UG-14G-S01 | A070 | 38.298824 |
| UG-14G-S01-A080 |  | Lay and joint pipe (incl. fittings, tie-in) |  | 9d | 2027-05-29 | 2027-06-07 | UG-14G-S01-A070 SS+3d, UG-14G-S01-A070 FF+2d | 0d |  | F6 | UG-14G | UG-14G-S01 | A080 | 38.298824 |
| UG-14G-S01-A090 |  | Surround, joint test and line test |  | 3d | 2027-06-02 | 2027-06-05 | UG-14G-S01-A080 SS+3d, UG-14G-S01-A080 FF+2d | 42d |  | F6 | UG-14G | UG-14G-S01 | A090 | 38.298824 |
| UG-14G-S01-A100 |  | Backfill to NG and remove struts |  | 3d | 2027-07-24 | 2027-07-26 | UG-14G-S01-A090 SS+2d, UG-14G-S01-A090 FF+2d, UG-11A-S01-A080, UG-11A-S02-A080 | 0d |  | F6 | UG-14G | UG-14G-S01 | A100 | 873.697233 |
| UG-14G-S01-A110 |  | Dewatering off, extract sheets, reinstate |  | 1d | 2027-07-26 | 2027-07-26 | UG-14G-S01-A100 SS+2d, UG-14G-S01-A100 FF+2d |  |  | F6 | UG-14G | UG-14G-S01 | A110 | 0 |
|  | UG-14H | **UG-14H** |  |  | 2026-12-01 | 2027-08-04 |  |  |  |  |  |  |  |  |
|  | UG-14H-S01 | **UG-14H-S01 / HDPE-UG14H-S01-SDCB-FSTH-(0.81/-3.98)-38m / Short connection / Open cut** |  |  | 2026-12-01 | 2027-08-04 |  |  |  |  |  |  |  |  |
| UG-14H-S01-A010 |  | Release: drawings, holds, access and gates | milestone | 0d | 2026-12-01 | 2026-12-01 |  | 0d | start on or after 2026-12-01 | F6 | UG-14H | UG-14H-S01 | A010 |  |
| UG-14H-S01-A020 |  | Set-out, crossing survey and working platform |  | 1d | 2026-12-01 | 2026-12-01 | UG-14H-S01-A010 | 0d |  | F6 | UG-14H | UG-14H-S01 | A020 | 38.176597 |
| UG-14H-S01-A030 |  | Pipe-support piling from platform (incl. integrity tests) |  | 6d | 2026-12-02 | 2026-12-08 | UG-14H-S01-A020 SS+1d, UG-14H-S01-A020 FF+2d | 0d |  | F6 | UG-14H | UG-14H-S01 | A030 | 28 |
| UG-14H-S01-A050 |  | Install dewatering and draw down |  | 8d | 2026-12-05 | 2026-12-13 | UG-14H-S01-A030 SS+3d, UG-14H-S01-A030 SF+5d, UG-14H-S01-A030 FF+2d | 134d |  | F6 | UG-14H | UG-14H-S01 | A050 | 38.176597 |
| UG-14H-S01-A060 |  | Excavate and strut to formation |  | 3d | 2027-05-20 | 2027-05-23 | UG-14H-S01-A050 SS+9d, UG-14H-S01-A050 FF+2d, UG-13B-S04-A100, UG-11A-S06-A060 SS, UG-11A-S07-A060 SS | 0d |  | F6 | UG-14H | UG-14H-S01 | A060 | 988.371591 |
| UG-14H-S01-A070 |  | Trim piles, blinding and piled slab (incl. cure) |  | 7d | 2027-05-22 | 2027-05-29 | UG-14H-S01-A060 SS+2d, UG-14H-S01-A060 FF+2d | 0d |  | F6 | UG-14H | UG-14H-S01 | A070 | 38.176597 |
| UG-14H-S01-A080 |  | Lay and joint pipe (incl. fittings, tie-in) |  | 9d | 2027-05-25 | 2027-06-03 | UG-14H-S01-A070 SS+3d, UG-14H-S01-A070 FF+2d | 0d |  | F6 | UG-14H | UG-14H-S01 | A080 | 38.176597 |
| UG-14H-S01-A090 |  | Surround, joint test and line test |  | 3d | 2027-05-29 | 2027-05-31 | UG-14H-S01-A080 SS+3d, UG-14H-S01-A080 FF+2d | 54d |  | F6 | UG-14H | UG-14H-S01 | A090 | 38.176597 |
| UG-14H-S01-A100 |  | Backfill to NG and remove struts |  | 3d | 2027-08-02 | 2027-08-04 | UG-14H-S01-A090 SS+2d, UG-14H-S01-A090 FF+2d, UG-11A-S06-A080, UG-11A-S07-A080 | 0d |  | F6 | UG-14H | UG-14H-S01 | A100 | 873.63396 |
| UG-14H-S01-A110 |  | Dewatering off, extract sheets, reinstate |  | 1d | 2027-08-04 | 2027-08-04 | UG-14H-S01-A100 SS+2d, UG-14H-S01-A100 FF+2d |  |  | F6 | UG-14H | UG-14H-S01 | A110 | 0 |

Notes:
- UG-14G-S01-A010: Notes: Front F6 / Line UG-14G / Package UG-14G-S01 / Workbook logic: gates: START, D_DLU, structure ready
- UG-14G-S01-A020: Notes: Front F6 / Line UG-14G / Package UG-14G-S01 / Quantity 38 m / Workbook logic: FS from A010
- UG-14G-S01-A030: Notes: Front F6 / Line UG-14G / Package UG-14G-S01 / Quantity 28 piles / Workbook logic: gate: D_PILEDES
- UG-14G-S01-A050: Notes: Front F6 / Line UG-14G / Package UG-14G-S01 / Quantity 38 m
- UG-14G-S01-A060: Notes: Front F6 / Line UG-14G / Package UG-14G-S01 / Quantity 989 m3 / Workbook logic: UG-13B-S02-A100 (FS, deeper first); UG-13B-S03-A100 (FS, deeper first); UG-11A-S01-A060 (SS, shared trench); UG-11A-S02-A060 (SS, shared trench)
- UG-14G-S01-A070: Notes: Front F6 / Line UG-14G / Package UG-14G-S01 / Quantity 38 m
- UG-14G-S01-A080: Notes: Front F6 / Line UG-14G / Package UG-14G-S01 / Quantity 38 m
- UG-14G-S01-A090: Notes: Front F6 / Line UG-14G / Package UG-14G-S01 / Quantity 38 m
- UG-14G-S01-A100: Notes: Front F6 / Line UG-14G / Package UG-14G-S01 / Quantity 874 m3 / Workbook logic: UG-11A-S01-A080 (FS, shared trench laid); UG-11A-S02-A080 (FS, shared trench laid)
- UG-14G-S01-A110: Notes: Front F6 / Line UG-14G / Package UG-14G-S01 / Quantity 0 m wall
- UG-14H-S01-A010: Notes: Front F6 / Line UG-14H / Package UG-14H-S01 / Workbook logic: gates: START, D_DLU, structure ready
- UG-14H-S01-A020: Notes: Front F6 / Line UG-14H / Package UG-14H-S01 / Quantity 38 m / Workbook logic: FS from A010
- UG-14H-S01-A030: Notes: Front F6 / Line UG-14H / Package UG-14H-S01 / Quantity 28 piles / Workbook logic: gate: D_PILEDES
- UG-14H-S01-A050: Notes: Front F6 / Line UG-14H / Package UG-14H-S01 / Quantity 38 m
- UG-14H-S01-A060: Notes: Front F6 / Line UG-14H / Package UG-14H-S01 / Quantity 988 m3 / Workbook logic: UG-13B-S04-A100 (FS, deeper first); UG-11A-S06-A060 (SS, shared trench); UG-11A-S07-A060 (SS, shared trench)
- UG-14H-S01-A070: Notes: Front F6 / Line UG-14H / Package UG-14H-S01 / Quantity 38 m
- UG-14H-S01-A080: Notes: Front F6 / Line UG-14H / Package UG-14H-S01 / Quantity 38 m
- UG-14H-S01-A090: Notes: Front F6 / Line UG-14H / Package UG-14H-S01 / Quantity 38 m
- UG-14H-S01-A100: Notes: Front F6 / Line UG-14H / Package UG-14H-S01 / Quantity 874 m3 / Workbook logic: UG-11A-S06-A080 (FS, shared trench laid); UG-11A-S07-A080 (FS, shared trench laid)
- UG-14H-S01-A110: Notes: Front F6 / Line UG-14H / Package UG-14H-S01 / Quantity 0 m wall

| ID | WBS | Activity | Type | Duration | Start | Finish | Predecessors | Free float | Constraint | Text1 | Text2 | Text3 | Text4 | Number1 |
| --- | --- | --- | --- | --- | --- | --- | --- | --- | --- | --- | --- | --- | --- | --- |
|  | F7 | **F7 Sludge I-L,E,F to RAS/WAS** |  |  | 2026-12-01 | 2027-08-04 |  |  |  |  |  |  |  |  |
|  | UG-12 | **UG-12** |  |  | 2026-12-01 | 2027-03-11 |  |  |  |  |  |  |  |  |
|  | UG-12-S04 | **UG-12-S04 / GRP-UG12-S04-CH101-CH143-(-6.34/-6.18)-42m / Run / Sheet piles** |  |  | 2026-12-01 | 2027-01-14 |  |  |  |  |  |  |  |  |
| UG-12-S04-A010 |  | Release: drawings, holds, access and gates | milestone | 0d | 2026-12-01 | 2026-12-01 |  | 0d | start on or after 2026-12-01 | F7 | UG-12 | UG-12-S04 | A010 |  |
| UG-12-S04-A020 |  | Set-out, crossing survey and working platform |  | 1d | 2026-12-01 | 2026-12-01 | UG-12-S04-A010 | 0d |  | F7 | UG-12 | UG-12-S04 | A020 | 42.1 |
| UG-12-S04-A030 |  | Pipe-support piling from platform (incl. integrity tests) |  | 7d | 2026-12-02 | 2026-12-09 | UG-12-S04-A020 SS+1d, UG-12-S04-A020 FF+2d | 0d |  | F7 | UG-12 | UG-12-S04 | A030 | 32 |
| UG-12-S04-A040 |  | Install sheet piles (shored lengths) |  | 4d | 2026-12-05 | 2026-12-08 | UG-12-S04-A030 SS+3d, UG-12-S04-A030 FF+2d | 0d |  | F7 | UG-12 | UG-12-S04 | A040 | 84.2 |
| UG-12-S04-A050 |  | Install dewatering and draw down |  | 9d | 2026-12-07 | 2026-12-16 | UG-12-S04-A040 SS+2d, UG-12-S04-A040 FF+2d | 0d |  | F7 | UG-12 | UG-12-S04 | A050 | 42.1 |
| UG-12-S04-A060 |  | Excavate and strut to formation |  | 4d | 2026-12-17 | 2026-12-21 | UG-12-S04-A050 SS+9d, UG-12-S04-A050 FF+2d | 0d |  | F7 | UG-12 | UG-12-S04 | A060 | 952.338693 |
| UG-12-S04-A070 |  | Trim piles, blinding and piled slab (incl. cure) |  | 7d | 2026-12-19 | 2026-12-26 | UG-12-S04-A060 SS+2d, UG-12-S04-A060 FF+2d | 0d |  | F7 | UG-12 | UG-12-S04 | A070 | 42.1 |
| UG-12-S04-A080 |  | Lay and joint pipe (incl. fittings, tie-in) |  | 3d | 2026-12-22 | 2026-12-24 | UG-12-S04-A070 SS+3d, UG-12-S04-A070 FF+2d | 0d |  | F7 | UG-12 | UG-12-S04 | A080 | 42.1 |
| UG-12-S04-A090 |  | Surround, joint test and line test |  | 3d | 2026-12-24 | 2026-12-27 | UG-12-S04-A080 SS+2d, UG-12-S04-A080 FF+2d | 12d |  | F7 | UG-12 | UG-12-S04 | A090 | 42.1 |
| UG-12-S04-A100 |  | Backfill to NG and remove struts |  | 3d | 2027-01-10 | 2027-01-12 | UG-12-S04-A090 SS+2d, UG-12-S04-A090 FF+2d, UG-13B-S05-A080 | 0d |  | F7 | UG-12 | UG-12-S04 | A100 | 746.096497 |
| UG-12-S04-A110 |  | Dewatering off, extract sheets, reinstate |  | 3d | 2027-01-12 | 2027-01-14 | UG-12-S04-A100 SS+2d, UG-12-S04-A100 FF+2d |  |  | F7 | UG-12 | UG-12-S04 | A110 | 84.2 |
|  | UG-12-S03 | **UG-12-S03 / GRP-UG12-S03-CH046-CH101-(-3.08/-6.34)-55m / Run / Mixed: 41 m sheet piles** |  |  | 2026-12-01 | 2027-03-11 |  |  |  |  |  |  |  |  |
| UG-12-S03-A010 |  | Release: drawings, holds, access and gates | milestone | 0d | 2026-12-01 | 2026-12-01 |  | 19d | start on or after 2026-12-01 | F7 | UG-12 | UG-12-S03 | A010 |  |
| UG-12-S03-A020 |  | Set-out, crossing survey and working platform |  | 1d | 2026-12-23 | 2026-12-23 | UG-12-S03-A010, UG-13-S04-A030 SS | 5d |  | F7 | UG-12 | UG-12-S03 | A020 | 55.2 |
| UG-12-S03-A030 |  | Pipe-support piling from platform (incl. integrity tests) |  | 8d | 2026-12-30 | 2027-01-07 | UG-12-S03-A020 SS+1d, UG-12-S03-A020 FF+2d, UG-13-S04-A030 | 0d |  | F7 | UG-12 | UG-12-S03 | A030 | 40 |
| UG-12-S03-A040 |  | Install sheet piles (shored lengths) |  | 4d | 2027-01-02 | 2027-01-05 | UG-12-S03-A030 SS+3d, UG-12-S03-A030 FF+2d, UG-13-S04-A040 | 0d |  | F7 | UG-12 | UG-12-S03 | A040 | 82.6 |
| UG-12-S03-A050 |  | Install dewatering and draw down |  | 9d | 2027-01-04 | 2027-01-13 | UG-12-S03-A040 SS+2d, UG-12-S03-A040 FF+2d, UG-13-S04-A060 FS-9d | 13d |  | F7 | UG-12 | UG-12-S03 | A050 | 55.2 |
| UG-12-S03-A060 |  | Excavate and strut to formation |  | 5d | 2027-01-30 | 2027-02-03 | UG-12-S03-A050 SS+9d, UG-12-S03-A050 FF+2d, UG-13-S03-A100, UG-13-S04-A100, UG-13-S04-A060 | 0d |  | F7 | UG-12 | UG-12-S03 | A060 | 1221.865212 |
| UG-12-S03-A070 |  | Trim piles, blinding and piled slab (incl. cure) |  | 8d | 2027-02-01 | 2027-02-09 | UG-12-S03-A060 SS+2d, UG-12-S03-A060 FF+2d, UG-13-S04-A070 | 0d |  | F7 | UG-12 | UG-12-S03 | A070 | 55.2 |
| UG-12-S03-A080 |  | Lay and joint pipe (incl. fittings, tie-in) |  | 5d | 2027-02-04 | 2027-02-09 | UG-12-S03-A070 SS+3d, UG-12-S03-A070 FF+2d, UG-13-S04-A080 | 0d |  | F7 | UG-12 | UG-12-S03 | A080 | 55.2 |
| UG-12-S03-A090 |  | Surround, joint test and line test |  | 3d | 2027-02-06 | 2027-02-08 | UG-12-S03-A080 SS+2d, UG-12-S03-A080 FF+2d | 23d |  | F7 | UG-12 | UG-12-S03 | A090 | 55.2 |
| UG-12-S03-A100 |  | Backfill to NG and remove struts |  | 3d | 2027-03-07 | 2027-03-09 | UG-12-S03-A090 SS+2d, UG-12-S03-A090 FF+2d, UG-13B-S06-A080, UG-13B-S07-A080, UG-13B-S11-A080, UG-13-S04-A100 | 0d |  | F7 | UG-12 | UG-12-S03 | A100 | 951.446093 |
| UG-12-S03-A110 |  | Dewatering off, extract sheets, reinstate |  | 3d | 2027-03-09 | 2027-03-11 | UG-12-S03-A100 SS+2d, UG-12-S03-A100 FF+2d |  |  | F7 | UG-12 | UG-12-S03 | A110 | 82.6 |

Notes:
- UG-12-S04-A010: Notes: Front F7 / Line UG-12 / Package UG-12-S04 / Workbook logic: gates: START, D_DLU
- UG-12-S04-A020: Notes: Front F7 / Line UG-12 / Package UG-12-S04 / Quantity 42 m / Workbook logic: FS from A010
- UG-12-S04-A030: Notes: Front F7 / Line UG-12 / Package UG-12-S04 / Quantity 32 piles / Workbook logic: gate: D_PILEDES
- UG-12-S04-A040: Notes: Front F7 / Line UG-12 / Package UG-12-S04 / Quantity 84 m wall
- UG-12-S04-A050: Notes: Front F7 / Line UG-12 / Package UG-12-S04 / Quantity 42 m
- UG-12-S04-A060: Notes: Front F7 / Line UG-12 / Package UG-12-S04 / Quantity 952 m3
- UG-12-S04-A070: Notes: Front F7 / Line UG-12 / Package UG-12-S04 / Quantity 42 m
- UG-12-S04-A080: Notes: Front F7 / Line UG-12 / Package UG-12-S04 / Quantity 42 m
- UG-12-S04-A090: Notes: Front F7 / Line UG-12 / Package UG-12-S04 / Quantity 42 m
- UG-12-S04-A100: Notes: Front F7 / Line UG-12 / Package UG-12-S04 / Quantity 746 m3 / Workbook logic: UG-13B-S05-A080 (FS, shared trench laid)
- UG-12-S04-A110: Notes: Front F7 / Line UG-12 / Package UG-12-S04 / Quantity 84 m wall
- UG-12-S03-A010: Notes: Front F7 / Line UG-12 / Package UG-12-S03 / Workbook logic: gates: START, D_DLU
- UG-12-S03-A020: Notes: Front F7 / Line UG-12 / Package UG-12-S03 / Quantity 55 m / Workbook logic: FS from A010; UG-13-S04-A030 (SS, set-out one package ahead of piling)
- UG-12-S03-A030: Notes: Front F7 / Line UG-12 / Package UG-12-S03 / Quantity 40 piles / Workbook logic: gate: D_PILEDES
- UG-12-S03-A040: Notes: Front F7 / Line UG-12 / Package UG-12-S03 / Quantity 83 m wall
- UG-12-S03-A050: Notes: Front F7 / Line UG-12 / Package UG-12-S03 / Quantity 55 m / Workbook logic: UG-13-S04-A060 (FS, negative lag = own duration: drawdown complete when the excavation crew is free)
- UG-12-S03-A060: Notes: Front F7 / Line UG-12 / Package UG-12-S03 / Quantity 1,222 m3 / Workbook logic: UG-13-S03-A100 (FS, deeper first); UG-13-S04-A100 (FS, deeper first)
- UG-12-S03-A070: Notes: Front F7 / Line UG-12 / Package UG-12-S03 / Quantity 55 m
- UG-12-S03-A080: Notes: Front F7 / Line UG-12 / Package UG-12-S03 / Quantity 55 m
- UG-12-S03-A090: Notes: Front F7 / Line UG-12 / Package UG-12-S03 / Quantity 55 m
- UG-12-S03-A100: Notes: Front F7 / Line UG-12 / Package UG-12-S03 / Quantity 951 m3 / Workbook logic: UG-13B-S06-A080 (FS, shared trench laid); UG-13B-S07-A080 (FS, shared trench laid); UG-13B-S11-A080 (FS, shared trench laid)
- UG-12-S03-A110: Notes: Front F7 / Line UG-12 / Package UG-12-S03 / Quantity 83 m wall

| ID | WBS | Activity | Type | Duration | Start | Finish | Predecessors | Free float | Constraint | Text1 | Text2 | Text3 | Text4 | Number1 |
| --- | --- | --- | --- | --- | --- | --- | --- | --- | --- | --- | --- | --- | --- | --- |
|  | UG-13B | **UG-13B** |  |  | 2026-12-01 | 2027-05-22 |  |  |  |  |  |  |  |  |
|  | UG-13B-S05 | **UG-13B-S05 / HDPE-UG13B-S05-CH096-CH160-(-4.11/-5.40)-64m / Run / Sheet piles** |  |  | 2026-12-01 | 2027-01-19 |  |  |  |  |  |  |  |  |
| UG-13B-S05-A010 |  | Release: drawings, holds, access and gates | milestone | 0d | 2026-12-01 | 2026-12-01 |  | 1d | start on or after 2026-12-01 | F7 | UG-13B | UG-13B-S05 | A010 |  |
| UG-13B-S05-A020 |  | Set-out, crossing survey and working platform |  | 1d | 2026-12-02 | 2026-12-02 | UG-13B-S05-A010, UG-12-S04-A030 SS | 7d |  | F7 | UG-13B | UG-13B-S05 | A020 | 64.1 |
| UG-13B-S05-A030 |  | Pipe-support piling from platform (incl. integrity tests) |  | 5d | 2026-12-12 | 2026-12-16 | UG-13B-S05-A020 SS+1d, UG-13B-S05-A020 FF+2d, UG-12-S04-A030 | 0d |  | F7 | UG-13B | UG-13B-S05 | A030 | 23 |
| UG-13B-S05-A040 |  | Install sheet piles (shored lengths) |  | 6d | 2026-12-13 | 2026-12-19 | UG-13B-S05-A030 SS+2d, UG-13B-S05-A030 FF+2d, UG-12-S04-A040 | 0d |  | F7 | UG-13B | UG-13B-S05 | A040 | 128.2 |
| UG-13B-S05-A050 |  | Install dewatering and draw down |  | 9d | 2026-12-16 | 2026-12-26 | UG-13B-S05-A040 SS+3d, UG-13B-S05-A040 FF+2d, UG-12-S04-A060 FS-9d | 0d |  | F7 | UG-13B | UG-13B-S05 | A050 | 64.1 |
| UG-13B-S05-A060 |  | Excavate and strut to formation |  | 4d | 2026-12-26 | 2026-12-29 | UG-13B-S05-A050 SS+9d, UG-13B-S05-A050 FF+2d, UG-12-S04-A060 SS, UG-12-S04-A060 | 0d |  | F7 | UG-13B | UG-13B-S05 | A060 | 790.479302 |
| UG-13B-S05-A070 |  | Trim piles, blinding and piled slab (incl. cure) |  | 9d | 2026-12-28 | 2027-01-06 | UG-13B-S05-A060 SS+2d, UG-13B-S05-A060 FF+2d, UG-12-S04-A070 | 0d |  | F7 | UG-13B | UG-13B-S05 | A070 | 64.1 |
| UG-13B-S05-A080 |  | Lay and joint pipe (incl. fittings, tie-in) |  | 4d | 2027-01-02 | 2027-01-05 | UG-13B-S05-A070 SS+3d, UG-13B-S05-A070 FF+2d, UG-12-S04-A080 | 0d |  | F7 | UG-13B | UG-13B-S05 | A080 | 64.1 |
| UG-13B-S05-A090 |  | Surround, joint test and line test |  | 3d | 2027-01-03 | 2027-01-05 | UG-13B-S05-A080 SS+2d, UG-13B-S05-A080 FF+2d | 7d |  | F7 | UG-13B | UG-13B-S05 | A090 | 64.1 |
| UG-13B-S05-A100 |  | Backfill to NG and remove struts |  | 2d | 2027-01-14 | 2027-01-16 | UG-13B-S05-A090 SS+2d, UG-13B-S05-A090 FF+2d, UG-12-S04-A080, UG-12-S04-A100 | 0d |  | F7 | UG-13B | UG-13B-S05 | A100 | 676.053049 |
| UG-13B-S05-A110 |  | Dewatering off, extract sheets, reinstate |  | 4d | 2027-01-16 | 2027-01-19 | UG-13B-S05-A100 SS+1d, UG-13B-S05-A100 FF+2d |  |  | F7 | UG-13B | UG-13B-S05 | A110 | 128.2 |
|  | UG-13B-S11 | **UG-13B-S11 / HDPE-UG13B-S11-TEE-TEE-(-5.60/-5.60)-15m / Run / Sheet piles** |  |  | 2026-12-01 | 2027-03-14 |  |  |  |  |  |  |  |  |
| UG-13B-S11-A010 |  | Release: drawings, holds, access and gates | milestone | 0d | 2026-12-01 | 2026-12-01 |  | 25d | start on or after 2026-12-01 | F7 | UG-13B | UG-13B-S11 | A010 |  |
| UG-13B-S11-A020 |  | Set-out, crossing survey and working platform |  | 1d | 2026-12-30 | 2026-12-30 | UG-13B-S11-A010, UG-12-S03-A030 SS | 7d |  | F7 | UG-13B | UG-13B-S11 | A020 | 14.530482 |
| UG-13B-S11-A030 |  | Pipe-support piling from platform (incl. integrity tests) |  | 3d | 2027-01-09 | 2027-01-11 | UG-13B-S11-A020 SS+1d, UG-13B-S11-A020 FF+2d, UG-12-S03-A030 | 0d |  | F7 | UG-13B | UG-13B-S11 | A030 | 12 |
| UG-13B-S11-A040 |  | Install sheet piles (shored lengths) |  | 2d | 2027-01-11 | 2027-01-12 | UG-13B-S11-A030 SS+2d, UG-13B-S11-A030 FF+2d, UG-12-S03-A040 | 2d |  | F7 | UG-13B | UG-13B-S11 | A040 | 29.060963 |
| UG-13B-S11-A050 |  | Install dewatering and draw down |  | 8d | 2027-01-26 | 2027-02-03 | UG-13B-S11-A040 SS+1d, UG-13B-S11-A040 FF+2d, UG-12-S03-A060 FS-8d | 0d |  | F7 | UG-13B | UG-13B-S11 | A050 | 14.530482 |
| UG-13B-S11-A060 |  | Excavate and strut to formation |  | 1d | 2027-02-06 | 2027-02-06 | UG-13B-S11-A050 SS+9d, UG-13B-S11-A050 FF+2d, UG-12-S03-A060 SS, UG-13-S03-A060 SS, UG-13-S04-A060 SS, UG-12-S03-A060 | 0d |  | F7 | UG-13B | UG-13B-S11 | A060 | 242.077673 |
| UG-13B-S11-A070 |  | Trim piles, blinding and piled slab (incl. cure) |  | 5d | 2027-02-11 | 2027-02-16 | UG-13B-S11-A060 SS+1d, UG-13B-S11-A060 FF+2d, UG-12-S03-A070 | 0d |  | F7 | UG-13B | UG-13B-S11 | A070 | 14.530482 |
| UG-13B-S11-A080 |  | Lay and joint pipe (incl. fittings, tie-in) |  | 1d | 2027-02-13 | 2027-02-13 | UG-13B-S11-A070 SS+2d, UG-13B-S11-A070 FF+2d, UG-12-S03-A080 | 0d |  | F7 | UG-13B | UG-13B-S11 | A080 | 14.530482 |
| UG-13B-S11-A090 |  | Surround, joint test and line test |  | 3d | 2027-02-14 | 2027-02-16 | UG-13B-S11-A080 SS+1d, UG-13B-S11-A080 FF+2d | 18d |  | F7 | UG-13B | UG-13B-S11 | A090 | 14.530482 |
| UG-13B-S11-A100 |  | Backfill to NG and remove struts |  | 1d | 2027-03-11 | 2027-03-11 | UG-13B-S11-A090 SS+2d, UG-13B-S11-A090 FF+2d, UG-12-S03-A080, UG-13-S03-A080, UG-13-S04-A080, UG-12-S03-A100 | 0d |  | F7 | UG-13B | UG-13B-S11 | A100 | 202.273218 |
| UG-13B-S11-A110 |  | Dewatering off, extract sheets, reinstate |  | 2d | 2027-03-13 | 2027-03-14 | UG-13B-S11-A100 SS+1d, UG-13B-S11-A100 FF+2d |  |  | F7 | UG-13B | UG-13B-S11 | A110 | 29.060963 |

Notes:
- UG-13B-S05-A010: Notes: Front F7 / Line UG-13B / Package UG-13B-S05 / Workbook logic: gates: START, D_DLU
- UG-13B-S05-A020: Notes: Front F7 / Line UG-13B / Package UG-13B-S05 / Quantity 64 m / Workbook logic: FS from A010; UG-12-S04-A030 (SS, set-out one package ahead of piling)
- UG-13B-S05-A030: Notes: Front F7 / Line UG-13B / Package UG-13B-S05 / Quantity 23 piles / Workbook logic: gate: D_PILEDES
- UG-13B-S05-A040: Notes: Front F7 / Line UG-13B / Package UG-13B-S05 / Quantity 128 m wall
- UG-13B-S05-A050: Notes: Front F7 / Line UG-13B / Package UG-13B-S05 / Quantity 64 m / Workbook logic: UG-12-S04-A060 (FS, negative lag = own duration: drawdown complete when the excavation crew is free)
- UG-13B-S05-A060: Notes: Front F7 / Line UG-13B / Package UG-13B-S05 / Quantity 790 m3 / Workbook logic: UG-12-S04-A060 (SS, shared trench)
- UG-13B-S05-A070: Notes: Front F7 / Line UG-13B / Package UG-13B-S05 / Quantity 64 m
- UG-13B-S05-A080: Notes: Front F7 / Line UG-13B / Package UG-13B-S05 / Quantity 64 m
- UG-13B-S05-A090: Notes: Front F7 / Line UG-13B / Package UG-13B-S05 / Quantity 64 m
- UG-13B-S05-A100: Notes: Front F7 / Line UG-13B / Package UG-13B-S05 / Quantity 676 m3 / Workbook logic: UG-12-S04-A080 (FS, shared trench laid)
- UG-13B-S05-A110: Notes: Front F7 / Line UG-13B / Package UG-13B-S05 / Quantity 128 m wall
- UG-13B-S11-A010: Notes: Front F7 / Line UG-13B / Package UG-13B-S11 / Workbook logic: gates: START, D_DLU
- UG-13B-S11-A020: Notes: Front F7 / Line UG-13B / Package UG-13B-S11 / Quantity 15 m / Workbook logic: FS from A010; UG-12-S03-A030 (SS, set-out one package ahead of piling)
- UG-13B-S11-A030: Notes: Front F7 / Line UG-13B / Package UG-13B-S11 / Quantity 12 piles / Workbook logic: gate: D_PILEDES
- UG-13B-S11-A040: Notes: Front F7 / Line UG-13B / Package UG-13B-S11 / Quantity 29 m wall
- UG-13B-S11-A050: Notes: Front F7 / Line UG-13B / Package UG-13B-S11 / Quantity 15 m / Workbook logic: UG-12-S03-A060 (FS, negative lag = own duration: drawdown complete when the excavation crew is free)
- UG-13B-S11-A060: Notes: Front F7 / Line UG-13B / Package UG-13B-S11 / Quantity 242 m3 / Workbook logic: UG-12-S03-A060 (SS, shared trench); UG-13-S03-A060 (SS, shared trench); UG-13-S04-A060 (SS, shared trench)
- UG-13B-S11-A070: Notes: Front F7 / Line UG-13B / Package UG-13B-S11 / Quantity 15 m
- UG-13B-S11-A080: Notes: Front F7 / Line UG-13B / Package UG-13B-S11 / Quantity 15 m
- UG-13B-S11-A090: Notes: Front F7 / Line UG-13B / Package UG-13B-S11 / Quantity 15 m
- UG-13B-S11-A100: Notes: Front F7 / Line UG-13B / Package UG-13B-S11 / Quantity 202 m3 / Workbook logic: UG-12-S03-A080 (FS, shared trench laid); UG-13-S03-A080 (FS, shared trench laid); UG-13-S04-A080 (FS, shared trench laid)
- UG-13B-S11-A110: Notes: Front F7 / Line UG-13B / Package UG-13B-S11 / Quantity 29 m wall

| ID | WBS | Activity | Type | Duration | Start | Finish | Predecessors | Free float | Constraint | Text1 | Text2 | Text3 | Text4 | Number1 |
| --- | --- | --- | --- | --- | --- | --- | --- | --- | --- | --- | --- | --- | --- | --- |
|  | UG-13B-S07 | **UG-13B-S07 / HDPE-UG13B-S07-CH197-TEE223-(-5.40/-5.40)-26m / Run / Sheet piles** |  |  | 2026-12-01 | 2027-03-16 |  |  |  |  |  |  |  |  |
| UG-13B-S07-A010 |  | Release: drawings, holds, access and gates | milestone | 0d | 2026-12-01 | 2026-12-01 |  | 33d | start on or after 2026-12-01 | F7 | UG-13B | UG-13B-S07 | A010 |  |
| UG-13B-S07-A020 |  | Set-out, crossing survey and working platform |  | 1d | 2027-01-09 | 2027-01-09 | UG-13B-S07-A010, UG-13B-S11-A030 SS | 3d |  | F7 | UG-13B | UG-13B-S07 | A020 | 25.665089 |
| UG-13B-S07-A030 |  | Pipe-support piling from platform (incl. integrity tests) |  | 4d | 2027-01-13 | 2027-01-17 | UG-13B-S07-A020 SS+1d, UG-13B-S07-A020 FF+2d, UG-13B-S11-A030 | 0d |  | F7 | UG-13B | UG-13B-S07 | A030 | 20 |
| UG-13B-S07-A040 |  | Install sheet piles (shored lengths) |  | 3d | 2027-01-16 | 2027-01-18 | UG-13B-S07-A030 SS+2d, UG-13B-S07-A030 FF+2d, UG-13B-S11-A040 | 1d |  | F7 | UG-13B | UG-13B-S07 | A040 | 51.330177 |
| UG-13B-S07-A050 |  | Install dewatering and draw down |  | 8d | 2027-01-28 | 2027-02-06 | UG-13B-S07-A040 SS+2d, UG-13B-S07-A040 FF+2d, UG-13B-S11-A060 FS-8d | 0d |  | F7 | UG-13B | UG-13B-S07 | A050 | 25.665089 |
| UG-13B-S07-A060 |  | Excavate and strut to formation |  | 2d | 2027-02-07 | 2027-02-08 | UG-13B-S07-A050 SS+9d, UG-13B-S07-A050 FF+2d, UG-12-S03-A060 SS, UG-12-S04-A060 SS, UG-13B-S11-A060 | 0d |  | F7 | UG-13B | UG-13B-S07 | A060 | 367.642128 |
| UG-13B-S07-A070 |  | Trim piles, blinding and piled slab (incl. cure) |  | 6d | 2027-02-17 | 2027-02-23 | UG-13B-S07-A060 SS+1d, UG-13B-S07-A060 FF+2d, UG-13B-S11-A070 | 0d |  | F7 | UG-13B | UG-13B-S07 | A070 | 25.665089 |
| UG-13B-S07-A080 |  | Lay and joint pipe (incl. fittings, tie-in) |  | 3d | 2027-02-20 | 2027-02-22 | UG-13B-S07-A070 SS+3d, UG-13B-S07-A070 FF+2d, UG-13B-S11-A080 | 0d |  | F7 | UG-13B | UG-13B-S07 | A080 | 25.665089 |
| UG-13B-S07-A090 |  | Surround, joint test and line test |  | 3d | 2027-02-22 | 2027-02-24 | UG-13B-S07-A080 SS+2d, UG-13B-S07-A080 FF+2d | 12d |  | F7 | UG-13B | UG-13B-S07 | A090 | 25.665089 |
| UG-13B-S07-A100 |  | Backfill to NG and remove struts |  | 1d | 2027-03-13 | 2027-03-13 | UG-13B-S07-A090 SS+2d, UG-13B-S07-A090 FF+2d, UG-12-S03-A080, UG-12-S04-A080, UG-13B-S11-A100 | 0d |  | F7 | UG-13B | UG-13B-S07 | A100 | 319.671635 |
| UG-13B-S07-A110 |  | Dewatering off, extract sheets, reinstate |  | 3d | 2027-03-14 | 2027-03-16 | UG-13B-S07-A100 SS+1d, UG-13B-S07-A100 FF+2d |  |  | F7 | UG-13B | UG-13B-S07 | A110 | 51.330177 |
|  | UG-13B-S06 | **UG-13B-S06 / HDPE-UG13B-S06-CH160-CH197-(-5.40/-5.40)-37m / Run / Sheet piles** |  |  | 2026-12-01 | 2027-03-31 |  |  |  |  |  |  |  |  |
| UG-13B-S06-A010 |  | Release: drawings, holds, access and gates | milestone | 0d | 2026-12-01 | 2026-12-01 |  | 37d | start on or after 2026-12-01 | F7 | UG-13B | UG-13B-S06 | A010 |  |
| UG-13B-S06-A020 |  | Set-out, crossing survey and working platform |  | 1d | 2027-01-13 | 2027-01-13 | UG-13B-S06-A010, UG-13B-S07-A030 SS | 3d |  | F7 | UG-13B | UG-13B-S06 | A020 | 37 |
| UG-13B-S06-A030 |  | Pipe-support piling from platform (incl. integrity tests) |  | 3d | 2027-01-18 | 2027-01-20 | UG-13B-S06-A020 SS+1d, UG-13B-S06-A020 FF+2d, UG-13B-S07-A030 | 0d |  | F7 | UG-13B | UG-13B-S06 | A030 | 14 |
| UG-13B-S06-A040 |  | Install sheet piles (shored lengths) |  | 3d | 2027-01-20 | 2027-01-23 | UG-13B-S06-A030 SS+2d, UG-13B-S06-A030 FF+2d, UG-13B-S07-A040 | 1d |  | F7 | UG-13B | UG-13B-S06 | A040 | 74 |
| UG-13B-S06-A050 |  | Install dewatering and draw down |  | 8d | 2027-01-31 | 2027-02-08 | UG-13B-S06-A040 SS+2d, UG-13B-S06-A040 FF+2d, UG-13B-S07-A060 FS-8d | 0d |  | F7 | UG-13B | UG-13B-S06 | A050 | 37 |
| UG-13B-S06-A060 |  | Excavate and strut to formation |  | 3d | 2027-02-10 | 2027-02-13 | UG-13B-S06-A050 SS+9d, UG-13B-S06-A050 FF+2d, UG-12-S03-A060 SS, UG-12-S04-A060 SS, UG-13B-S07-A060 | 0d |  | F7 | UG-13B | UG-13B-S06 | A060 | 521.695848 |
| UG-13B-S06-A070 |  | Trim piles, blinding and piled slab (incl. cure) |  | 7d | 2027-02-24 | 2027-03-03 | UG-13B-S06-A060 SS+2d, UG-13B-S06-A060 FF+2d, UG-13B-S07-A070 | 0d |  | F7 | UG-13B | UG-13B-S06 | A070 | 37 |
| UG-13B-S06-A080 |  | Lay and joint pipe (incl. fittings, tie-in) |  | 2d | 2027-02-27 | 2027-02-28 | UG-13B-S06-A070 SS+3d, UG-13B-S06-A070 FF+2d, UG-13B-S07-A080 | 0d |  | F7 | UG-13B | UG-13B-S06 | A080 | 37 |
| UG-13B-S06-A090 |  | Surround, joint test and line test |  | 3d | 2027-02-28 | 2027-03-02 | UG-13B-S06-A080 SS+1d, UG-13B-S06-A080 FF+2d | 21d |  | F7 | UG-13B | UG-13B-S06 | A090 | 37 |
| UG-13B-S06-A100 |  | Backfill to NG and remove struts |  | 2d | 2027-03-28 | 2027-03-29 | UG-13B-S06-A090 SS+2d, UG-13B-S06-A090 FF+2d, UG-07A-S11-A080, UG-12-S03-A080, UG-12-S04-A080, UG-13B-S07-A100 | 0d |  | F7 | UG-13B | UG-13B-S06 | A100 | 455.636133 |
| UG-13B-S06-A110 |  | Dewatering off, extract sheets, reinstate |  | 3d | 2027-03-29 | 2027-03-31 | UG-13B-S06-A100 SS+1d, UG-13B-S06-A100 FF+2d |  |  | F7 | UG-13B | UG-13B-S06 | A110 | 74 |

Notes:
- UG-13B-S07-A010: Notes: Front F7 / Line UG-13B / Package UG-13B-S07 / Workbook logic: gates: START, D_DLU
- UG-13B-S07-A020: Notes: Front F7 / Line UG-13B / Package UG-13B-S07 / Quantity 26 m / Workbook logic: FS from A010; UG-13B-S11-A030 (SS, set-out one package ahead of piling)
- UG-13B-S07-A030: Notes: Front F7 / Line UG-13B / Package UG-13B-S07 / Quantity 20 piles / Workbook logic: gate: D_PILEDES
- UG-13B-S07-A040: Notes: Front F7 / Line UG-13B / Package UG-13B-S07 / Quantity 51 m wall
- UG-13B-S07-A050: Notes: Front F7 / Line UG-13B / Package UG-13B-S07 / Quantity 26 m / Workbook logic: UG-13B-S11-A060 (FS, negative lag = own duration: drawdown complete when the excavation crew is free)
- UG-13B-S07-A060: Notes: Front F7 / Line UG-13B / Package UG-13B-S07 / Quantity 368 m3 / Workbook logic: UG-12-S03-A060 (SS, shared trench); UG-12-S04-A060 (SS, shared trench)
- UG-13B-S07-A070: Notes: Front F7 / Line UG-13B / Package UG-13B-S07 / Quantity 26 m
- UG-13B-S07-A080: Notes: Front F7 / Line UG-13B / Package UG-13B-S07 / Quantity 26 m
- UG-13B-S07-A090: Notes: Front F7 / Line UG-13B / Package UG-13B-S07 / Quantity 26 m
- UG-13B-S07-A100: Notes: Front F7 / Line UG-13B / Package UG-13B-S07 / Quantity 320 m3 / Workbook logic: UG-12-S03-A080 (FS, shared trench laid); UG-12-S04-A080 (FS, shared trench laid)
- UG-13B-S07-A110: Notes: Front F7 / Line UG-13B / Package UG-13B-S07 / Quantity 51 m wall
- UG-13B-S06-A010: Notes: Front F7 / Line UG-13B / Package UG-13B-S06 / Workbook logic: gates: START, D_DLU
- UG-13B-S06-A020: Notes: Front F7 / Line UG-13B / Package UG-13B-S06 / Quantity 37 m / Workbook logic: FS from A010; UG-13B-S07-A030 (SS, set-out one package ahead of piling)
- UG-13B-S06-A030: Notes: Front F7 / Line UG-13B / Package UG-13B-S06 / Quantity 14 piles / Workbook logic: gate: D_PILEDES
- UG-13B-S06-A040: Notes: Front F7 / Line UG-13B / Package UG-13B-S06 / Quantity 74 m wall
- UG-13B-S06-A050: Notes: Front F7 / Line UG-13B / Package UG-13B-S06 / Quantity 37 m / Workbook logic: UG-13B-S07-A060 (FS, negative lag = own duration: drawdown complete when the excavation crew is free)
- UG-13B-S06-A060: Notes: Front F7 / Line UG-13B / Package UG-13B-S06 / Quantity 522 m3 / Workbook logic: UG-12-S03-A060 (SS, shared trench); UG-12-S04-A060 (SS, shared trench)
- UG-13B-S06-A070: Notes: Front F7 / Line UG-13B / Package UG-13B-S06 / Quantity 37 m
- UG-13B-S06-A080: Notes: Front F7 / Line UG-13B / Package UG-13B-S06 / Quantity 37 m
- UG-13B-S06-A090: Notes: Front F7 / Line UG-13B / Package UG-13B-S06 / Quantity 37 m
- UG-13B-S06-A100: Notes: Front F7 / Line UG-13B / Package UG-13B-S06 / Quantity 456 m3 / Workbook logic: UG-07A-S11-A080 (FS, shared trench laid); UG-12-S03-A080 (FS, shared trench laid); UG-12-S04-A080 (FS, shared trench laid)
- UG-13B-S06-A110: Notes: Front F7 / Line UG-13B / Package UG-13B-S06 / Quantity 74 m wall

| ID | WBS | Activity | Type | Duration | Start | Finish | Predecessors | Free float | Constraint | Text1 | Text2 | Text3 | Text4 | Number1 |
| --- | --- | --- | --- | --- | --- | --- | --- | --- | --- | --- | --- | --- | --- | --- |
|  | UG-13B-S12 | **UG-13B-S12 / HDPE-UG13B-S12-RASPS-RASPS-(-5.93/-5.93)-5m / Short connection / Sheet piles** |  |  | 2026-12-01 | 2027-04-25 |  |  |  |  |  |  |  |  |
| UG-13B-S12-A010 |  | Release: drawings, holds, access and gates | milestone | 0d | 2026-12-01 | 2026-12-01 |  | 0d | start on or after 2026-12-01 | F7 | UG-13B | UG-13B-S12 | A010 |  |
| UG-13B-S12-A020 |  | Set-out, crossing survey and working platform |  | 1d | 2026-12-01 | 2026-12-01 | UG-13B-S12-A010 | 0d |  | F7 | UG-13B | UG-13B-S12 | A020 | 4.92279 |
| UG-13B-S12-A030 |  | Pipe-support piling from platform (incl. integrity tests) |  | 2d | 2026-12-02 | 2026-12-03 | UG-13B-S12-A020 SS+1d, UG-13B-S12-A020 FF+2d | 0d |  | F7 | UG-13B | UG-13B-S12 | A030 | 6 |
| UG-13B-S12-A040 |  | Install sheet piles (shored lengths) |  | 1d | 2026-12-03 | 2026-12-03 | UG-13B-S12-A030 SS+1d, UG-13B-S12-A030 FF+2d | 0d |  | F7 | UG-13B | UG-13B-S12 | A040 | 9.84558 |
| UG-13B-S12-A050 |  | Install dewatering and draw down |  | 8d | 2026-12-05 | 2026-12-13 | UG-13B-S12-A040 SS+1d, UG-13B-S12-A040 FF+2d | 0d |  | F7 | UG-13B | UG-13B-S12 | A050 | 4.92279 |
| UG-13B-S12-A060 |  | Excavate and strut to formation |  | 1d | 2026-12-14 | 2026-12-14 | UG-13B-S12-A050 SS+9d, UG-13B-S12-A050 FF+2d | 0d |  | F7 | UG-13B | UG-13B-S12 | A060 | 104.872982 |
| UG-13B-S12-A070 |  | Trim piles, blinding and piled slab (incl. cure) |  | 4d | 2026-12-15 | 2026-12-19 | UG-13B-S12-A060 SS+1d, UG-13B-S12-A060 FF+2d | 0d |  | F7 | UG-13B | UG-13B-S12 | A070 | 4.92279 |
| UG-13B-S12-A080 |  | Lay and joint pipe (incl. fittings, tie-in) |  | 4d | 2026-12-17 | 2026-12-21 | UG-13B-S12-A070 SS+2d, UG-13B-S12-A070 FF+2d | 0d |  | F7 | UG-13B | UG-13B-S12 | A080 | 4.92279 |
| UG-13B-S12-A090 |  | Surround, joint test and line test |  | 3d | 2026-12-19 | 2026-12-21 | UG-13B-S12-A080 SS+2d, UG-13B-S12-A080 FF+2d | 104d |  | F7 | UG-13B | UG-13B-S12 | A090 | 4.92279 |
| UG-13B-S12-A100 |  | Backfill to NG and remove struts |  | 1d | 2027-04-24 | 2027-04-24 | UG-13B-S12-A090 SS+2d, UG-13B-S12-A090 FF+2d, UG-13-S05-A080, UG-23-S01-A080, UG-23-S02-A080, UG-23-S03-A080 | 0d |  | F7 | UG-13B | UG-13B-S12 | A100 | 80.756901 |
| UG-13B-S12-A110 |  | Dewatering off, extract sheets, reinstate |  | 2d | 2027-04-24 | 2027-04-25 | UG-13B-S12-A100 SS+1d, UG-13B-S12-A100 FF+2d |  |  | F7 | UG-13B | UG-13B-S12 | A110 | 9.84558 |
|  | UG-13B-S09 | **UG-13B-S09 / HDPE-UG13B-S09-CH238-CH268-(-5.40/-5.40)-30m / Run / Sheet piles** |  |  | 2026-12-01 | 2027-05-04 |  |  |  |  |  |  |  |  |
| UG-13B-S09-A010 |  | Release: drawings, holds, access and gates | milestone | 0d | 2026-12-01 | 2026-12-01 |  | 61d | start on or after 2026-12-01 | F7 | UG-13B | UG-13B-S09 | A010 |  |
| UG-13B-S09-A020 |  | Set-out, crossing survey and working platform |  | 1d | 2027-02-10 | 2027-02-10 | UG-13B-S09-A010, UG-23-S02-A030 SS | 1d |  | F7 | UG-13B | UG-13B-S09 | A020 | 30.038 |
| UG-13B-S09-A030 |  | Pipe-support piling from platform (incl. integrity tests) |  | 3d | 2027-02-13 | 2027-02-15 | UG-13B-S09-A020 SS+1d, UG-13B-S09-A020 FF+2d, UG-23-S02-A030 | 0d |  | F7 | UG-13B | UG-13B-S09 | A030 | 12 |
| UG-13B-S09-A040 |  | Install sheet piles (shored lengths) |  | 3d | 2027-02-14 | 2027-02-16 | UG-13B-S09-A030 SS+2d, UG-13B-S09-A030 FF+2d, UG-23-S02-A040 | 1d |  | F7 | UG-13B | UG-13B-S09 | A040 | 60.076 |
| UG-13B-S09-A050 |  | Install dewatering and draw down |  | 8d | 2027-03-18 | 2027-03-27 | UG-13B-S09-A040 SS+2d, UG-13B-S09-A040 FF+2d, UG-23-S02-A060 FS-8d | 0d |  | F7 | UG-13B | UG-13B-S09 | A050 | 30.038 |
| UG-13B-S09-A060 |  | Excavate and strut to formation |  | 2d | 2027-03-28 | 2027-03-29 | UG-13B-S09-A050 SS+9d, UG-13B-S09-A050 FF+2d, UG-23-S02-A060 | 0d |  | F7 | UG-13B | UG-13B-S09 | A060 | 423.535764 |
| UG-13B-S09-A070 |  | Trim piles, blinding and piled slab (incl. cure) |  | 6d | 2027-04-15 | 2027-04-21 | UG-13B-S09-A060 SS+1d, UG-13B-S09-A060 FF+2d, UG-23-S02-A070 | 0d |  | F7 | UG-13B | UG-13B-S09 | A070 | 30.038 |
| UG-13B-S09-A080 |  | Lay and joint pipe (incl. fittings, tie-in) |  | 1d | 2027-04-18 | 2027-04-18 | UG-13B-S09-A070 SS+3d, UG-13B-S09-A070 FF+2d, UG-23-S02-A080 | 0d |  | F7 | UG-13B | UG-13B-S09 | A080 | 30.038 |
| UG-13B-S09-A090 |  | Surround, joint test and line test |  | 3d | 2027-04-19 | 2027-04-21 | UG-13B-S09-A080 SS+1d, UG-13B-S09-A080 FF+2d | 7d |  | F7 | UG-13B | UG-13B-S09 | A090 | 30.038 |
| UG-13B-S09-A100 |  | Backfill to NG and remove struts |  | 2d | 2027-05-01 | 2027-05-02 | UG-13B-S09-A090 SS+2d, UG-13B-S09-A090 FF+2d, UG-23-S02-A100 | 0d |  | F7 | UG-13B | UG-13B-S09 | A100 | 369.905986 |
| UG-13B-S09-A110 |  | Dewatering off, extract sheets, reinstate |  | 3d | 2027-05-02 | 2027-05-04 | UG-13B-S09-A100 SS+1d, UG-13B-S09-A100 FF+2d |  |  | F7 | UG-13B | UG-13B-S09 | A110 | 60.076 |

Notes:
- UG-13B-S12-A010: Notes: Front F7 / Line UG-13B / Package UG-13B-S12 / Workbook logic: gates: START, D_DLU, structure ready
- UG-13B-S12-A020: Notes: Front F7 / Line UG-13B / Package UG-13B-S12 / Quantity 5 m / Workbook logic: FS from A010
- UG-13B-S12-A030: Notes: Front F7 / Line UG-13B / Package UG-13B-S12 / Quantity 6 piles / Workbook logic: gate: D_PILEDES
- UG-13B-S12-A040: Notes: Front F7 / Line UG-13B / Package UG-13B-S12 / Quantity 10 m wall
- UG-13B-S12-A050: Notes: Front F7 / Line UG-13B / Package UG-13B-S12 / Quantity 5 m
- UG-13B-S12-A060: Notes: Front F7 / Line UG-13B / Package UG-13B-S12 / Quantity 105 m3
- UG-13B-S12-A070: Notes: Front F7 / Line UG-13B / Package UG-13B-S12 / Quantity 5 m
- UG-13B-S12-A080: Notes: Front F7 / Line UG-13B / Package UG-13B-S12 / Quantity 5 m
- UG-13B-S12-A090: Notes: Front F7 / Line UG-13B / Package UG-13B-S12 / Quantity 5 m
- UG-13B-S12-A100: Notes: Front F7 / Line UG-13B / Package UG-13B-S12 / Quantity 81 m3 / Workbook logic: UG-13-S05-A080 (FS, shared trench laid); UG-23-S01-A080 (FS, shared trench laid); UG-23-S02-A080 (FS, shared trench laid); UG-23-S03-A080 (FS, shared trench laid)
- UG-13B-S12-A110: Notes: Front F7 / Line UG-13B / Package UG-13B-S12 / Quantity 10 m wall
- UG-13B-S09-A010: Notes: Front F7 / Line UG-13B / Package UG-13B-S09 / Workbook logic: gates: START, D_DLU
- UG-13B-S09-A020: Notes: Front F7 / Line UG-13B / Package UG-13B-S09 / Quantity 30 m / Workbook logic: FS from A010; UG-23-S02-A030 (SS, set-out one package ahead of piling)
- UG-13B-S09-A030: Notes: Front F7 / Line UG-13B / Package UG-13B-S09 / Quantity 12 piles / Workbook logic: gate: D_PILEDES
- UG-13B-S09-A040: Notes: Front F7 / Line UG-13B / Package UG-13B-S09 / Quantity 60 m wall
- UG-13B-S09-A050: Notes: Front F7 / Line UG-13B / Package UG-13B-S09 / Quantity 30 m / Workbook logic: UG-23-S02-A060 (FS, negative lag = own duration: drawdown complete when the excavation crew is free)
- UG-13B-S09-A060: Notes: Front F7 / Line UG-13B / Package UG-13B-S09 / Quantity 424 m3
- UG-13B-S09-A070: Notes: Front F7 / Line UG-13B / Package UG-13B-S09 / Quantity 30 m
- UG-13B-S09-A080: Notes: Front F7 / Line UG-13B / Package UG-13B-S09 / Quantity 30 m
- UG-13B-S09-A090: Notes: Front F7 / Line UG-13B / Package UG-13B-S09 / Quantity 30 m
- UG-13B-S09-A100: Notes: Front F7 / Line UG-13B / Package UG-13B-S09 / Quantity 370 m3
- UG-13B-S09-A110: Notes: Front F7 / Line UG-13B / Package UG-13B-S09 / Quantity 60 m wall

| ID | WBS | Activity | Type | Duration | Start | Finish | Predecessors | Free float | Constraint | Text1 | Text2 | Text3 | Text4 | Number1 |
| --- | --- | --- | --- | --- | --- | --- | --- | --- | --- | --- | --- | --- | --- | --- |
|  | UG-13B-S10 | **UG-13B-S10 / HDPE-UG13B-S10-CH268-FSTF-(-5.40/-5.40)-6m / Tie-in / Sheet piles** |  |  | 2026-12-01 | 2027-05-01 |  |  |  |  |  |  |  |  |
| UG-13B-S10-A010 |  | Release: drawings, holds, access and gates | milestone | 0d | 2026-12-01 | 2026-12-01 |  | 63d | start on or after 2026-12-01 | F7 | UG-13B | UG-13B-S10 | A010 |  |
| UG-13B-S10-A020 |  | Set-out, crossing survey and working platform |  | 1d | 2027-02-13 | 2027-02-13 | UG-13B-S10-A010, UG-13B-S09-A030 SS | 0d |  | F7 | UG-13B | UG-13B-S10 | A020 | 6.000053 |
| UG-13B-S10-A030 |  | Pipe-support piling from platform (incl. integrity tests) |  | 1d | 2027-02-13 | 2027-02-13 | UG-13B-S10-A020 SS+1d, UG-13B-S10-A020 FF+2d | 0d |  | F7 | UG-13B | UG-13B-S10 | A030 | 4 |
| UG-13B-S10-A040 |  | Install sheet piles (shored lengths) |  | 1d | 2027-02-14 | 2027-02-14 | UG-13B-S10-A030 SS+1d, UG-13B-S10-A030 FF+2d | 0d |  | F7 | UG-13B | UG-13B-S10 | A040 | 12.000106 |
| UG-13B-S10-A050 |  | Install dewatering and draw down |  | 8d | 2027-02-15 | 2027-02-23 | UG-13B-S10-A040 SS+1d, UG-13B-S10-A040 FF+2d | 0d |  | F7 | UG-13B | UG-13B-S10 | A050 | 6.000053 |
| UG-13B-S10-A060 |  | Excavate and strut to formation |  | 1d | 2027-02-25 | 2027-02-25 | UG-13B-S10-A050 SS+9d, UG-13B-S10-A050 FF+2d | 0d |  | F7 | UG-13B | UG-13B-S10 | A060 | 84.600737 |
| UG-13B-S10-A070 |  | Trim piles, blinding and piled slab (incl. cure) |  | 4d | 2027-02-27 | 2027-03-02 | UG-13B-S10-A060 SS+1d, UG-13B-S10-A060 FF+2d | 46d |  | F7 | UG-13B | UG-13B-S10 | A070 | 6.000053 |
| UG-13B-S10-A080 |  | Lay and joint pipe (incl. fittings, tie-in) |  | 4d | 2027-04-24 | 2027-04-27 | UG-13B-S10-A070 SS+2d, UG-13B-S10-A070 FF+2d, UG-13B-S09-A080 | 0d |  | F7 | UG-13B | UG-13B-S10 | A080 | 6.000053 |
| UG-13B-S10-A090 |  | Surround, joint test and line test |  | 3d | 2027-04-26 | 2027-04-28 | UG-13B-S10-A080 SS+2d, UG-13B-S10-A080 FF+2d | 0d |  | F7 | UG-13B | UG-13B-S10 | A090 | 6.000053 |
| UG-13B-S10-A100 |  | Backfill to NG and remove struts |  | 1d | 2027-04-28 | 2027-04-28 | UG-13B-S10-A090 SS+2d, UG-13B-S10-A090 FF+2d | 0d |  | F7 | UG-13B | UG-13B-S10 | A100 | 73.888257 |
| UG-13B-S10-A110 |  | Dewatering off, extract sheets, reinstate |  | 2d | 2027-04-29 | 2027-05-01 | UG-13B-S10-A100 SS+1d, UG-13B-S10-A100 FF+2d |  |  | F7 | UG-13B | UG-13B-S10 | A110 | 12.000106 |
|  | UG-13B-S08 | **UG-13B-S08 / HDPE-UG13B-S08-TEE223-CH238-(-5.40/-5.40)-16m / Run / Sheet piles** |  |  | 2026-12-01 | 2027-05-06 |  |  |  |  |  |  |  |  |
| UG-13B-S08-A010 |  | Release: drawings, holds, access and gates | milestone | 0d | 2026-12-01 | 2026-12-01 |  | 63d | start on or after 2026-12-01 | F7 | UG-13B | UG-13B-S08 | A010 |  |
| UG-13B-S08-A020 |  | Set-out, crossing survey and working platform |  | 1d | 2027-02-13 | 2027-02-13 | UG-13B-S08-A010, UG-13B-S09-A030 SS | 2d |  | F7 | UG-13B | UG-13B-S08 | A020 | 16.141491 |
| UG-13B-S08-A030 |  | Pipe-support piling from platform (incl. integrity tests) |  | 2d | 2027-02-16 | 2027-02-17 | UG-13B-S08-A020 SS+1d, UG-13B-S08-A020 FF+2d, UG-13B-S09-A030 | 0d |  | F7 | UG-13B | UG-13B-S08 | A030 | 7 |
| UG-13B-S08-A040 |  | Install sheet piles (shored lengths) |  | 2d | 2027-02-18 | 2027-02-20 | UG-13B-S08-A030 SS+1d, UG-13B-S08-A030 FF+2d, UG-13B-S09-A040 | 0d |  | F7 | UG-13B | UG-13B-S08 | A040 | 32.282982 |
| UG-13B-S08-A050 |  | Install dewatering and draw down |  | 8d | 2027-03-21 | 2027-03-29 | UG-13B-S08-A040 SS+1d, UG-13B-S08-A040 FF+2d, UG-13B-S09-A060 FS-8d | 0d |  | F7 | UG-13B | UG-13B-S08 | A050 | 16.141491 |
| UG-13B-S08-A060 |  | Excavate and strut to formation |  | 1d | 2027-03-31 | 2027-03-31 | UG-13B-S08-A050 SS+9d, UG-13B-S08-A050 FF+2d, UG-12-S03-A100, UG-13B-S09-A060 | 0d |  | F7 | UG-13B | UG-13B-S08 | A060 | 227.51911 |
| UG-13B-S08-A070 |  | Trim piles, blinding and piled slab (incl. cure) |  | 5d | 2027-04-22 | 2027-04-27 | UG-13B-S08-A060 SS+1d, UG-13B-S08-A060 FF+2d, UG-13B-S09-A070 | 0d |  | F7 | UG-13B | UG-13B-S08 | A070 | 16.141491 |
| UG-13B-S08-A080 |  | Lay and joint pipe (incl. fittings, tie-in) |  | 2d | 2027-04-24 | 2027-04-25 | UG-13B-S08-A070 SS+2d, UG-13B-S08-A070 FF+2d, UG-13B-S09-A080 | 0d |  | F7 | UG-13B | UG-13B-S08 | A080 | 16.141491 |
| UG-13B-S08-A090 |  | Surround, joint test and line test |  | 3d | 2027-04-25 | 2027-04-27 | UG-13B-S08-A080 SS+1d, UG-13B-S08-A080 FF+2d | 4d |  | F7 | UG-13B | UG-13B-S08 | A090 | 16.141491 |
| UG-13B-S08-A100 |  | Backfill to NG and remove struts |  | 1d | 2027-05-04 | 2027-05-04 | UG-13B-S08-A090 SS+2d, UG-13B-S08-A090 FF+2d, UG-13B-S09-A100 | 0d |  | F7 | UG-13B | UG-13B-S08 | A100 | 198.725331 |
| UG-13B-S08-A110 |  | Dewatering off, extract sheets, reinstate |  | 2d | 2027-05-05 | 2027-05-06 | UG-13B-S08-A100 SS+1d, UG-13B-S08-A100 FF+2d |  |  | F7 | UG-13B | UG-13B-S08 | A110 | 32.282982 |

Notes:
- UG-13B-S10-A010: Notes: Front F7 / Line UG-13B / Package UG-13B-S10 / Workbook logic: gates: START, D_DLU, structure ready
- UG-13B-S10-A020: Notes: Front F7 / Line UG-13B / Package UG-13B-S10 / Quantity 6 m / Workbook logic: FS from A010; UG-13B-S09-A030 (SS, tie-in team follows the adjacent run)
- UG-13B-S10-A030: Notes: Front F7 / Line UG-13B / Package UG-13B-S10 / Quantity 4 piles / Workbook logic: gate: D_PILEDES
- UG-13B-S10-A040: Notes: Front F7 / Line UG-13B / Package UG-13B-S10 / Quantity 12 m wall
- UG-13B-S10-A050: Notes: Front F7 / Line UG-13B / Package UG-13B-S10 / Quantity 6 m
- UG-13B-S10-A060: Notes: Front F7 / Line UG-13B / Package UG-13B-S10 / Quantity 85 m3
- UG-13B-S10-A070: Notes: Front F7 / Line UG-13B / Package UG-13B-S10 / Quantity 6 m
- UG-13B-S10-A080: Notes: Front F7 / Line UG-13B / Package UG-13B-S10 / Quantity 6 m / Workbook logic: UG-13B-S09-A080 (FS, closure)
- UG-13B-S10-A090: Notes: Front F7 / Line UG-13B / Package UG-13B-S10 / Quantity 6 m
- UG-13B-S10-A100: Notes: Front F7 / Line UG-13B / Package UG-13B-S10 / Quantity 74 m3
- UG-13B-S10-A110: Notes: Front F7 / Line UG-13B / Package UG-13B-S10 / Quantity 12 m wall
- UG-13B-S08-A010: Notes: Front F7 / Line UG-13B / Package UG-13B-S08 / Workbook logic: gates: START, D_DLU
- UG-13B-S08-A020: Notes: Front F7 / Line UG-13B / Package UG-13B-S08 / Quantity 16 m / Workbook logic: FS from A010; UG-13B-S09-A030 (SS, set-out one package ahead of piling)
- UG-13B-S08-A030: Notes: Front F7 / Line UG-13B / Package UG-13B-S08 / Quantity 7 piles / Workbook logic: gate: D_PILEDES
- UG-13B-S08-A040: Notes: Front F7 / Line UG-13B / Package UG-13B-S08 / Quantity 32 m wall
- UG-13B-S08-A050: Notes: Front F7 / Line UG-13B / Package UG-13B-S08 / Quantity 16 m / Workbook logic: UG-13B-S09-A060 (FS, negative lag = own duration: drawdown complete when the excavation crew is free)
- UG-13B-S08-A060: Notes: Front F7 / Line UG-13B / Package UG-13B-S08 / Quantity 228 m3 / Workbook logic: UG-12-S03-A100 (FS, deeper first)
- UG-13B-S08-A070: Notes: Front F7 / Line UG-13B / Package UG-13B-S08 / Quantity 16 m
- UG-13B-S08-A080: Notes: Front F7 / Line UG-13B / Package UG-13B-S08 / Quantity 16 m
- UG-13B-S08-A090: Notes: Front F7 / Line UG-13B / Package UG-13B-S08 / Quantity 16 m
- UG-13B-S08-A100: Notes: Front F7 / Line UG-13B / Package UG-13B-S08 / Quantity 199 m3
- UG-13B-S08-A110: Notes: Front F7 / Line UG-13B / Package UG-13B-S08 / Quantity 32 m wall

| ID | WBS | Activity | Type | Duration | Start | Finish | Predecessors | Free float | Constraint | Text1 | Text2 | Text3 | Text4 | Number1 |
| --- | --- | --- | --- | --- | --- | --- | --- | --- | --- | --- | --- | --- | --- | --- |
|  | UG-13B-S04 | **UG-13B-S04 / HDPE-UG13B-S04-CH072-CH096-(-4.10/-4.11)-24m / Run / Sheet piles** |  |  | 2026-12-01 | 2027-05-09 |  |  |  |  |  |  |  |  |
| UG-13B-S04-A010 |  | Release: drawings, holds, access and gates | milestone | 0d | 2026-12-01 | 2026-12-01 |  | 66d | start on or after 2026-12-01 | F7 | UG-13B | UG-13B-S04 | A010 |  |
| UG-13B-S04-A020 |  | Set-out, crossing survey and working platform |  | 1d | 2027-02-16 | 2027-02-16 | UG-13B-S04-A010, UG-13B-S08-A030 SS | 2d |  | F7 | UG-13B | UG-13B-S04 | A020 | 24 |
| UG-13B-S04-A030 |  | Pipe-support piling from platform (incl. integrity tests) |  | 4d | 2027-02-20 | 2027-02-23 | UG-13B-S04-A020 SS+1d, UG-13B-S04-A020 FF+2d, UG-13B-S08-A030 | 0d |  | F7 | UG-13B | UG-13B-S04 | A030 | 20 |
| UG-13B-S04-A040 |  | Install sheet piles (shored lengths) |  | 2d | 2027-02-21 | 2027-02-22 | UG-13B-S04-A030 SS+2d, UG-13B-S04-A030 FF+2d, UG-13B-S08-A040 | 3d |  | F7 | UG-13B | UG-13B-S04 | A040 | 48 |
| UG-13B-S04-A050 |  | Install dewatering and draw down |  | 8d | 2027-03-23 | 2027-03-31 | UG-13B-S04-A040 SS+1d, UG-13B-S04-A040 FF+2d, UG-13B-S08-A060 FS-8d | 0d |  | F7 | UG-13B | UG-13B-S04 | A050 | 24 |
| UG-13B-S04-A060 |  | Excavate and strut to formation |  | 1d | 2027-04-03 | 2027-04-03 | UG-13B-S04-A050 SS+9d, UG-13B-S04-A050 FF+2d, UG-13B-S08-A060 | 0d |  | F7 | UG-13B | UG-13B-S04 | A060 | 244.69394 |
| UG-13B-S04-A070 |  | Trim piles, blinding and piled slab (incl. cure) |  | 6d | 2027-04-28 | 2027-05-04 | UG-13B-S04-A060 SS+1d, UG-13B-S04-A060 FF+2d, UG-13B-S08-A070 | 0d |  | F7 | UG-13B | UG-13B-S04 | A070 | 24 |
| UG-13B-S04-A080 |  | Lay and joint pipe (incl. fittings, tie-in) |  | 4d | 2027-05-01 | 2027-05-04 | UG-13B-S04-A070 SS+3d, UG-13B-S04-A070 FF+2d, UG-13B-S08-A080 | 0d |  | F7 | UG-13B | UG-13B-S04 | A080 | 24 |
| UG-13B-S04-A090 |  | Surround, joint test and line test |  | 3d | 2027-05-03 | 2027-05-05 | UG-13B-S04-A080 SS+2d, UG-13B-S04-A080 FF+2d | 0d |  | F7 | UG-13B | UG-13B-S04 | A090 | 24 |
| UG-13B-S04-A100 |  | Backfill to NG and remove struts |  | 1d | 2027-05-06 | 2027-05-06 | UG-13B-S04-A090 SS+2d, UG-13B-S04-A090 FF+2d, UG-13B-S08-A100 | 0d |  | F7 | UG-13B | UG-13B-S04 | A100 | 202.001043 |
| UG-13B-S04-A110 |  | Dewatering off, extract sheets, reinstate |  | 2d | 2027-05-08 | 2027-05-09 | UG-13B-S04-A100 SS+1d, UG-13B-S04-A100 FF+2d |  |  | F7 | UG-13B | UG-13B-S04 | A110 | 48 |
|  | UG-13B-S03 | **UG-13B-S03 / HDPE-UG13B-S03-CH057-CH072-(-4.10/-4.10)-15m / Run / Sheet piles** |  |  | 2026-12-01 | 2027-05-13 |  |  |  |  |  |  |  |  |
| UG-13B-S03-A010 |  | Release: drawings, holds, access and gates | milestone | 0d | 2026-12-01 | 2026-12-01 |  | 69d | start on or after 2026-12-01 | F7 | UG-13B | UG-13B-S03 | A010 |  |
| UG-13B-S03-A020 |  | Set-out, crossing survey and working platform |  | 1d | 2027-02-20 | 2027-02-20 | UG-13B-S03-A010, UG-13B-S04-A030 SS | 3d |  | F7 | UG-13B | UG-13B-S03 | A020 | 15 |
| UG-13B-S03-A030 |  | Pipe-support piling from platform (incl. integrity tests) |  | 3d | 2027-02-24 | 2027-02-27 | UG-13B-S03-A020 SS+1d, UG-13B-S03-A020 FF+2d, UG-13B-S04-A030 | 0d |  | F7 | UG-13B | UG-13B-S03 | A030 | 12 |
| UG-13B-S03-A040 |  | Install sheet piles (shored lengths) |  | 2d | 2027-02-27 | 2027-02-28 | UG-13B-S03-A030 SS+2d, UG-13B-S03-A030 FF+2d, UG-13B-S04-A040 | 1d |  | F7 | UG-13B | UG-13B-S03 | A040 | 30 |
| UG-13B-S03-A050 |  | Install dewatering and draw down |  | 8d | 2027-03-25 | 2027-04-03 | UG-13B-S03-A040 SS+1d, UG-13B-S03-A040 FF+2d, UG-13B-S04-A060 FS-8d | 0d |  | F7 | UG-13B | UG-13B-S03 | A050 | 15 |
| UG-13B-S03-A060 |  | Excavate and strut to formation |  | 1d | 2027-04-04 | 2027-04-04 | UG-13B-S03-A050 SS+9d, UG-13B-S03-A050 FF+2d, UG-13B-S04-A060 | 0d |  | F7 | UG-13B | UG-13B-S03 | A060 | 153.130209 |
| UG-13B-S03-A070 |  | Trim piles, blinding and piled slab (incl. cure) |  | 5d | 2027-05-05 | 2027-05-10 | UG-13B-S03-A060 SS+1d, UG-13B-S03-A060 FF+2d, UG-13B-S04-A070 | 0d |  | F7 | UG-13B | UG-13B-S03 | A070 | 15 |
| UG-13B-S03-A080 |  | Lay and joint pipe (incl. fittings, tie-in) |  | 1d | 2027-05-08 | 2027-05-08 | UG-13B-S03-A070 SS+2d, UG-13B-S03-A070 FF+2d, UG-13B-S04-A080 | 0d |  | F7 | UG-13B | UG-13B-S03 | A080 | 15 |
| UG-13B-S03-A090 |  | Surround, joint test and line test |  | 3d | 2027-05-08 | 2027-05-10 | UG-13B-S03-A080 SS+1d, UG-13B-S03-A080 FF+2d | 0d |  | F7 | UG-13B | UG-13B-S03 | A090 | 15 |
| UG-13B-S03-A100 |  | Backfill to NG and remove struts |  | 1d | 2027-05-11 | 2027-05-11 | UG-13B-S03-A090 SS+2d, UG-13B-S03-A090 FF+2d, UG-13B-S04-A100 | 0d |  | F7 | UG-13B | UG-13B-S03 | A100 | 126.294182 |
| UG-13B-S03-A110 |  | Dewatering off, extract sheets, reinstate |  | 2d | 2027-05-12 | 2027-05-13 | UG-13B-S03-A100 SS+1d, UG-13B-S03-A100 FF+2d |  |  | F7 | UG-13B | UG-13B-S03 | A110 | 30 |

Notes:
- UG-13B-S04-A010: Notes: Front F7 / Line UG-13B / Package UG-13B-S04 / Workbook logic: gates: START, D_DLU
- UG-13B-S04-A020: Notes: Front F7 / Line UG-13B / Package UG-13B-S04 / Quantity 24 m / Workbook logic: FS from A010; UG-13B-S08-A030 (SS, set-out one package ahead of piling)
- UG-13B-S04-A030: Notes: Front F7 / Line UG-13B / Package UG-13B-S04 / Quantity 20 piles / Workbook logic: gate: D_PILEDES
- UG-13B-S04-A040: Notes: Front F7 / Line UG-13B / Package UG-13B-S04 / Quantity 48 m wall
- UG-13B-S04-A050: Notes: Front F7 / Line UG-13B / Package UG-13B-S04 / Quantity 24 m / Workbook logic: UG-13B-S08-A060 (FS, negative lag = own duration: drawdown complete when the excavation crew is free)
- UG-13B-S04-A060: Notes: Front F7 / Line UG-13B / Package UG-13B-S04 / Quantity 245 m3
- UG-13B-S04-A070: Notes: Front F7 / Line UG-13B / Package UG-13B-S04 / Quantity 24 m
- UG-13B-S04-A080: Notes: Front F7 / Line UG-13B / Package UG-13B-S04 / Quantity 24 m
- UG-13B-S04-A090: Notes: Front F7 / Line UG-13B / Package UG-13B-S04 / Quantity 24 m
- UG-13B-S04-A100: Notes: Front F7 / Line UG-13B / Package UG-13B-S04 / Quantity 202 m3
- UG-13B-S04-A110: Notes: Front F7 / Line UG-13B / Package UG-13B-S04 / Quantity 48 m wall
- UG-13B-S03-A010: Notes: Front F7 / Line UG-13B / Package UG-13B-S03 / Workbook logic: gates: START, D_DLU
- UG-13B-S03-A020: Notes: Front F7 / Line UG-13B / Package UG-13B-S03 / Quantity 15 m / Workbook logic: FS from A010; UG-13B-S04-A030 (SS, set-out one package ahead of piling)
- UG-13B-S03-A030: Notes: Front F7 / Line UG-13B / Package UG-13B-S03 / Quantity 12 piles / Workbook logic: gate: D_PILEDES
- UG-13B-S03-A040: Notes: Front F7 / Line UG-13B / Package UG-13B-S03 / Quantity 30 m wall
- UG-13B-S03-A050: Notes: Front F7 / Line UG-13B / Package UG-13B-S03 / Quantity 15 m / Workbook logic: UG-13B-S04-A060 (FS, negative lag = own duration: drawdown complete when the excavation crew is free)
- UG-13B-S03-A060: Notes: Front F7 / Line UG-13B / Package UG-13B-S03 / Quantity 153 m3
- UG-13B-S03-A070: Notes: Front F7 / Line UG-13B / Package UG-13B-S03 / Quantity 15 m
- UG-13B-S03-A080: Notes: Front F7 / Line UG-13B / Package UG-13B-S03 / Quantity 15 m
- UG-13B-S03-A090: Notes: Front F7 / Line UG-13B / Package UG-13B-S03 / Quantity 15 m
- UG-13B-S03-A100: Notes: Front F7 / Line UG-13B / Package UG-13B-S03 / Quantity 126 m3
- UG-13B-S03-A110: Notes: Front F7 / Line UG-13B / Package UG-13B-S03 / Quantity 30 m wall

| ID | WBS | Activity | Type | Duration | Start | Finish | Predecessors | Free float | Constraint | Text1 | Text2 | Text3 | Text4 | Number1 |
| --- | --- | --- | --- | --- | --- | --- | --- | --- | --- | --- | --- | --- | --- | --- |
|  | UG-13B-S02 | **UG-13B-S02 / HDPE-UG13B-S02-EL031-CH057-(-4.10/-4.10)-26m / Run / Sheet piles** |  |  | 2026-12-01 | 2027-05-22 |  |  |  |  |  |  |  |  |
| UG-13B-S02-A010 |  | Release: drawings, holds, access and gates | milestone | 0d | 2026-12-01 | 2026-12-01 |  | 73d | start on or after 2026-12-01 | F7 | UG-13B | UG-13B-S02 | A010 |  |
| UG-13B-S02-A020 |  | Set-out, crossing survey and working platform |  | 1d | 2027-02-24 | 2027-02-24 | UG-13B-S02-A010, UG-13B-S03-A030 SS | 2d |  | F7 | UG-13B | UG-13B-S02 | A020 | 26.256824 |
| UG-13B-S02-A030 |  | Pipe-support piling from platform (incl. integrity tests) |  | 4d | 2027-02-28 | 2027-03-03 | UG-13B-S02-A020 SS+1d, UG-13B-S02-A020 FF+2d, UG-13B-S03-A030 | 0d |  | F7 | UG-13B | UG-13B-S02 | A030 | 20 |
| UG-13B-S02-A040 |  | Install sheet piles (shored lengths) |  | 3d | 2027-03-02 | 2027-03-04 | UG-13B-S02-A030 SS+2d, UG-13B-S02-A030 FF+2d, UG-13B-S03-A040 | 1d |  | F7 | UG-13B | UG-13B-S02 | A040 | 52.513648 |
| UG-13B-S02-A050 |  | Install dewatering and draw down |  | 8d | 2027-03-27 | 2027-04-04 | UG-13B-S02-A040 SS+2d, UG-13B-S02-A040 FF+2d, UG-13B-S03-A060 FS-8d | 0d |  | F7 | UG-13B | UG-13B-S02 | A050 | 26.256824 |
| UG-13B-S02-A060 |  | Excavate and strut to formation |  | 2d | 2027-04-06 | 2027-04-07 | UG-13B-S02-A050 SS+9d, UG-13B-S02-A050 FF+2d, UG-13B-S03-A060 | 0d |  | F7 | UG-13B | UG-13B-S02 | A060 | 267.885196 |
| UG-13B-S02-A070 |  | Trim piles, blinding and piled slab (incl. cure) |  | 6d | 2027-05-11 | 2027-05-17 | UG-13B-S02-A060 SS+1d, UG-13B-S02-A060 FF+2d, UG-13B-S03-A070 | 0d |  | F7 | UG-13B | UG-13B-S02 | A070 | 26.256824 |
| UG-13B-S02-A080 |  | Lay and joint pipe (incl. fittings, tie-in) |  | 3d | 2027-05-15 | 2027-05-17 | UG-13B-S02-A070 SS+3d, UG-13B-S02-A070 FF+2d, UG-13B-S03-A080 | 0d |  | F7 | UG-13B | UG-13B-S02 | A080 | 26.256824 |
| UG-13B-S02-A090 |  | Surround, joint test and line test |  | 3d | 2027-05-16 | 2027-05-18 | UG-13B-S02-A080 SS+2d, UG-13B-S02-A080 FF+2d | 0d |  | F7 | UG-13B | UG-13B-S02 | A090 | 26.256824 |
| UG-13B-S02-A100 |  | Backfill to NG and remove struts |  | 1d | 2027-05-18 | 2027-05-18 | UG-13B-S02-A090 SS+2d, UG-13B-S02-A090 FF+2d, UG-13B-S03-A100 | 0d |  | F7 | UG-13B | UG-13B-S02 | A100 | 220.978578 |
| UG-13B-S02-A110 |  | Dewatering off, extract sheets, reinstate |  | 3d | 2027-05-19 | 2027-05-22 | UG-13B-S02-A100 SS+1d, UG-13B-S02-A100 FF+2d |  |  | F7 | UG-13B | UG-13B-S02 | A110 | 52.513648 |
|  | UG-13 | **UG-13** |  |  | 2026-12-01 | 2027-06-26 |  |  |  |  |  |  |  |  |
|  | UG-13-S03 | **UG-13-S03 / GRP-UG13-S03-CH052-RASPS-(-5.92/-5.61)-32m / Run / Sheet piles** |  |  | 2026-12-01 | 2027-01-20 |  |  |  |  |  |  |  |  |
| UG-13-S03-A010 |  | Release: drawings, holds, access and gates | milestone | 0d | 2026-12-01 | 2026-12-01 |  | 9d | start on or after 2026-12-01 | F7 | UG-13 | UG-13-S03 | A010 |  |
| UG-13-S03-A020 |  | Set-out, crossing survey and working platform |  | 1d | 2026-12-12 | 2026-12-12 | UG-13-S03-A010, UG-13B-S05-A030 SS | 4d |  | F7 | UG-13 | UG-13-S03 | A020 | 32.269609 |
| UG-13-S03-A030 |  | Pipe-support piling from platform (incl. integrity tests) |  | 5d | 2026-12-17 | 2026-12-22 | UG-13-S03-A020 SS+1d, UG-13-S03-A020 FF+2d, UG-13B-S05-A030 | 0d |  | F7 | UG-13 | UG-13-S03 | A030 | 24 |
| UG-13-S03-A040 |  | Install sheet piles (shored lengths) |  | 3d | 2026-12-20 | 2026-12-22 | UG-13-S03-A030 SS+2d, UG-13-S03-A030 FF+2d, UG-13B-S05-A040 | 0d |  | F7 | UG-13 | UG-13-S03 | A040 | 64.539218 |
| UG-13-S03-A050 |  | Install dewatering and draw down |  | 8d | 2026-12-22 | 2026-12-30 | UG-13-S03-A040 SS+2d, UG-13-S03-A040 FF+2d, UG-13B-S05-A060 FS-8d | 0d |  | F7 | UG-13 | UG-13-S03 | A050 | 32.269609 |
| UG-13-S03-A060 |  | Excavate and strut to formation |  | 3d | 2027-01-02 | 2027-01-04 | UG-13-S03-A050 SS+9d, UG-13-S03-A050 FF+2d, UG-13B-S05-A060 | 1d |  | F7 | UG-13 | UG-13-S03 | A060 | 673.106882 |
| UG-13-S03-A070 |  | Trim piles, blinding and piled slab (incl. cure) |  | 6d | 2027-01-09 | 2027-01-14 | UG-13-S03-A060 SS+2d, UG-13-S03-A060 FF+2d, UG-13B-S05-A070 | 0d |  | F7 | UG-13 | UG-13-S03 | A070 | 32.269609 |
| UG-13-S03-A080 |  | Lay and joint pipe (incl. fittings, tie-in) |  | 3d | 2027-01-11 | 2027-01-13 | UG-13-S03-A070 SS+3d, UG-13-S03-A070 FF+2d, UG-13B-S05-A080 | 0d |  | F7 | UG-13 | UG-13-S03 | A080 | 32.269609 |
| UG-13-S03-A090 |  | Surround, joint test and line test |  | 3d | 2027-01-13 | 2027-01-16 | UG-13-S03-A080 SS+2d, UG-13-S03-A080 FF+2d | 0d |  | F7 | UG-13 | UG-13-S03 | A090 | 32.269609 |
| UG-13-S03-A100 |  | Backfill to NG and remove struts |  | 2d | 2027-01-17 | 2027-01-18 | UG-13-S03-A090 SS+2d, UG-13-S03-A090 FF+2d, UG-13B-S05-A100 | 0d |  | F7 | UG-13 | UG-13-S03 | A100 | 522.01735 |
| UG-13-S03-A110 |  | Dewatering off, extract sheets, reinstate |  | 3d | 2027-01-18 | 2027-01-20 | UG-13-S03-A100 SS+1d, UG-13-S03-A100 FF+2d |  |  | F7 | UG-13 | UG-13-S03 | A110 | 64.539218 |

Notes:
- UG-13B-S02-A010: Notes: Front F7 / Line UG-13B / Package UG-13B-S02 / Workbook logic: gates: START, D_DLU
- UG-13B-S02-A020: Notes: Front F7 / Line UG-13B / Package UG-13B-S02 / Quantity 26 m / Workbook logic: FS from A010; UG-13B-S03-A030 (SS, set-out one package ahead of piling)
- UG-13B-S02-A030: Notes: Front F7 / Line UG-13B / Package UG-13B-S02 / Quantity 20 piles / Workbook logic: gate: D_PILEDES
- UG-13B-S02-A040: Notes: Front F7 / Line UG-13B / Package UG-13B-S02 / Quantity 53 m wall
- UG-13B-S02-A050: Notes: Front F7 / Line UG-13B / Package UG-13B-S02 / Quantity 26 m / Workbook logic: UG-13B-S03-A060 (FS, negative lag = own duration: drawdown complete when the excavation crew is free)
- UG-13B-S02-A060: Notes: Front F7 / Line UG-13B / Package UG-13B-S02 / Quantity 268 m3
- UG-13B-S02-A070: Notes: Front F7 / Line UG-13B / Package UG-13B-S02 / Quantity 26 m
- UG-13B-S02-A080: Notes: Front F7 / Line UG-13B / Package UG-13B-S02 / Quantity 26 m
- UG-13B-S02-A090: Notes: Front F7 / Line UG-13B / Package UG-13B-S02 / Quantity 26 m
- UG-13B-S02-A100: Notes: Front F7 / Line UG-13B / Package UG-13B-S02 / Quantity 221 m3
- UG-13B-S02-A110: Notes: Front F7 / Line UG-13B / Package UG-13B-S02 / Quantity 53 m wall
- UG-13-S03-A010: Notes: Front F7 / Line UG-13 / Package UG-13-S03 / Workbook logic: gates: START, D_DLU
- UG-13-S03-A020: Notes: Front F7 / Line UG-13 / Package UG-13-S03 / Quantity 32 m / Workbook logic: FS from A010; UG-13B-S05-A030 (SS, set-out one package ahead of piling)
- UG-13-S03-A030: Notes: Front F7 / Line UG-13 / Package UG-13-S03 / Quantity 24 piles / Workbook logic: gate: D_PILEDES
- UG-13-S03-A040: Notes: Front F7 / Line UG-13 / Package UG-13-S03 / Quantity 65 m wall
- UG-13-S03-A050: Notes: Front F7 / Line UG-13 / Package UG-13-S03 / Quantity 32 m / Workbook logic: UG-13B-S05-A060 (FS, negative lag = own duration: drawdown complete when the excavation crew is free)
- UG-13-S03-A060: Notes: Front F7 / Line UG-13 / Package UG-13-S03 / Quantity 673 m3
- UG-13-S03-A070: Notes: Front F7 / Line UG-13 / Package UG-13-S03 / Quantity 32 m
- UG-13-S03-A080: Notes: Front F7 / Line UG-13 / Package UG-13-S03 / Quantity 32 m
- UG-13-S03-A090: Notes: Front F7 / Line UG-13 / Package UG-13-S03 / Quantity 32 m
- UG-13-S03-A100: Notes: Front F7 / Line UG-13 / Package UG-13-S03 / Quantity 522 m3
- UG-13-S03-A110: Notes: Front F7 / Line UG-13 / Package UG-13-S03 / Quantity 65 m wall

| ID | WBS | Activity | Type | Duration | Start | Finish | Predecessors | Free float | Constraint | Text1 | Text2 | Text3 | Text4 | Number1 |
| --- | --- | --- | --- | --- | --- | --- | --- | --- | --- | --- | --- | --- | --- | --- |
|  | UG-13-S04 | **UG-13-S04 / GRP-UG13-S04-FSTI-CH037-(-5.92/-5.92)-37m / Run / Sheet piles** |  |  | 2026-12-01 | 2027-01-25 |  |  |  |  |  |  |  |  |
| UG-13-S04-A010 |  | Release: drawings, holds, access and gates | milestone | 0d | 2026-12-01 | 2026-12-01 |  | 14d | start on or after 2026-12-01 | F7 | UG-13 | UG-13-S04 | A010 |  |
| UG-13-S04-A020 |  | Set-out, crossing survey and working platform |  | 1d | 2026-12-17 | 2026-12-17 | UG-13-S04-A010, UG-13-S03-A030 SS | 4d |  | F7 | UG-13 | UG-13-S04 | A020 | 37.2 |
| UG-13-S04-A030 |  | Pipe-support piling from platform (incl. integrity tests) |  | 6d | 2026-12-23 | 2026-12-29 | UG-13-S04-A020 SS+1d, UG-13-S04-A020 FF+2d, UG-13-S03-A030 | 0d |  | F7 | UG-13 | UG-13-S04 | A030 | 28 |
| UG-13-S04-A040 |  | Install sheet piles (shored lengths) |  | 3d | 2026-12-26 | 2026-12-28 | UG-13-S04-A030 SS+3d, UG-13-S04-A030 FF+2d, UG-13-S03-A040 | 0d |  | F7 | UG-13 | UG-13-S04 | A040 | 74.4 |
| UG-13-S04-A050 |  | Install dewatering and draw down |  | 8d | 2026-12-28 | 2027-01-05 | UG-13-S04-A040 SS+2d, UG-13-S04-A040 FF+2d, UG-13-S03-A060 FS-8d | 0d |  | F7 | UG-13 | UG-13-S04 | A050 | 37.2 |
| UG-13-S04-A060 |  | Excavate and strut to formation |  | 4d | 2027-01-07 | 2027-01-11 | UG-13-S04-A050 SS+9d, UG-13-S04-A050 FF+2d, UG-13-S03-A060 | 2d |  | F7 | UG-13 | UG-13-S04 | A060 | 784.827781 |
| UG-13-S04-A070 |  | Trim piles, blinding and piled slab (incl. cure) |  | 7d | 2027-01-16 | 2027-01-23 | UG-13-S04-A060 SS+2d, UG-13-S04-A060 FF+2d, UG-13-S03-A070 | 0d |  | F7 | UG-13 | UG-13-S04 | A070 | 37.2 |
| UG-13-S04-A080 |  | Lay and joint pipe (incl. fittings, tie-in) |  | 2d | 2027-01-18 | 2027-01-19 | UG-13-S04-A070 SS+3d, UG-13-S04-A070 FF+2d, UG-13-S03-A080 | 0d |  | F7 | UG-13 | UG-13-S04 | A080 | 37.2 |
| UG-13-S04-A090 |  | Surround, joint test and line test |  | 3d | 2027-01-19 | 2027-01-21 | UG-13-S04-A080 SS+1d, UG-13-S04-A080 FF+2d | 0d |  | F7 | UG-13 | UG-13-S04 | A090 | 37.2 |
| UG-13-S04-A100 |  | Backfill to NG and remove struts |  | 2d | 2027-01-21 | 2027-01-23 | UG-13-S04-A090 SS+2d, UG-13-S04-A090 FF+2d, UG-13-S03-A100 | 0d |  | F7 | UG-13 | UG-13-S04 | A100 | 606.529075 |
| UG-13-S04-A110 |  | Dewatering off, extract sheets, reinstate |  | 3d | 2027-01-23 | 2027-01-25 | UG-13-S04-A100 SS+1d, UG-13-S04-A100 FF+2d |  |  | F7 | UG-13 | UG-13-S04 | A110 | 74.4 |
|  | UG-13-S05 | **UG-13-S05 / GRP-UG13-S05-CH037-RASPS-(-5.92/-5.93)-44m / Run / Sheet piles** |  |  | 2026-12-01 | 2027-04-27 |  |  |  |  |  |  |  |  |
| UG-13-S05-A010 |  | Release: drawings, holds, access and gates | milestone | 0d | 2026-12-01 | 2026-12-01 |  | 45d | start on or after 2026-12-01 | F7 | UG-13 | UG-13-S05 | A010 |  |
| UG-13-S05-A020 |  | Set-out, crossing survey and working platform |  | 1d | 2027-01-23 | 2027-01-23 | UG-13-S05-A010, UG-07A-S11-A030 SS | 5d |  | F7 | UG-13 | UG-13-S05 | A020 | 44.343104 |
| UG-13-S05-A030 |  | Pipe-support piling from platform (incl. integrity tests) |  | 7d | 2027-01-30 | 2027-02-06 | UG-13-S05-A020 SS+1d, UG-13-S05-A020 FF+2d, UG-07A-S11-A030 | 0d |  | F7 | UG-13 | UG-13-S05 | A030 | 32 |
| UG-13-S05-A040 |  | Install sheet piles (shored lengths) |  | 4d | 2027-02-01 | 2027-02-04 | UG-13-S05-A030 SS+3d, UG-13-S05-A030 FF+2d, UG-07A-S11-A040 | 3d |  | F7 | UG-13 | UG-13-S05 | A040 | 88.686208 |
| UG-13-S05-A050 |  | Install dewatering and draw down |  | 9d | 2027-03-08 | 2027-03-17 | UG-13-S05-A040 SS+2d, UG-13-S05-A040 FF+2d, UG-07A-S11-A060 FS-9d | 1d |  | F7 | UG-13 | UG-13-S05 | A050 | 44.343104 |
| UG-13-S05-A060 |  | Excavate and strut to formation |  | 4d | 2027-03-20 | 2027-03-23 | UG-13-S05-A050 SS+9d, UG-13-S05-A050 FF+2d, UG-13B-S12-A060 SS, UG-07A-S11-A060 | 0d |  | F7 | UG-13 | UG-13-S05 | A060 | 935.942588 |
| UG-13-S05-A070 |  | Trim piles, blinding and piled slab (incl. cure) |  | 7d | 2027-03-27 | 2027-04-03 | UG-13-S05-A060 SS+2d, UG-13-S05-A060 FF+2d, UG-07A-S11-A070 | 0d |  | F7 | UG-13 | UG-13-S05 | A070 | 44.343104 |
| UG-13-S05-A080 |  | Lay and joint pipe (incl. fittings, tie-in) |  | 4d | 2027-03-29 | 2027-04-01 | UG-13-S05-A070 SS+3d, UG-13-S05-A070 FF+2d, UG-07A-S11-A080 | 0d |  | F7 | UG-13 | UG-13-S05 | A080 | 44.343104 |
| UG-13-S05-A090 |  | Surround, joint test and line test |  | 3d | 2027-03-31 | 2027-04-03 | UG-13-S05-A080 SS+2d, UG-13-S05-A080 FF+2d | 18d |  | F7 | UG-13 | UG-13-S05 | A090 | 44.343104 |
| UG-13-S05-A100 |  | Backfill to NG and remove struts |  | 3d | 2027-04-24 | 2027-04-26 | UG-13-S05-A090 SS+2d, UG-13-S05-A090 FF+2d, UG-13B-S12-A080, UG-23-S01-A080, UG-23-S02-A080, UG-23-S03-A080, UG-07A-S11-A100 | 0d |  | F7 | UG-13 | UG-13-S05 | A100 | 723.194901 |
| UG-13-S05-A110 |  | Dewatering off, extract sheets, reinstate |  | 3d | 2027-04-25 | 2027-04-27 | UG-13-S05-A100 SS+2d, UG-13-S05-A100 FF+2d |  |  | F7 | UG-13 | UG-13-S05 | A110 | 88.686208 |

Notes:
- UG-13-S04-A010: Notes: Front F7 / Line UG-13 / Package UG-13-S04 / Workbook logic: gates: START, D_DLU
- UG-13-S04-A020: Notes: Front F7 / Line UG-13 / Package UG-13-S04 / Quantity 37 m / Workbook logic: FS from A010; UG-13-S03-A030 (SS, set-out one package ahead of piling)
- UG-13-S04-A030: Notes: Front F7 / Line UG-13 / Package UG-13-S04 / Quantity 28 piles / Workbook logic: gate: D_PILEDES
- UG-13-S04-A040: Notes: Front F7 / Line UG-13 / Package UG-13-S04 / Quantity 74 m wall
- UG-13-S04-A050: Notes: Front F7 / Line UG-13 / Package UG-13-S04 / Quantity 37 m / Workbook logic: UG-13-S03-A060 (FS, negative lag = own duration: drawdown complete when the excavation crew is free)
- UG-13-S04-A060: Notes: Front F7 / Line UG-13 / Package UG-13-S04 / Quantity 785 m3
- UG-13-S04-A070: Notes: Front F7 / Line UG-13 / Package UG-13-S04 / Quantity 37 m
- UG-13-S04-A080: Notes: Front F7 / Line UG-13 / Package UG-13-S04 / Quantity 37 m
- UG-13-S04-A090: Notes: Front F7 / Line UG-13 / Package UG-13-S04 / Quantity 37 m
- UG-13-S04-A100: Notes: Front F7 / Line UG-13 / Package UG-13-S04 / Quantity 607 m3
- UG-13-S04-A110: Notes: Front F7 / Line UG-13 / Package UG-13-S04 / Quantity 74 m wall
- UG-13-S05-A010: Notes: Front F7 / Line UG-13 / Package UG-13-S05 / Workbook logic: gates: START, D_DLU
- UG-13-S05-A020: Notes: Front F7 / Line UG-13 / Package UG-13-S05 / Quantity 44 m / Workbook logic: FS from A010; UG-07A-S11-A030 (SS, set-out one package ahead of piling)
- UG-13-S05-A030: Notes: Front F7 / Line UG-13 / Package UG-13-S05 / Quantity 32 piles / Workbook logic: gate: D_PILEDES
- UG-13-S05-A040: Notes: Front F7 / Line UG-13 / Package UG-13-S05 / Quantity 89 m wall
- UG-13-S05-A050: Notes: Front F7 / Line UG-13 / Package UG-13-S05 / Quantity 44 m / Workbook logic: UG-07A-S11-A060 (FS, negative lag = own duration: drawdown complete when the excavation crew is free)
- UG-13-S05-A060: Notes: Front F7 / Line UG-13 / Package UG-13-S05 / Quantity 936 m3 / Workbook logic: UG-13B-S12-A060 (SS, shared trench)
- UG-13-S05-A070: Notes: Front F7 / Line UG-13 / Package UG-13-S05 / Quantity 44 m
- UG-13-S05-A080: Notes: Front F7 / Line UG-13 / Package UG-13-S05 / Quantity 44 m
- UG-13-S05-A090: Notes: Front F7 / Line UG-13 / Package UG-13-S05 / Quantity 44 m
- UG-13-S05-A100: Notes: Front F7 / Line UG-13 / Package UG-13-S05 / Quantity 723 m3 / Workbook logic: UG-13B-S12-A080 (FS, shared trench laid); UG-23-S01-A080 (FS, shared trench laid); UG-23-S02-A080 (FS, shared trench laid); UG-23-S03-A080 (FS, shared trench laid)
- UG-13-S05-A110: Notes: Front F7 / Line UG-13 / Package UG-13-S05 / Quantity 89 m wall

| ID | WBS | Activity | Type | Duration | Start | Finish | Predecessors | Free float | Constraint | Text1 | Text2 | Text3 | Text4 | Number1 |
| --- | --- | --- | --- | --- | --- | --- | --- | --- | --- | --- | --- | --- | --- | --- |
|  | UG-13-S02 | **UG-13-S02 / GRP-UG13-S02-EL020-CH052-(-5.93/-5.92)-33m / Run / Sheet piles** |  |  | 2026-12-01 | 2027-06-16 |  |  |  |  |  |  |  |  |
| UG-13-S02-A010 |  | Release: drawings, holds, access and gates | milestone | 0d | 2026-12-01 | 2026-12-01 |  | 81d | start on or after 2026-12-01 | F7 | UG-13 | UG-13-S02 | A010 |  |
| UG-13-S02-A020 |  | Set-out, crossing survey and working platform |  | 1d | 2027-03-06 | 2027-03-06 | UG-13-S02-A010, UG-13A-S07-A030 SS | 1d |  | F7 | UG-13 | UG-13-S02 | A020 | 32.681864 |
| UG-13-S02-A030 |  | Pipe-support piling from platform (incl. integrity tests) |  | 5d | 2027-03-08 | 2027-03-13 | UG-13-S02-A020 SS+1d, UG-13-S02-A020 FF+2d, UG-13A-S07-A030 | 0d |  | F7 | UG-13 | UG-13-S02 | A030 | 24 |
| UG-13-S02-A040 |  | Install sheet piles (shored lengths) |  | 3d | 2027-03-10 | 2027-03-13 | UG-13-S02-A030 SS+2d, UG-13-S02-A030 FF+2d, UG-13A-S07-A040 | 2d |  | F7 | UG-13 | UG-13-S02 | A040 | 65.363728 |
| UG-13-S02-A050 |  | Install dewatering and draw down |  | 8d | 2027-04-01 | 2027-04-10 | UG-13-S02-A040 SS+2d, UG-13-S02-A040 FF+2d, UG-13A-S07-A060 FS-8d | 0d |  | F7 | UG-13 | UG-13-S02 | A050 | 32.681864 |
| UG-13-S02-A060 |  | Excavate and strut to formation |  | 3d | 2027-04-11 | 2027-04-13 | UG-13-S02-A050 SS+9d, UG-13-S02-A050 FF+2d, UG-13A-S07-A060 | 0d |  | F7 | UG-13 | UG-13-S02 | A060 | 694.535987 |
| UG-13-S02-A070 |  | Trim piles, blinding and piled slab (incl. cure) |  | 6d | 2027-05-23 | 2027-05-29 | UG-13-S02-A060 SS+2d, UG-13-S02-A060 FF+2d, UG-13A-S07-A070 | 0d |  | F7 | UG-13 | UG-13-S02 | A070 | 32.681864 |
| UG-13-S02-A080 |  | Lay and joint pipe (incl. fittings, tie-in) |  | 3d | 2027-05-26 | 2027-05-29 | UG-13-S02-A070 SS+3d, UG-13-S02-A070 FF+2d, UG-13A-S07-A080 | 0d |  | F7 | UG-13 | UG-13-S02 | A080 | 32.681864 |
| UG-13-S02-A090 |  | Surround, joint test and line test |  | 3d | 2027-05-29 | 2027-05-31 | UG-13-S02-A080 SS+2d, UG-13-S02-A080 FF+2d | 10d |  | F7 | UG-13 | UG-13-S02 | A090 | 32.681864 |
| UG-13-S02-A100 |  | Backfill to NG and remove struts |  | 2d | 2027-06-13 | 2027-06-14 | UG-13-S02-A090 SS+2d, UG-13-S02-A090 FF+2d, UG-13A-S02-A080, UG-13A-S16-A080, UG-13A-S07-A100 | 0d |  | F7 | UG-13 | UG-13-S02 | A100 | 535.308102 |
| UG-13-S02-A110 |  | Dewatering off, extract sheets, reinstate |  | 3d | 2027-06-14 | 2027-06-16 | UG-13-S02-A100 SS+1d, UG-13-S02-A100 FF+2d |  |  | F7 | UG-13 | UG-13-S02 | A110 | 65.363728 |
|  | UG-13-S01 | **UG-13-S01 / GRP-UG13-S01-FSTJ-EL020-(-5.61/-5.92)-20m / Tie-in / Sheet piles** |  |  | 2026-12-01 | 2027-06-26 |  |  |  |  |  |  |  |  |
| UG-13-S01-A010 |  | Release: drawings, holds, access and gates | milestone | 0d | 2026-12-01 | 2026-12-01 |  | 83d | start on or after 2026-12-01 | F7 | UG-13 | UG-13-S01 | A010 |  |
| UG-13-S01-A020 |  | Set-out, crossing survey and working platform |  | 1d | 2027-03-08 | 2027-03-08 | UG-13-S01-A010, UG-13-S02-A030 SS | 0d |  | F7 | UG-13 | UG-13-S01 | A020 | 19.718136 |
| UG-13-S01-A030 |  | Pipe-support piling from platform (incl. integrity tests) |  | 4d | 2027-03-09 | 2027-03-13 | UG-13-S01-A020 SS+1d, UG-13-S01-A020 FF+2d | 0d |  | F7 | UG-13 | UG-13-S01 | A030 | 16 |
| UG-13-S01-A040 |  | Install sheet piles (shored lengths) |  | 2d | 2027-03-11 | 2027-03-13 | UG-13-S01-A030 SS+2d, UG-13-S01-A030 FF+2d | 0d |  | F7 | UG-13 | UG-13-S01 | A040 | 39.436272 |
| UG-13-S01-A050 |  | Install dewatering and draw down |  | 8d | 2027-03-13 | 2027-03-21 | UG-13-S01-A040 SS+1d, UG-13-S01-A040 FF+2d | 0d |  | F7 | UG-13 | UG-13-S01 | A050 | 19.718136 |
| UG-13-S01-A060 |  | Excavate and strut to formation |  | 2d | 2027-03-22 | 2027-03-23 | UG-13-S01-A050 SS+9d, UG-13-S01-A050 FF+2d | 0d |  | F7 | UG-13 | UG-13-S01 | A060 | 404.267563 |
| UG-13-S01-A070 |  | Trim piles, blinding and piled slab (incl. cure) |  | 5d | 2027-03-23 | 2027-03-28 | UG-13-S01-A060 SS+1d, UG-13-S01-A060 FF+2d | 58d |  | F7 | UG-13 | UG-13-S01 | A070 | 19.718136 |
| UG-13-S01-A080 |  | Lay and joint pipe (incl. fittings, tie-in) |  | 6d | 2027-06-01 | 2027-06-07 | UG-13-S01-A070 SS+2d, UG-13-S01-A070 FF+2d, UG-13-S02-A080 | 0d |  | F7 | UG-13 | UG-13-S01 | A080 | 19.718136 |
| UG-13-S01-A090 |  | Surround, joint test and line test |  | 3d | 2027-06-05 | 2027-06-07 | UG-13-S01-A080 SS+3d, UG-13-S01-A080 FF+2d | 12d |  | F7 | UG-13 | UG-13-S01 | A090 | 19.718136 |
| UG-13-S01-A100 |  | Backfill to NG and remove struts |  | 1d | 2027-06-23 | 2027-06-23 | UG-13-S01-A090 SS+2d, UG-13-S01-A090 FF+2d, UG-13A-S08-A080, UG-13A-S11-A080, UG-13A-S12-A080, UG-13A-S16-A080 | 0d |  | F7 | UG-13 | UG-13-S01 | A100 | 315.210062 |
| UG-13-S01-A110 |  | Dewatering off, extract sheets, reinstate |  | 2d | 2027-06-24 | 2027-06-26 | UG-13-S01-A100 SS+1d, UG-13-S01-A100 FF+2d |  |  | F7 | UG-13 | UG-13-S01 | A110 | 39.436272 |

Notes:
- UG-13-S02-A010: Notes: Front F7 / Line UG-13 / Package UG-13-S02 / Workbook logic: gates: START, D_DLU
- UG-13-S02-A020: Notes: Front F7 / Line UG-13 / Package UG-13-S02 / Quantity 33 m / Workbook logic: FS from A010; UG-13A-S07-A030 (SS, set-out one package ahead of piling)
- UG-13-S02-A030: Notes: Front F7 / Line UG-13 / Package UG-13-S02 / Quantity 24 piles / Workbook logic: gate: D_PILEDES
- UG-13-S02-A040: Notes: Front F7 / Line UG-13 / Package UG-13-S02 / Quantity 65 m wall
- UG-13-S02-A050: Notes: Front F7 / Line UG-13 / Package UG-13-S02 / Quantity 33 m / Workbook logic: UG-13A-S07-A060 (FS, negative lag = own duration: drawdown complete when the excavation crew is free)
- UG-13-S02-A060: Notes: Front F7 / Line UG-13 / Package UG-13-S02 / Quantity 695 m3
- UG-13-S02-A070: Notes: Front F7 / Line UG-13 / Package UG-13-S02 / Quantity 33 m
- UG-13-S02-A080: Notes: Front F7 / Line UG-13 / Package UG-13-S02 / Quantity 33 m
- UG-13-S02-A090: Notes: Front F7 / Line UG-13 / Package UG-13-S02 / Quantity 33 m
- UG-13-S02-A100: Notes: Front F7 / Line UG-13 / Package UG-13-S02 / Quantity 535 m3 / Workbook logic: UG-13A-S02-A080 (FS, shared trench laid); UG-13A-S16-A080 (FS, shared trench laid)
- UG-13-S02-A110: Notes: Front F7 / Line UG-13 / Package UG-13-S02 / Quantity 65 m wall
- UG-13-S01-A010: Notes: Front F7 / Line UG-13 / Package UG-13-S01 / Workbook logic: gates: START, D_DLU, structure ready
- UG-13-S01-A020: Notes: Front F7 / Line UG-13 / Package UG-13-S01 / Quantity 20 m / Workbook logic: FS from A010; UG-13-S02-A030 (SS, tie-in team follows the adjacent run)
- UG-13-S01-A030: Notes: Front F7 / Line UG-13 / Package UG-13-S01 / Quantity 16 piles / Workbook logic: gate: D_PILEDES
- UG-13-S01-A040: Notes: Front F7 / Line UG-13 / Package UG-13-S01 / Quantity 39 m wall
- UG-13-S01-A050: Notes: Front F7 / Line UG-13 / Package UG-13-S01 / Quantity 20 m
- UG-13-S01-A060: Notes: Front F7 / Line UG-13 / Package UG-13-S01 / Quantity 404 m3
- UG-13-S01-A070: Notes: Front F7 / Line UG-13 / Package UG-13-S01 / Quantity 20 m
- UG-13-S01-A080: Notes: Front F7 / Line UG-13 / Package UG-13-S01 / Quantity 20 m / Workbook logic: UG-13-S02-A080 (FS, closure)
- UG-13-S01-A090: Notes: Front F7 / Line UG-13 / Package UG-13-S01 / Quantity 20 m
- UG-13-S01-A100: Notes: Front F7 / Line UG-13 / Package UG-13-S01 / Quantity 315 m3 / Workbook logic: UG-13A-S08-A080 (FS, shared trench laid); UG-13A-S11-A080 (FS, shared trench laid); UG-13A-S12-A080 (FS, shared trench laid); UG-13A-S16-A080 (FS, shared trench laid)
- UG-13-S01-A110: Notes: Front F7 / Line UG-13 / Package UG-13-S01 / Quantity 39 m wall

| ID | WBS | Activity | Type | Duration | Start | Finish | Predecessors | Free float | Constraint | Text1 | Text2 | Text3 | Text4 | Number1 |
| --- | --- | --- | --- | --- | --- | --- | --- | --- | --- | --- | --- | --- | --- | --- |
|  | UG-07A | **UG-07A** |  |  | 2026-12-01 | 2027-04-04 |  |  |  |  |  |  |  |  |
|  | UG-07A-S11 | **UG-07A-S11 / HDPE-UG07A-S11-EL009-CH050-(-2.89/-4.74)-41m / Run / Mixed: 40 m sheet piles** |  |  | 2026-12-01 | 2027-04-04 |  |  |  |  |  |  |  |  |
| UG-07A-S11-A010 |  | Release: drawings, holds, access and gates | milestone | 0d | 2026-12-01 | 2026-12-01 |  | 41d | start on or after 2026-12-01 | F7 | UG-07A | UG-07A-S11 | A010 |  |
| UG-07A-S11-A020 |  | Set-out, crossing survey and working platform |  | 1d | 2027-01-18 | 2027-01-18 | UG-07A-S11-A010, UG-13B-S06-A030 SS | 3d |  | F7 | UG-07A | UG-07A-S11 | A020 | 40.800072 |
| UG-07A-S11-A030 |  | Pipe-support piling from platform (incl. integrity tests) |  | 6d | 2027-01-23 | 2027-01-28 | UG-07A-S11-A020 SS+1d, UG-07A-S11-A020 FF+2d, UG-13B-S06-A030 | 0d |  | F7 | UG-07A | UG-07A-S11 | A030 | 30 |
| UG-07A-S11-A040 |  | Install sheet piles (shored lengths) |  | 4d | 2027-01-25 | 2027-01-28 | UG-07A-S11-A030 SS+3d, UG-07A-S11-A030 FF+2d, UG-13B-S06-A040 | 2d |  | F7 | UG-07A | UG-07A-S11 | A040 | 79.007965 |
| UG-07A-S11-A050 |  | Install dewatering and draw down |  | 9d | 2027-02-03 | 2027-02-13 | UG-07A-S11-A040 SS+2d, UG-07A-S11-A040 FF+2d, UG-13B-S06-A060 FS-9d | 25d |  | F7 | UG-07A | UG-07A-S11 | A050 | 40.800072 |
| UG-07A-S11-A060 |  | Excavate and strut to formation |  | 3d | 2027-03-15 | 2027-03-17 | UG-07A-S11-A050 SS+9d, UG-07A-S11-A050 FF+2d, UG-12-S04-A100, UG-12-S05-A100, UG-13B-S07-A100, UG-13B-S05-A060 SS, UG-13B-S06-A060 SS, UG-13B-S06-A060 | 0d |  | F7 | UG-07A | UG-07A-S11 | A060 | 533.152068 |
| UG-07A-S11-A070 |  | Trim piles, blinding and piled slab (incl. cure) |  | 7d | 2027-03-17 | 2027-03-24 | UG-07A-S11-A060 SS+2d, UG-07A-S11-A060 FF+2d, UG-13B-S06-A070 | 0d |  | F7 | UG-07A | UG-07A-S11 | A070 | 40.800072 |
| UG-07A-S11-A080 |  | Lay and joint pipe (incl. fittings, tie-in) |  | 3d | 2027-03-20 | 2027-03-22 | UG-07A-S11-A070 SS+3d, UG-07A-S11-A070 FF+2d, UG-13B-S06-A080 | 0d |  | F7 | UG-07A | UG-07A-S11 | A080 | 40.800072 |
| UG-07A-S11-A090 |  | Surround, joint test and line test |  | 3d | 2027-03-22 | 2027-03-24 | UG-07A-S11-A080 SS+2d, UG-07A-S11-A080 FF+2d | 5d |  | F7 | UG-07A | UG-07A-S11 | A090 | 40.800072 |
| UG-07A-S11-A100 |  | Backfill to NG and remove struts |  | 2d | 2027-03-31 | 2027-04-01 | UG-07A-S11-A090 SS+2d, UG-07A-S11-A090 FF+2d, UG-13B-S05-A080, UG-13B-S06-A080, UG-13B-S06-A100 | 0d |  | F7 | UG-07A | UG-07A-S11 | A100 | 442.127942 |
| UG-07A-S11-A110 |  | Dewatering off, extract sheets, reinstate |  | 3d | 2027-04-01 | 2027-04-04 | UG-07A-S11-A100 SS+1d, UG-07A-S11-A100 FF+2d |  |  | F7 | UG-07A | UG-07A-S11 | A110 | 79.007965 |
|  | UG-23 | **UG-23** |  |  | 2026-12-01 | 2027-05-02 |  |  |  |  |  |  |  |  |
|  | UG-23-S03 | **UG-23-S03 / HDPE-UG23-S03-CH015-CH035-(-5.07/-5.07)-20m / Run / Sheet piles** |  |  | 2026-12-01 | 2027-04-29 |  |  |  |  |  |  |  |  |
| UG-23-S03-A010 |  | Release: drawings, holds, access and gates | milestone | 0d | 2026-12-01 | 2026-12-01 |  | 51d | start on or after 2026-12-01 | F7 | UG-23 | UG-23-S03 | A010 |  |
| UG-23-S03-A020 |  | Set-out, crossing survey and working platform |  | 1d | 2027-01-30 | 2027-01-30 | UG-23-S03-A010, UG-13-S05-A030 SS | 6d |  | F7 | UG-23 | UG-23-S03 | A020 | 20 |
| UG-23-S03-A030 |  | Pipe-support piling from platform (incl. integrity tests) |  | 2d | 2027-02-07 | 2027-02-08 | UG-23-S03-A020 SS+1d, UG-23-S03-A020 FF+2d, UG-13-S05-A030 | 0d |  | F7 | UG-23 | UG-23-S03 | A030 | 8 |
| UG-23-S03-A040 |  | Install sheet piles (shored lengths) |  | 2d | 2027-02-09 | 2027-02-10 | UG-23-S03-A030 SS+1d, UG-23-S03-A030 FF+2d, UG-13-S05-A040 | 1d |  | F7 | UG-23 | UG-23-S03 | A040 | 40 |
| UG-23-S03-A050 |  | Install dewatering and draw down |  | 8d | 2027-03-14 | 2027-03-22 | UG-23-S03-A040 SS+1d, UG-23-S03-A040 FF+2d, UG-13-S05-A060 FS-8d | 0d |  | F7 | UG-23 | UG-23-S03 | A050 | 20 |
| UG-23-S03-A060 |  | Excavate and strut to formation |  | 1d | 2027-03-24 | 2027-03-24 | UG-23-S03-A050 SS+9d, UG-23-S03-A050 FF+2d, UG-13-S05-A060 SS, UG-13B-S12-A060 SS, UG-13-S05-A060 | 0d |  | F7 | UG-23 | UG-23-S03 | A060 | 230.124766 |
| UG-23-S03-A070 |  | Trim piles, blinding and piled slab (incl. cure) |  | 5d | 2027-04-04 | 2027-04-08 | UG-23-S03-A060 SS+1d, UG-23-S03-A060 FF+2d, UG-13-S05-A070 | 0d |  | F7 | UG-23 | UG-23-S03 | A070 | 20 |
| UG-23-S03-A080 |  | Lay and joint pipe (incl. fittings, tie-in) |  | 2d | 2027-04-06 | 2027-04-07 | UG-23-S03-A070 SS+2d, UG-23-S03-A070 FF+2d, UG-13-S05-A080 | 0d |  | F7 | UG-23 | UG-23-S03 | A080 | 20 |
| UG-23-S03-A090 |  | Surround, joint test and line test |  | 3d | 2027-04-07 | 2027-04-10 | UG-23-S03-A080 SS+1d, UG-23-S03-A080 FF+2d | 13d |  | F7 | UG-23 | UG-23-S03 | A090 | 20 |
| UG-23-S03-A100 |  | Backfill to NG and remove struts |  | 1d | 2027-04-27 | 2027-04-27 | UG-23-S03-A090 SS+2d, UG-23-S03-A090 FF+2d, UG-13-S05-A080, UG-13B-S12-A080, UG-13-S05-A100 | 0d |  | F7 | UG-23 | UG-23-S03 | A100 | 207.590336 |
| UG-23-S03-A110 |  | Dewatering off, extract sheets, reinstate |  | 2d | 2027-04-28 | 2027-04-29 | UG-23-S03-A100 SS+1d, UG-23-S03-A100 FF+2d |  |  | F7 | UG-23 | UG-23-S03 | A110 | 40 |

Notes:
- UG-07A-S11-A010: Notes: Front F7 / Line UG-07A / Package UG-07A-S11 / Workbook logic: gates: START, D_DLU
- UG-07A-S11-A020: Notes: Front F7 / Line UG-07A / Package UG-07A-S11 / Quantity 41 m / Workbook logic: FS from A010; UG-13B-S06-A030 (SS, set-out one package ahead of piling)
- UG-07A-S11-A030: Notes: Front F7 / Line UG-07A / Package UG-07A-S11 / Quantity 30 piles / Workbook logic: gate: D_PILEDES
- UG-07A-S11-A040: Notes: Front F7 / Line UG-07A / Package UG-07A-S11 / Quantity 79 m wall
- UG-07A-S11-A050: Notes: Front F7 / Line UG-07A / Package UG-07A-S11 / Quantity 41 m / Workbook logic: UG-13B-S06-A060 (FS, negative lag = own duration: drawdown complete when the excavation crew is free)
- UG-07A-S11-A060: Notes: Front F7 / Line UG-07A / Package UG-07A-S11 / Quantity 533 m3 / Workbook logic: UG-12-S04-A100 (FS, deeper first); UG-12-S05-A100 (FS, deeper first); UG-13B-S07-A100 (FS, deeper first); UG-13B-S05-A060 (SS, shared trench); UG-13B-S06-A060 (SS, shared trench)
- UG-07A-S11-A070: Notes: Front F7 / Line UG-07A / Package UG-07A-S11 / Quantity 41 m
- UG-07A-S11-A080: Notes: Front F7 / Line UG-07A / Package UG-07A-S11 / Quantity 41 m
- UG-07A-S11-A090: Notes: Front F7 / Line UG-07A / Package UG-07A-S11 / Quantity 41 m
- UG-07A-S11-A100: Notes: Front F7 / Line UG-07A / Package UG-07A-S11 / Quantity 442 m3 / Workbook logic: UG-13B-S05-A080 (FS, shared trench laid); UG-13B-S06-A080 (FS, shared trench laid)
- UG-07A-S11-A110: Notes: Front F7 / Line UG-07A / Package UG-07A-S11 / Quantity 79 m wall
- UG-23-S03-A010: Notes: Front F7 / Line UG-23 / Package UG-23-S03 / Workbook logic: gates: START, D_DLU
- UG-23-S03-A020: Notes: Front F7 / Line UG-23 / Package UG-23-S03 / Quantity 20 m / Workbook logic: FS from A010; UG-13-S05-A030 (SS, set-out one package ahead of piling)
- UG-23-S03-A030: Notes: Front F7 / Line UG-23 / Package UG-23-S03 / Quantity 8 piles / Workbook logic: gate: D_PILEDES
- UG-23-S03-A040: Notes: Front F7 / Line UG-23 / Package UG-23-S03 / Quantity 40 m wall
- UG-23-S03-A050: Notes: Front F7 / Line UG-23 / Package UG-23-S03 / Quantity 20 m / Workbook logic: UG-13-S05-A060 (FS, negative lag = own duration: drawdown complete when the excavation crew is free)
- UG-23-S03-A060: Notes: Front F7 / Line UG-23 / Package UG-23-S03 / Quantity 230 m3 / Workbook logic: UG-13-S05-A060 (SS, shared trench); UG-13B-S12-A060 (SS, shared trench)
- UG-23-S03-A070: Notes: Front F7 / Line UG-23 / Package UG-23-S03 / Quantity 20 m
- UG-23-S03-A080: Notes: Front F7 / Line UG-23 / Package UG-23-S03 / Quantity 20 m
- UG-23-S03-A090: Notes: Front F7 / Line UG-23 / Package UG-23-S03 / Quantity 20 m
- UG-23-S03-A100: Notes: Front F7 / Line UG-23 / Package UG-23-S03 / Quantity 208 m3 / Workbook logic: UG-13-S05-A080 (FS, shared trench laid); UG-13B-S12-A080 (FS, shared trench laid)
- UG-23-S03-A110: Notes: Front F7 / Line UG-23 / Package UG-23-S03 / Quantity 40 m wall

| ID | WBS | Activity | Type | Duration | Start | Finish | Predecessors | Free float | Constraint | Text1 | Text2 | Text3 | Text4 | Number1 |
| --- | --- | --- | --- | --- | --- | --- | --- | --- | --- | --- | --- | --- | --- | --- |
|  | UG-23-S02 | **UG-23-S02 / HDPE-UG23-S02-EL011-CH015-(-5.07/-5.07)-4m / Run / Sheet piles** |  |  | 2026-12-01 | 2027-05-02 |  |  |  |  |  |  |  |  |
| UG-23-S02-A010 |  | Release: drawings, holds, access and gates | milestone | 0d | 2026-12-01 | 2026-12-01 |  | 58d | start on or after 2026-12-01 | F7 | UG-23 | UG-23-S02 | A010 |  |
| UG-23-S02-A020 |  | Set-out, crossing survey and working platform |  | 1d | 2027-02-07 | 2027-02-07 | UG-23-S02-A010, UG-23-S03-A030 SS | 1d |  | F7 | UG-23 | UG-23-S02 | A020 | 3.613289 |
| UG-23-S02-A030 |  | Pipe-support piling from platform (incl. integrity tests) |  | 1d | 2027-02-10 | 2027-02-10 | UG-23-S02-A020 SS+1d, UG-23-S02-A020 FF+2d, UG-23-S03-A030 | 0d |  | F7 | UG-23 | UG-23-S02 | A030 | 3 |
| UG-23-S02-A040 |  | Install sheet piles (shored lengths) |  | 1d | 2027-02-13 | 2027-02-13 | UG-23-S02-A030 SS+1d, UG-23-S02-A030 FF+2d, UG-23-S03-A040 | 0d |  | F7 | UG-23 | UG-23-S02 | A040 | 7.226579 |
| UG-23-S02-A050 |  | Install dewatering and draw down |  | 8d | 2027-03-16 | 2027-03-24 | UG-23-S02-A040 SS+1d, UG-23-S02-A040 FF+2d, UG-23-S03-A060 FS-8d | 0d |  | F7 | UG-23 | UG-23-S02 | A050 | 3.613289 |
| UG-23-S02-A060 |  | Excavate and strut to formation |  | 1d | 2027-03-27 | 2027-03-27 | UG-23-S02-A050 SS+9d, UG-23-S02-A050 FF+2d, UG-13-S05-A060 SS, UG-13B-S12-A060 SS, UG-23-S03-A060 | 0d |  | F7 | UG-23 | UG-23-S02 | A060 | 41.575321 |
| UG-23-S02-A070 |  | Trim piles, blinding and piled slab (incl. cure) |  | 4d | 2027-04-10 | 2027-04-13 | UG-23-S02-A060 SS+1d, UG-23-S02-A060 FF+2d, UG-23-S03-A070 | 0d |  | F7 | UG-23 | UG-23-S02 | A070 | 3.613289 |
| UG-23-S02-A080 |  | Lay and joint pipe (incl. fittings, tie-in) |  | 1d | 2027-04-12 | 2027-04-12 | UG-23-S02-A070 SS+2d, UG-23-S02-A070 FF+2d, UG-23-S03-A080 | 0d |  | F7 | UG-23 | UG-23-S02 | A080 | 3.613289 |
| UG-23-S02-A090 |  | Surround, joint test and line test |  | 3d | 2027-04-13 | 2027-04-15 | UG-23-S02-A080 SS+1d, UG-23-S02-A080 FF+2d | 10d |  | F7 | UG-23 | UG-23-S02 | A090 | 3.613289 |
| UG-23-S02-A100 |  | Backfill to NG and remove struts |  | 1d | 2027-04-29 | 2027-04-29 | UG-23-S02-A090 SS+2d, UG-23-S02-A090 FF+2d, UG-13-S05-A080, UG-13B-S12-A080, UG-23-S03-A100 | 0d |  | F7 | UG-23 | UG-23-S02 | A100 | 37.504163 |
| UG-23-S02-A110 |  | Dewatering off, extract sheets, reinstate |  | 2d | 2027-05-01 | 2027-05-02 | UG-23-S02-A100 SS+1d, UG-23-S02-A100 FF+2d |  |  | F7 | UG-23 | UG-23-S02 | A110 | 7.226579 |
|  | UG-23-S01 | **UG-23-S01 / HDPE-UG23-S01-RASPS-EL011-(-5.07/-5.08)-11m / Tie-in / Sheet piles** |  |  | 2026-12-01 | 2027-04-24 |  |  |  |  |  |  |  |  |
| UG-23-S01-A010 |  | Release: drawings, holds, access and gates | milestone | 0d | 2026-12-01 | 2026-12-01 |  | 61d | start on or after 2026-12-01 | F7 | UG-23 | UG-23-S01 | A010 |  |
| UG-23-S01-A020 |  | Set-out, crossing survey and working platform |  | 1d | 2027-02-10 | 2027-02-10 | UG-23-S01-A010, UG-23-S02-A030 SS | 0d |  | F7 | UG-23 | UG-23-S01 | A020 | 11.386711 |
| UG-23-S01-A030 |  | Pipe-support piling from platform (incl. integrity tests) |  | 1d | 2027-02-11 | 2027-02-11 | UG-23-S01-A020 SS+1d, UG-23-S01-A020 FF+2d | 0d |  | F7 | UG-23 | UG-23-S01 | A030 | 5 |
| UG-23-S01-A040 |  | Install sheet piles (shored lengths) |  | 1d | 2027-02-13 | 2027-02-13 | UG-23-S01-A030 SS+1d, UG-23-S01-A030 FF+2d | 0d |  | F7 | UG-23 | UG-23-S01 | A040 | 22.773421 |
| UG-23-S01-A050 |  | Install dewatering and draw down |  | 8d | 2027-02-13 | 2027-02-21 | UG-23-S01-A040 SS+1d, UG-23-S01-A040 FF+2d | 21d |  | F7 | UG-23 | UG-23-S01 | A050 | 11.386711 |
| UG-23-S01-A060 |  | Excavate and strut to formation |  | 1d | 2027-03-20 | 2027-03-20 | UG-23-S01-A050 SS+9d, UG-23-S01-A050 FF+2d, UG-13-S05-A060 SS, UG-13B-S12-A060 SS | 0d |  | F7 | UG-23 | UG-23-S01 | A060 | 131.018118 |
| UG-23-S01-A070 |  | Trim piles, blinding and piled slab (incl. cure) |  | 4d | 2027-03-20 | 2027-03-23 | UG-23-S01-A060 SS+1d, UG-23-S01-A060 FF+2d | 22d |  | F7 | UG-23 | UG-23-S01 | A070 | 11.386711 |
| UG-23-S01-A080 |  | Lay and joint pipe (incl. fittings, tie-in) |  | 5d | 2027-04-17 | 2027-04-21 | UG-23-S01-A070 SS+2d, UG-23-S01-A070 FF+2d, UG-23-S02-A080 | 0d |  | F7 | UG-23 | UG-23-S01 | A080 | 11.386711 |
| UG-23-S01-A090 |  | Surround, joint test and line test |  | 3d | 2027-04-19 | 2027-04-21 | UG-23-S01-A080 SS+2d, UG-23-S01-A080 FF+2d | 0d |  | F7 | UG-23 | UG-23-S01 | A090 | 11.386711 |
| UG-23-S01-A100 |  | Backfill to NG and remove struts |  | 1d | 2027-04-21 | 2027-04-21 | UG-23-S01-A090 SS+2d, UG-23-S01-A090 FF+2d, UG-13-S05-A080, UG-13B-S12-A080 | 0d |  | F7 | UG-23 | UG-23-S01 | A100 | 118.18849 |
| UG-23-S01-A110 |  | Dewatering off, extract sheets, reinstate |  | 2d | 2027-04-22 | 2027-04-24 | UG-23-S01-A100 SS+1d, UG-23-S01-A100 FF+2d |  |  | F7 | UG-23 | UG-23-S01 | A110 | 22.773421 |

Notes:
- UG-23-S02-A010: Notes: Front F7 / Line UG-23 / Package UG-23-S02 / Workbook logic: gates: START, D_DLU
- UG-23-S02-A020: Notes: Front F7 / Line UG-23 / Package UG-23-S02 / Quantity 4 m / Workbook logic: FS from A010; UG-23-S03-A030 (SS, set-out one package ahead of piling)
- UG-23-S02-A030: Notes: Front F7 / Line UG-23 / Package UG-23-S02 / Quantity 3 piles / Workbook logic: gate: D_PILEDES
- UG-23-S02-A040: Notes: Front F7 / Line UG-23 / Package UG-23-S02 / Quantity 7 m wall
- UG-23-S02-A050: Notes: Front F7 / Line UG-23 / Package UG-23-S02 / Quantity 4 m / Workbook logic: UG-23-S03-A060 (FS, negative lag = own duration: drawdown complete when the excavation crew is free)
- UG-23-S02-A060: Notes: Front F7 / Line UG-23 / Package UG-23-S02 / Quantity 42 m3 / Workbook logic: UG-13-S05-A060 (SS, shared trench); UG-13B-S12-A060 (SS, shared trench)
- UG-23-S02-A070: Notes: Front F7 / Line UG-23 / Package UG-23-S02 / Quantity 4 m
- UG-23-S02-A080: Notes: Front F7 / Line UG-23 / Package UG-23-S02 / Quantity 4 m
- UG-23-S02-A090: Notes: Front F7 / Line UG-23 / Package UG-23-S02 / Quantity 4 m
- UG-23-S02-A100: Notes: Front F7 / Line UG-23 / Package UG-23-S02 / Quantity 38 m3 / Workbook logic: UG-13-S05-A080 (FS, shared trench laid); UG-13B-S12-A080 (FS, shared trench laid)
- UG-23-S02-A110: Notes: Front F7 / Line UG-23 / Package UG-23-S02 / Quantity 7 m wall
- UG-23-S01-A010: Notes: Front F7 / Line UG-23 / Package UG-23-S01 / Workbook logic: gates: START, D_DLU, structure ready
- UG-23-S01-A020: Notes: Front F7 / Line UG-23 / Package UG-23-S01 / Quantity 11 m / Workbook logic: FS from A010; UG-23-S02-A030 (SS, tie-in team follows the adjacent run)
- UG-23-S01-A030: Notes: Front F7 / Line UG-23 / Package UG-23-S01 / Quantity 5 piles / Workbook logic: gate: D_PILEDES
- UG-23-S01-A040: Notes: Front F7 / Line UG-23 / Package UG-23-S01 / Quantity 23 m wall
- UG-23-S01-A050: Notes: Front F7 / Line UG-23 / Package UG-23-S01 / Quantity 11 m
- UG-23-S01-A060: Notes: Front F7 / Line UG-23 / Package UG-23-S01 / Quantity 131 m3 / Workbook logic: UG-13-S05-A060 (SS, shared trench); UG-13B-S12-A060 (SS, shared trench)
- UG-23-S01-A070: Notes: Front F7 / Line UG-23 / Package UG-23-S01 / Quantity 11 m
- UG-23-S01-A080: Notes: Front F7 / Line UG-23 / Package UG-23-S01 / Quantity 11 m / Workbook logic: UG-23-S02-A080 (FS, closure)
- UG-23-S01-A090: Notes: Front F7 / Line UG-23 / Package UG-23-S01 / Quantity 11 m
- UG-23-S01-A100: Notes: Front F7 / Line UG-23 / Package UG-23-S01 / Quantity 118 m3 / Workbook logic: UG-13-S05-A080 (FS, shared trench laid); UG-13B-S12-A080 (FS, shared trench laid)
- UG-23-S01-A110: Notes: Front F7 / Line UG-23 / Package UG-23-S01 / Quantity 23 m wall

| ID | WBS | Activity | Type | Duration | Start | Finish | Predecessors | Free float | Constraint | Text1 | Text2 | Text3 | Text4 | Number1 |
| --- | --- | --- | --- | --- | --- | --- | --- | --- | --- | --- | --- | --- | --- | --- |
|  | UG-13A | **UG-13A** |  |  | 2026-12-01 | 2027-08-04 |  |  |  |  |  |  |  |  |
|  | UG-13A-S07 | **UG-13A-S07 / HDPE-UG13A-S07-CH070-TEE080-(-5.56/-5.60)-11m / Run / Sheet piles** |  |  | 2026-12-01 | 2027-05-26 |  |  |  |  |  |  |  |  |
| UG-13A-S07-A010 |  | Release: drawings, holds, access and gates | milestone | 0d | 2026-12-01 | 2026-12-01 |  | 76d | start on or after 2026-12-01 | F7 | UG-13A | UG-13A-S07 | A010 |  |
| UG-13A-S07-A020 |  | Set-out, crossing survey and working platform |  | 1d | 2027-02-28 | 2027-02-28 | UG-13A-S07-A010, UG-13B-S02-A030 SS | 4d |  | F7 | UG-13A | UG-13A-S07 | A020 | 10.536009 |
| UG-13A-S07-A030 |  | Pipe-support piling from platform (incl. integrity tests) |  | 2d | 2027-03-06 | 2027-03-07 | UG-13A-S07-A020 SS+1d, UG-13A-S07-A020 FF+2d, UG-13B-S02-A030 | 0d |  | F7 | UG-13A | UG-13A-S07 | A030 | 10 |
| UG-13A-S07-A040 |  | Install sheet piles (shored lengths) |  | 1d | 2027-03-07 | 2027-03-07 | UG-13A-S07-A030 SS+1d, UG-13A-S07-A030 FF+2d, UG-13B-S02-A040 | 2d |  | F7 | UG-13A | UG-13A-S07 | A040 | 21.072018 |
| UG-13A-S07-A050 |  | Install dewatering and draw down |  | 8d | 2027-03-30 | 2027-04-07 | UG-13A-S07-A040 SS+1d, UG-13A-S07-A040 FF+2d, UG-13B-S02-A060 FS-8d | 0d |  | F7 | UG-13A | UG-13A-S07 | A050 | 10.536009 |
| UG-13A-S07-A060 |  | Excavate and strut to formation |  | 1d | 2027-04-10 | 2027-04-10 | UG-13A-S07-A050 SS+9d, UG-13A-S07-A050 FF+2d, UG-13B-S02-A060 | 0d |  | F7 | UG-13A | UG-13A-S07 | A060 | 174.834646 |
| UG-13A-S07-A070 |  | Trim piles, blinding and piled slab (incl. cure) |  | 4d | 2027-05-18 | 2027-05-22 | UG-13A-S07-A060 SS+1d, UG-13A-S07-A060 FF+2d, UG-13B-S02-A070 | 0d |  | F7 | UG-13A | UG-13A-S07 | A070 | 10.536009 |
| UG-13A-S07-A080 |  | Lay and joint pipe (incl. fittings, tie-in) |  | 2d | 2027-05-20 | 2027-05-22 | UG-13A-S07-A070 SS+2d, UG-13A-S07-A070 FF+2d, UG-13B-S02-A080 | 0d |  | F7 | UG-13A | UG-13A-S07 | A080 | 10.536009 |
| UG-13A-S07-A090 |  | Surround, joint test and line test |  | 3d | 2027-05-22 | 2027-05-24 | UG-13A-S07-A080 SS+1d, UG-13A-S07-A080 FF+2d | 0d |  | F7 | UG-13A | UG-13A-S07 | A090 | 10.536009 |
| UG-13A-S07-A100 |  | Backfill to NG and remove struts |  | 1d | 2027-05-24 | 2027-05-24 | UG-13A-S07-A090 SS+2d, UG-13A-S07-A090 FF+2d, UG-13B-S02-A100 | 0d |  | F7 | UG-13A | UG-13A-S07 | A100 | 145.972791 |
| UG-13A-S07-A110 |  | Dewatering off, extract sheets, reinstate |  | 2d | 2027-05-25 | 2027-05-26 | UG-13A-S07-A100 SS+1d, UG-13A-S07-A100 FF+2d |  |  | F7 | UG-13A | UG-13A-S07 | A110 | 21.072018 |
|  | UG-13A-S02 | **UG-13A-S02 / HDPE-UG13A-S02-CH006-RASPS-(-5.40/-5.41)-32m / Run / Sheet piles** |  |  | 2026-12-01 | 2027-06-20 |  |  |  |  |  |  |  |  |
| UG-13A-S02-A010 |  | Release: drawings, holds, access and gates | milestone | 0d | 2026-12-01 | 2026-12-01 |  | 83d | start on or after 2026-12-01 | F7 | UG-13A | UG-13A-S02 | A010 |  |
| UG-13A-S02-A020 |  | Set-out, crossing survey and working platform |  | 1d | 2027-03-08 | 2027-03-08 | UG-13A-S02-A010, UG-13-S02-A030 SS | 4d |  | F7 | UG-13A | UG-13A-S02 | A020 | 32.243879 |
| UG-13A-S02-A030 |  | Pipe-support piling from platform (incl. integrity tests) |  | 5d | 2027-03-14 | 2027-03-18 | UG-13A-S02-A020 SS+1d, UG-13A-S02-A020 FF+2d, UG-13-S02-A030 | 0d |  | F7 | UG-13A | UG-13A-S02 | A030 | 24 |
| UG-13A-S02-A040 |  | Install sheet piles (shored lengths) |  | 3d | 2027-03-16 | 2027-03-18 | UG-13A-S02-A030 SS+2d, UG-13A-S02-A030 FF+2d, UG-13-S02-A040 | 2d |  | F7 | UG-13A | UG-13A-S02 | A040 | 64.487757 |
| UG-13A-S02-A050 |  | Install dewatering and draw down |  | 8d | 2027-04-05 | 2027-04-13 | UG-13A-S02-A040 SS+2d, UG-13A-S02-A040 FF+2d, UG-13-S02-A060 FS-8d | 0d |  | F7 | UG-13A | UG-13A-S02 | A050 | 32.243879 |
| UG-13A-S02-A060 |  | Excavate and strut to formation |  | 2d | 2027-04-15 | 2027-04-17 | UG-13A-S02-A050 SS+9d, UG-13A-S02-A050 FF+2d, UG-13-S02-A060 SS, UG-13-S02-A060 | 0d |  | F7 | UG-13A | UG-13A-S02 | A060 | 454.823192 |
| UG-13A-S02-A070 |  | Trim piles, blinding and piled slab (incl. cure) |  | 6d | 2027-05-30 | 2027-06-05 | UG-13A-S02-A060 SS+1d, UG-13A-S02-A060 FF+2d, UG-13-S02-A070 | 0d |  | F7 | UG-13A | UG-13A-S02 | A070 | 32.243879 |
| UG-13A-S02-A080 |  | Lay and joint pipe (incl. fittings, tie-in) |  | 3d | 2027-06-02 | 2027-06-05 | UG-13A-S02-A070 SS+3d, UG-13A-S02-A070 FF+2d, UG-13-S02-A080 | 0d |  | F7 | UG-13A | UG-13A-S02 | A080 | 32.243879 |
| UG-13A-S02-A090 |  | Surround, joint test and line test |  | 3d | 2027-06-05 | 2027-06-07 | UG-13A-S02-A080 SS+2d, UG-13A-S02-A080 FF+2d | 7d |  | F7 | UG-13A | UG-13A-S02 | A090 | 32.243879 |
| UG-13A-S02-A100 |  | Backfill to NG and remove struts |  | 2d | 2027-06-16 | 2027-06-17 | UG-13A-S02-A090 SS+2d, UG-13A-S02-A090 FF+2d, UG-13-S02-A080, UG-13-S02-A100 | 0d |  | F7 | UG-13A | UG-13A-S02 | A100 | 397.19269 |
| UG-13A-S02-A110 |  | Dewatering off, extract sheets, reinstate |  | 3d | 2027-06-17 | 2027-06-20 | UG-13A-S02-A100 SS+1d, UG-13A-S02-A100 FF+2d |  |  | F7 | UG-13A | UG-13A-S02 | A110 | 64.487757 |

Notes:
- UG-13A-S07-A010: Notes: Front F7 / Line UG-13A / Package UG-13A-S07 / Workbook logic: gates: START, D_DLU
- UG-13A-S07-A020: Notes: Front F7 / Line UG-13A / Package UG-13A-S07 / Quantity 11 m / Workbook logic: FS from A010; UG-13B-S02-A030 (SS, set-out one package ahead of piling)
- UG-13A-S07-A030: Notes: Front F7 / Line UG-13A / Package UG-13A-S07 / Quantity 10 piles / Workbook logic: gate: D_PILEDES
- UG-13A-S07-A040: Notes: Front F7 / Line UG-13A / Package UG-13A-S07 / Quantity 21 m wall
- UG-13A-S07-A050: Notes: Front F7 / Line UG-13A / Package UG-13A-S07 / Quantity 11 m / Workbook logic: UG-13B-S02-A060 (FS, negative lag = own duration: drawdown complete when the excavation crew is free)
- UG-13A-S07-A060: Notes: Front F7 / Line UG-13A / Package UG-13A-S07 / Quantity 175 m3
- UG-13A-S07-A070: Notes: Front F7 / Line UG-13A / Package UG-13A-S07 / Quantity 11 m
- UG-13A-S07-A080: Notes: Front F7 / Line UG-13A / Package UG-13A-S07 / Quantity 11 m
- UG-13A-S07-A090: Notes: Front F7 / Line UG-13A / Package UG-13A-S07 / Quantity 11 m
- UG-13A-S07-A100: Notes: Front F7 / Line UG-13A / Package UG-13A-S07 / Quantity 146 m3
- UG-13A-S07-A110: Notes: Front F7 / Line UG-13A / Package UG-13A-S07 / Quantity 21 m wall
- UG-13A-S02-A010: Notes: Front F7 / Line UG-13A / Package UG-13A-S02 / Workbook logic: gates: START, D_DLU
- UG-13A-S02-A020: Notes: Front F7 / Line UG-13A / Package UG-13A-S02 / Quantity 32 m / Workbook logic: FS from A010; UG-13-S02-A030 (SS, set-out one package ahead of piling)
- UG-13A-S02-A030: Notes: Front F7 / Line UG-13A / Package UG-13A-S02 / Quantity 24 piles / Workbook logic: gate: D_PILEDES
- UG-13A-S02-A040: Notes: Front F7 / Line UG-13A / Package UG-13A-S02 / Quantity 64 m wall
- UG-13A-S02-A050: Notes: Front F7 / Line UG-13A / Package UG-13A-S02 / Quantity 32 m / Workbook logic: UG-13-S02-A060 (FS, negative lag = own duration: drawdown complete when the excavation crew is free)
- UG-13A-S02-A060: Notes: Front F7 / Line UG-13A / Package UG-13A-S02 / Quantity 455 m3 / Workbook logic: UG-13-S02-A060 (SS, shared trench)
- UG-13A-S02-A070: Notes: Front F7 / Line UG-13A / Package UG-13A-S02 / Quantity 32 m
- UG-13A-S02-A080: Notes: Front F7 / Line UG-13A / Package UG-13A-S02 / Quantity 32 m
- UG-13A-S02-A090: Notes: Front F7 / Line UG-13A / Package UG-13A-S02 / Quantity 32 m
- UG-13A-S02-A100: Notes: Front F7 / Line UG-13A / Package UG-13A-S02 / Quantity 397 m3 / Workbook logic: UG-13-S02-A080 (FS, shared trench laid)
- UG-13A-S02-A110: Notes: Front F7 / Line UG-13A / Package UG-13A-S02 / Quantity 64 m wall

| ID | WBS | Activity | Type | Duration | Start | Finish | Predecessors | Free float | Constraint | Text1 | Text2 | Text3 | Text4 | Number1 |
| --- | --- | --- | --- | --- | --- | --- | --- | --- | --- | --- | --- | --- | --- | --- |
|  | UG-13A-S16 | **UG-13A-S16 / HDPE-UG13A-S16-EL029-RASPS-(-5.40/-5.41)-9m / Run / Sheet piles** |  |  | 2026-12-01 | 2027-06-21 |  |  |  |  |  |  |  |  |
| UG-13A-S16-A010 |  | Release: drawings, holds, access and gates | milestone | 0d | 2026-12-01 | 2026-12-01 |  | 88d | start on or after 2026-12-01 | F7 | UG-13A | UG-13A-S16 | A010 |  |
| UG-13A-S16-A020 |  | Set-out, crossing survey and working platform |  | 1d | 2027-03-14 | 2027-03-14 | UG-13A-S16-A010, UG-13A-S02-A030 SS | 4d |  | F7 | UG-13A | UG-13A-S16 | A020 | 9.274375 |
| UG-13A-S16-A030 |  | Pipe-support piling from platform (incl. integrity tests) |  | 2d | 2027-03-20 | 2027-03-21 | UG-13A-S16-A020 SS+1d, UG-13A-S16-A020 FF+2d, UG-13A-S02-A030 | 0d |  | F7 | UG-13A | UG-13A-S16 | A030 | 10 |
| UG-13A-S16-A040 |  | Install sheet piles (shored lengths) |  | 1d | 2027-03-22 | 2027-03-22 | UG-13A-S16-A030 SS+1d, UG-13A-S16-A030 FF+2d, UG-13A-S02-A040 | 2d |  | F7 | UG-13A | UG-13A-S16 | A040 | 18.54875 |
| UG-13A-S16-A050 |  | Install dewatering and draw down |  | 8d | 2027-04-08 | 2027-04-17 | UG-13A-S16-A040 SS+1d, UG-13A-S16-A040 FF+2d, UG-13A-S02-A060 FS-8d | 0d |  | F7 | UG-13A | UG-13A-S16 | A050 | 9.274375 |
| UG-13A-S16-A060 |  | Excavate and strut to formation |  | 1d | 2027-04-18 | 2027-04-18 | UG-13A-S16-A050 SS+9d, UG-13A-S16-A050 FF+2d, UG-13-S01-A060 SS, UG-13-S02-A060 SS, UG-13A-S02-A060 | 0d |  | F7 | UG-13A | UG-13A-S16 | A060 | 131.051485 |
| UG-13A-S16-A070 |  | Trim piles, blinding and piled slab (incl. cure) |  | 4d | 2027-06-06 | 2027-06-09 | UG-13A-S16-A060 SS+1d, UG-13A-S16-A060 FF+2d, UG-13A-S02-A070 | 0d |  | F7 | UG-13A | UG-13A-S16 | A070 | 9.274375 |
| UG-13A-S16-A080 |  | Lay and joint pipe (incl. fittings, tie-in) |  | 1d | 2027-06-08 | 2027-06-08 | UG-13A-S16-A070 SS+2d, UG-13A-S16-A070 FF+2d, UG-13A-S02-A080 | 0d |  | F7 | UG-13A | UG-13A-S16 | A080 | 9.274375 |
| UG-13A-S16-A090 |  | Surround, joint test and line test |  | 3d | 2027-06-09 | 2027-06-12 | UG-13A-S16-A080 SS+1d, UG-13A-S16-A080 FF+2d | 4d |  | F7 | UG-13A | UG-13A-S16 | A090 | 9.274375 |
| UG-13A-S16-A100 |  | Backfill to NG and remove struts |  | 1d | 2027-06-19 | 2027-06-19 | UG-13A-S16-A090 SS+2d, UG-13A-S16-A090 FF+2d, UG-13-S01-A080, UG-13-S02-A080, UG-13A-S02-A100 | 0d |  | F7 | UG-13A | UG-13A-S16 | A100 | 114.397957 |
| UG-13A-S16-A110 |  | Dewatering off, extract sheets, reinstate |  | 2d | 2027-06-20 | 2027-06-21 | UG-13A-S16-A100 SS+1d, UG-13A-S16-A100 FF+2d |  |  | F7 | UG-13A | UG-13A-S16 | A110 | 18.54875 |
|  | UG-13A-S08 | **UG-13A-S08 / HDPE-UG13A-S08-TEE080-FSTJ-(-5.60/-5.60)-12m / Tie-in / Sheet piles** |  |  | 2026-12-01 | 2027-06-10 |  |  |  |  |  |  |  |  |
| UG-13A-S08-A010 |  | Release: drawings, holds, access and gates | milestone | 0d | 2026-12-01 | 2026-12-01 |  | 81d | start on or after 2026-12-01 | F7 | UG-13A | UG-13A-S08 | A010 |  |
| UG-13A-S08-A020 |  | Set-out, crossing survey and working platform |  | 1d | 2027-03-06 | 2027-03-06 | UG-13A-S08-A010, UG-13A-S07-A030 SS | 0d |  | F7 | UG-13A | UG-13A-S08 | A020 | 11.570496 |
| UG-13A-S08-A030 |  | Pipe-support piling from platform (incl. integrity tests) |  | 2d | 2027-03-06 | 2027-03-07 | UG-13A-S08-A020 SS+1d, UG-13A-S08-A020 FF+2d | 0d |  | F7 | UG-13A | UG-13A-S08 | A030 | 10 |
| UG-13A-S08-A040 |  | Install sheet piles (shored lengths) |  | 1d | 2027-03-07 | 2027-03-07 | UG-13A-S08-A030 SS+1d, UG-13A-S08-A030 FF+2d | 0d |  | F7 | UG-13A | UG-13A-S08 | A040 | 23.140991 |
| UG-13A-S08-A050 |  | Install dewatering and draw down |  | 8d | 2027-03-08 | 2027-03-16 | UG-13A-S08-A040 SS+1d, UG-13A-S08-A040 FF+2d | 3d |  | F7 | UG-13A | UG-13A-S08 | A050 | 11.570496 |
| UG-13A-S08-A060 |  | Excavate and strut to formation |  | 1d | 2027-03-22 | 2027-03-22 | UG-13A-S08-A050 SS+9d, UG-13A-S08-A050 FF+2d, UG-13-S01-A060 SS | 0d |  | F7 | UG-13A | UG-13A-S08 | A060 | 192.764456 |
| UG-13A-S08-A070 |  | Trim piles, blinding and piled slab (incl. cure) |  | 4d | 2027-03-23 | 2027-03-27 | UG-13A-S08-A060 SS+1d, UG-13A-S08-A060 FF+2d | 52d |  | F7 | UG-13A | UG-13A-S08 | A070 | 11.570496 |
| UG-13A-S08-A080 |  | Lay and joint pipe (incl. fittings, tie-in) |  | 4d | 2027-05-25 | 2027-05-29 | UG-13A-S08-A070 SS+2d, UG-13A-S08-A070 FF+2d, UG-13A-S07-A080 | 0d |  | F7 | UG-13A | UG-13A-S08 | A080 | 11.570496 |
| UG-13A-S08-A090 |  | Surround, joint test and line test |  | 3d | 2027-05-27 | 2027-05-30 | UG-13A-S08-A080 SS+2d, UG-13A-S08-A080 FF+2d | 6d |  | F7 | UG-13A | UG-13A-S08 | A090 | 11.570496 |
| UG-13A-S08-A100 |  | Backfill to NG and remove struts |  | 1d | 2027-06-08 | 2027-06-08 | UG-13A-S08-A090 SS+2d, UG-13A-S08-A090 FF+2d, UG-13-S01-A080 | 0d |  | F7 | UG-13A | UG-13A-S08 | A100 | 161.068467 |
| UG-13A-S08-A110 |  | Dewatering off, extract sheets, reinstate |  | 2d | 2027-06-09 | 2027-06-10 | UG-13A-S08-A100 SS+1d, UG-13A-S08-A100 FF+2d |  |  | F7 | UG-13A | UG-13A-S08 | A110 | 23.140991 |

Notes:
- UG-13A-S16-A010: Notes: Front F7 / Line UG-13A / Package UG-13A-S16 / Workbook logic: gates: START, D_DLU
- UG-13A-S16-A020: Notes: Front F7 / Line UG-13A / Package UG-13A-S16 / Quantity 9 m / Workbook logic: FS from A010; UG-13A-S02-A030 (SS, set-out one package ahead of piling)
- UG-13A-S16-A030: Notes: Front F7 / Line UG-13A / Package UG-13A-S16 / Quantity 10 piles / Workbook logic: gate: D_PILEDES
- UG-13A-S16-A040: Notes: Front F7 / Line UG-13A / Package UG-13A-S16 / Quantity 19 m wall
- UG-13A-S16-A050: Notes: Front F7 / Line UG-13A / Package UG-13A-S16 / Quantity 9 m / Workbook logic: UG-13A-S02-A060 (FS, negative lag = own duration: drawdown complete when the excavation crew is free)
- UG-13A-S16-A060: Notes: Front F7 / Line UG-13A / Package UG-13A-S16 / Quantity 131 m3 / Workbook logic: UG-13-S01-A060 (SS, shared trench); UG-13-S02-A060 (SS, shared trench)
- UG-13A-S16-A070: Notes: Front F7 / Line UG-13A / Package UG-13A-S16 / Quantity 9 m
- UG-13A-S16-A080: Notes: Front F7 / Line UG-13A / Package UG-13A-S16 / Quantity 9 m
- UG-13A-S16-A090: Notes: Front F7 / Line UG-13A / Package UG-13A-S16 / Quantity 9 m
- UG-13A-S16-A100: Notes: Front F7 / Line UG-13A / Package UG-13A-S16 / Quantity 114 m3 / Workbook logic: UG-13-S01-A080 (FS, shared trench laid); UG-13-S02-A080 (FS, shared trench laid)
- UG-13A-S16-A110: Notes: Front F7 / Line UG-13A / Package UG-13A-S16 / Quantity 19 m wall
- UG-13A-S08-A010: Notes: Front F7 / Line UG-13A / Package UG-13A-S08 / Workbook logic: gates: START, D_DLU, structure ready
- UG-13A-S08-A020: Notes: Front F7 / Line UG-13A / Package UG-13A-S08 / Quantity 12 m / Workbook logic: FS from A010; UG-13A-S07-A030 (SS, tie-in team follows the adjacent run)
- UG-13A-S08-A030: Notes: Front F7 / Line UG-13A / Package UG-13A-S08 / Quantity 10 piles / Workbook logic: gate: D_PILEDES
- UG-13A-S08-A040: Notes: Front F7 / Line UG-13A / Package UG-13A-S08 / Quantity 23 m wall
- UG-13A-S08-A050: Notes: Front F7 / Line UG-13A / Package UG-13A-S08 / Quantity 12 m
- UG-13A-S08-A060: Notes: Front F7 / Line UG-13A / Package UG-13A-S08 / Quantity 193 m3 / Workbook logic: UG-13-S01-A060 (SS, shared trench)
- UG-13A-S08-A070: Notes: Front F7 / Line UG-13A / Package UG-13A-S08 / Quantity 12 m
- UG-13A-S08-A080: Notes: Front F7 / Line UG-13A / Package UG-13A-S08 / Quantity 12 m / Workbook logic: UG-13A-S07-A080 (FS, closure)
- UG-13A-S08-A090: Notes: Front F7 / Line UG-13A / Package UG-13A-S08 / Quantity 12 m
- UG-13A-S08-A100: Notes: Front F7 / Line UG-13A / Package UG-13A-S08 / Quantity 161 m3 / Workbook logic: UG-13-S01-A080 (FS, shared trench laid)
- UG-13A-S08-A110: Notes: Front F7 / Line UG-13A / Package UG-13A-S08 / Quantity 23 m wall

| ID | WBS | Activity | Type | Duration | Start | Finish | Predecessors | Free float | Constraint | Text1 | Text2 | Text3 | Text4 | Number1 |
| --- | --- | --- | --- | --- | --- | --- | --- | --- | --- | --- | --- | --- | --- | --- |
|  | UG-13A-S12 | **UG-13A-S12 / HDPE-UG13A-S12-CH006-TEE-(-5.60/-5.60)-5m / Run / Sheet piles** |  |  | 2026-12-01 | 2027-06-23 |  |  |  |  |  |  |  |  |
| UG-13A-S12-A010 |  | Release: drawings, holds, access and gates | milestone | 0d | 2026-12-01 | 2026-12-01 |  | 93d | start on or after 2026-12-01 | F7 | UG-13A | UG-13A-S12 | A010 |  |
| UG-13A-S12-A020 |  | Set-out, crossing survey and working platform |  | 1d | 2027-03-20 | 2027-03-20 | UG-13A-S12-A010, UG-13A-S16-A030 SS | 2d |  | F7 | UG-13A | UG-13A-S12 | A020 | 5.26368 |
| UG-13A-S12-A030 |  | Pipe-support piling from platform (incl. integrity tests) |  | 2d | 2027-03-23 | 2027-03-24 | UG-13A-S12-A020 SS+1d, UG-13A-S12-A020 FF+2d, UG-13A-S16-A030 | 0d |  | F7 | UG-13A | UG-13A-S12 | A030 | 6 |
| UG-13A-S12-A040 |  | Install sheet piles (shored lengths) |  | 1d | 2027-03-25 | 2027-03-25 | UG-13A-S12-A030 SS+1d, UG-13A-S12-A030 FF+2d, UG-13A-S16-A040 | 1d |  | F7 | UG-13A | UG-13A-S12 | A040 | 10.52736 |
| UG-13A-S12-A050 |  | Install dewatering and draw down |  | 8d | 2027-04-10 | 2027-04-18 | UG-13A-S12-A040 SS+1d, UG-13A-S12-A040 FF+2d, UG-13A-S16-A060 FS-8d | 0d |  | F7 | UG-13A | UG-13A-S12 | A050 | 5.26368 |
| UG-13A-S12-A060 |  | Excavate and strut to formation |  | 1d | 2027-04-20 | 2027-04-20 | UG-13A-S12-A050 SS+9d, UG-13A-S12-A050 FF+2d, UG-13-S01-A060 SS, UG-13A-S16-A060 | 0d |  | F7 | UG-13A | UG-13A-S12 | A060 | 87.692612 |
| UG-13A-S12-A070 |  | Trim piles, blinding and piled slab (incl. cure) |  | 4d | 2027-06-12 | 2027-06-15 | UG-13A-S12-A060 SS+1d, UG-13A-S12-A060 FF+2d, UG-13A-S16-A070 | 0d |  | F7 | UG-13A | UG-13A-S12 | A070 | 5.26368 |
| UG-13A-S12-A080 |  | Lay and joint pipe (incl. fittings, tie-in) |  | 1d | 2027-06-13 | 2027-06-13 | UG-13A-S12-A070 SS+2d, UG-13A-S12-A070 FF+2d, UG-13A-S16-A080 | 0d |  | F7 | UG-13A | UG-13A-S12 | A080 | 5.26368 |
| UG-13A-S12-A090 |  | Surround, joint test and line test |  | 3d | 2027-06-14 | 2027-06-16 | UG-13A-S12-A080 SS+1d, UG-13A-S12-A080 FF+2d | 2d |  | F7 | UG-13A | UG-13A-S12 | A090 | 5.26368 |
| UG-13A-S12-A100 |  | Backfill to NG and remove struts |  | 1d | 2027-06-21 | 2027-06-21 | UG-13A-S12-A090 SS+2d, UG-13A-S12-A090 FF+2d, UG-13-S01-A080, UG-13A-S16-A100 | 0d |  | F7 | UG-13A | UG-13A-S12 | A100 | 73.273511 |
| UG-13A-S12-A110 |  | Dewatering off, extract sheets, reinstate |  | 2d | 2027-06-22 | 2027-06-23 | UG-13A-S12-A100 SS+1d, UG-13A-S12-A100 FF+2d |  |  | F7 | UG-13A | UG-13A-S12 | A110 | 10.52736 |
|  | UG-13A-S11 | **UG-13A-S11 / HDPE-UG13A-S11-FSTJ-CH006-(-5.60/-5.60)-6m / Tie-in / Sheet piles** |  |  | 2026-12-01 | 2027-06-24 |  |  |  |  |  |  |  |  |
| UG-13A-S11-A010 |  | Release: drawings, holds, access and gates | milestone | 0d | 2026-12-01 | 2026-12-01 |  | 96d | start on or after 2026-12-01 | F7 | UG-13A | UG-13A-S11 | A010 |  |
| UG-13A-S11-A020 |  | Set-out, crossing survey and working platform |  | 1d | 2027-03-23 | 2027-03-23 | UG-13A-S11-A010, UG-13A-S12-A030 SS | 0d |  | F7 | UG-13A | UG-13A-S11 | A020 | 6 |
| UG-13A-S11-A030 |  | Pipe-support piling from platform (incl. integrity tests) |  | 2d | 2027-03-24 | 2027-03-25 | UG-13A-S11-A020 SS+1d, UG-13A-S11-A020 FF+2d | 0d |  | F7 | UG-13A | UG-13A-S11 | A030 | 6 |
| UG-13A-S11-A040 |  | Install sheet piles (shored lengths) |  | 1d | 2027-03-25 | 2027-03-25 | UG-13A-S11-A030 SS+1d, UG-13A-S11-A030 FF+2d | 0d |  | F7 | UG-13A | UG-13A-S11 | A040 | 12 |
| UG-13A-S11-A050 |  | Install dewatering and draw down |  | 8d | 2027-03-27 | 2027-04-04 | UG-13A-S11-A040 SS+1d, UG-13A-S11-A040 FF+2d | 0d |  | F7 | UG-13A | UG-13A-S11 | A050 | 6 |
| UG-13A-S11-A060 |  | Excavate and strut to formation |  | 1d | 2027-04-05 | 2027-04-05 | UG-13A-S11-A050 SS+9d, UG-13A-S11-A050 FF+2d, UG-13-S01-A060 SS | 0d |  | F7 | UG-13A | UG-13A-S11 | A060 | 99.959661 |
| UG-13A-S11-A070 |  | Trim piles, blinding and piled slab (incl. cure) |  | 4d | 2027-04-06 | 2027-04-10 | UG-13A-S11-A060 SS+1d, UG-13A-S11-A060 FF+2d | 61d |  | F7 | UG-13A | UG-13A-S11 | A070 | 6 |
| UG-13A-S11-A080 |  | Lay and joint pipe (incl. fittings, tie-in) |  | 4d | 2027-06-19 | 2027-06-22 | UG-13A-S11-A070 SS+2d, UG-13A-S11-A070 FF+2d, UG-13A-S12-A080 | 0d |  | F7 | UG-13A | UG-13A-S11 | A080 | 6 |
| UG-13A-S11-A090 |  | Surround, joint test and line test |  | 3d | 2027-06-20 | 2027-06-22 | UG-13A-S11-A080 SS+2d, UG-13A-S11-A080 FF+2d | 0d |  | F7 | UG-13A | UG-13A-S11 | A090 | 6 |
| UG-13A-S11-A100 |  | Backfill to NG and remove struts |  | 1d | 2027-06-22 | 2027-06-22 | UG-13A-S11-A090 SS+2d, UG-13A-S11-A090 FF+2d, UG-13-S01-A080 | 0d |  | F7 | UG-13A | UG-13A-S11 | A100 | 83.523517 |
| UG-13A-S11-A110 |  | Dewatering off, extract sheets, reinstate |  | 2d | 2027-06-23 | 2027-06-24 | UG-13A-S11-A100 SS+1d, UG-13A-S11-A100 FF+2d |  |  | F7 | UG-13A | UG-13A-S11 | A110 | 12 |

Notes:
- UG-13A-S12-A010: Notes: Front F7 / Line UG-13A / Package UG-13A-S12 / Workbook logic: gates: START, D_DLU
- UG-13A-S12-A020: Notes: Front F7 / Line UG-13A / Package UG-13A-S12 / Quantity 5 m / Workbook logic: FS from A010; UG-13A-S16-A030 (SS, set-out one package ahead of piling)
- UG-13A-S12-A030: Notes: Front F7 / Line UG-13A / Package UG-13A-S12 / Quantity 6 piles / Workbook logic: gate: D_PILEDES
- UG-13A-S12-A040: Notes: Front F7 / Line UG-13A / Package UG-13A-S12 / Quantity 11 m wall
- UG-13A-S12-A050: Notes: Front F7 / Line UG-13A / Package UG-13A-S12 / Quantity 5 m / Workbook logic: UG-13A-S16-A060 (FS, negative lag = own duration: drawdown complete when the excavation crew is free)
- UG-13A-S12-A060: Notes: Front F7 / Line UG-13A / Package UG-13A-S12 / Quantity 88 m3 / Workbook logic: UG-13-S01-A060 (SS, shared trench)
- UG-13A-S12-A070: Notes: Front F7 / Line UG-13A / Package UG-13A-S12 / Quantity 5 m
- UG-13A-S12-A080: Notes: Front F7 / Line UG-13A / Package UG-13A-S12 / Quantity 5 m
- UG-13A-S12-A090: Notes: Front F7 / Line UG-13A / Package UG-13A-S12 / Quantity 5 m
- UG-13A-S12-A100: Notes: Front F7 / Line UG-13A / Package UG-13A-S12 / Quantity 73 m3 / Workbook logic: UG-13-S01-A080 (FS, shared trench laid)
- UG-13A-S12-A110: Notes: Front F7 / Line UG-13A / Package UG-13A-S12 / Quantity 11 m wall
- UG-13A-S11-A010: Notes: Front F7 / Line UG-13A / Package UG-13A-S11 / Workbook logic: gates: START, D_DLU, structure ready
- UG-13A-S11-A020: Notes: Front F7 / Line UG-13A / Package UG-13A-S11 / Quantity 6 m / Workbook logic: FS from A010; UG-13A-S12-A030 (SS, tie-in team follows the adjacent run)
- UG-13A-S11-A030: Notes: Front F7 / Line UG-13A / Package UG-13A-S11 / Quantity 6 piles / Workbook logic: gate: D_PILEDES
- UG-13A-S11-A040: Notes: Front F7 / Line UG-13A / Package UG-13A-S11 / Quantity 12 m wall
- UG-13A-S11-A050: Notes: Front F7 / Line UG-13A / Package UG-13A-S11 / Quantity 6 m
- UG-13A-S11-A060: Notes: Front F7 / Line UG-13A / Package UG-13A-S11 / Quantity 100 m3 / Workbook logic: UG-13-S01-A060 (SS, shared trench)
- UG-13A-S11-A070: Notes: Front F7 / Line UG-13A / Package UG-13A-S11 / Quantity 6 m
- UG-13A-S11-A080: Notes: Front F7 / Line UG-13A / Package UG-13A-S11 / Quantity 6 m / Workbook logic: UG-13A-S12-A080 (FS, closure)
- UG-13A-S11-A090: Notes: Front F7 / Line UG-13A / Package UG-13A-S11 / Quantity 6 m
- UG-13A-S11-A100: Notes: Front F7 / Line UG-13A / Package UG-13A-S11 / Quantity 84 m3 / Workbook logic: UG-13-S01-A080 (FS, shared trench laid)
- UG-13A-S11-A110: Notes: Front F7 / Line UG-13A / Package UG-13A-S11 / Quantity 12 m wall

| ID | WBS | Activity | Type | Duration | Start | Finish | Predecessors | Free float | Constraint | Text1 | Text2 | Text3 | Text4 | Number1 |
| --- | --- | --- | --- | --- | --- | --- | --- | --- | --- | --- | --- | --- | --- | --- |
|  | UG-13A-S01 | **UG-13A-S01 / HDPE-UG13A-S01-FSTL-CH006-(-5.40/-5.40)-6m / Tie-in / Sheet piles** |  |  | 2026-12-01 | 2027-06-14 |  |  |  |  |  |  |  |  |
| UG-13A-S01-A010 |  | Release: drawings, holds, access and gates | milestone | 0d | 2026-12-01 | 2026-12-01 |  | 88d | start on or after 2026-12-01 | F7 | UG-13A | UG-13A-S01 | A010 |  |
| UG-13A-S01-A020 |  | Set-out, crossing survey and working platform |  | 1d | 2027-03-14 | 2027-03-14 | UG-13A-S01-A010, UG-13A-S02-A030 SS | 0d |  | F7 | UG-13A | UG-13A-S01 | A020 | 6 |
| UG-13A-S01-A030 |  | Pipe-support piling from platform (incl. integrity tests) |  | 1d | 2027-03-15 | 2027-03-15 | UG-13A-S01-A020 SS+1d, UG-13A-S01-A020 FF+2d | 0d |  | F7 | UG-13A | UG-13A-S01 | A030 | 4 |
| UG-13A-S01-A040 |  | Install sheet piles (shored lengths) |  | 1d | 2027-03-16 | 2027-03-16 | UG-13A-S01-A030 SS+1d, UG-13A-S01-A030 FF+2d | 0d |  | F7 | UG-13A | UG-13A-S01 | A040 | 12 |
| UG-13A-S01-A050 |  | Install dewatering and draw down |  | 8d | 2027-03-17 | 2027-03-25 | UG-13A-S01-A040 SS+1d, UG-13A-S01-A040 FF+2d | 0d |  | F7 | UG-13A | UG-13A-S01 | A050 | 6 |
| UG-13A-S01-A060 |  | Excavate and strut to formation |  | 1d | 2027-03-27 | 2027-03-27 | UG-13A-S01-A050 SS+9d, UG-13A-S01-A050 FF+2d | 0d |  | F7 | UG-13A | UG-13A-S01 | A060 | 84.599859 |
| UG-13A-S01-A070 |  | Trim piles, blinding and piled slab (incl. cure) |  | 4d | 2027-03-28 | 2027-03-31 | UG-13A-S01-A060 SS+1d, UG-13A-S01-A060 FF+2d | 60d |  | F7 | UG-13A | UG-13A-S01 | A070 | 6 |
| UG-13A-S01-A080 |  | Lay and joint pipe (incl. fittings, tie-in) |  | 4d | 2027-06-08 | 2027-06-12 | UG-13A-S01-A070 SS+2d, UG-13A-S01-A070 FF+2d, UG-13A-S02-A080 | 0d |  | F7 | UG-13A | UG-13A-S01 | A080 | 6 |
| UG-13A-S01-A090 |  | Surround, joint test and line test |  | 3d | 2027-06-10 | 2027-06-13 | UG-13A-S01-A080 SS+2d, UG-13A-S01-A080 FF+2d | 0d |  | F7 | UG-13A | UG-13A-S01 | A090 | 6 |
| UG-13A-S01-A100 |  | Backfill to NG and remove struts |  | 1d | 2027-06-12 | 2027-06-12 | UG-13A-S01-A090 SS+2d, UG-13A-S01-A090 FF+2d | 0d |  | F7 | UG-13A | UG-13A-S01 | A100 | 73.887517 |
| UG-13A-S01-A110 |  | Dewatering off, extract sheets, reinstate |  | 2d | 2027-06-13 | 2027-06-14 | UG-13A-S01-A100 SS+1d, UG-13A-S01-A100 FF+2d |  |  | F7 | UG-13A | UG-13A-S01 | A110 | 12 |
|  | UG-13A-S06 | **UG-13A-S06 / HDPE-UG13A-S06-CH053-CH070-(-5.50/-5.56)-16m / Run / Sheet piles** |  |  | 2026-12-01 | 2027-06-26 |  |  |  |  |  |  |  |  |
| UG-13A-S06-A010 |  | Release: drawings, holds, access and gates | milestone | 0d | 2026-12-01 | 2026-12-01 |  | 96d | start on or after 2026-12-01 | F7 | UG-13A | UG-13A-S06 | A010 |  |
| UG-13A-S06-A020 |  | Set-out, crossing survey and working platform |  | 1d | 2027-03-23 | 2027-03-23 | UG-13A-S06-A010, UG-13A-S12-A030 SS | 2d |  | F7 | UG-13A | UG-13A-S06 | A020 | 16.1 |
| UG-13A-S06-A030 |  | Pipe-support piling from platform (incl. integrity tests) |  | 3d | 2027-03-27 | 2027-03-29 | UG-13A-S06-A020 SS+1d, UG-13A-S06-A020 FF+2d, UG-13A-S12-A030 | 0d |  | F7 | UG-13A | UG-13A-S06 | A030 | 14 |
| UG-13A-S06-A040 |  | Install sheet piles (shored lengths) |  | 2d | 2027-03-28 | 2027-03-29 | UG-13A-S06-A030 SS+2d, UG-13A-S06-A030 FF+2d, UG-13A-S12-A040 | 2d |  | F7 | UG-13A | UG-13A-S06 | A040 | 32.2 |
| UG-13A-S06-A050 |  | Install dewatering and draw down |  | 8d | 2027-04-12 | 2027-04-20 | UG-13A-S06-A040 SS+1d, UG-13A-S06-A040 FF+2d, UG-13A-S12-A060 FS-8d | 0d |  | F7 | UG-13A | UG-13A-S06 | A050 | 16.1 |
| UG-13A-S06-A060 |  | Excavate and strut to formation |  | 2d | 2027-04-22 | 2027-04-24 | UG-13A-S06-A050 SS+9d, UG-13A-S06-A050 FF+2d, UG-13A-S12-A060 | 0d |  | F7 | UG-13A | UG-13A-S06 | A060 | 264.468001 |
| UG-13A-S06-A070 |  | Trim piles, blinding and piled slab (incl. cure) |  | 5d | 2027-06-16 | 2027-06-21 | UG-13A-S06-A060 SS+1d, UG-13A-S06-A060 FF+2d, UG-13A-S12-A070 | 0d |  | F7 | UG-13A | UG-13A-S06 | A070 | 16.1 |
| UG-13A-S06-A080 |  | Lay and joint pipe (incl. fittings, tie-in) |  | 1d | 2027-06-19 | 2027-06-19 | UG-13A-S06-A070 SS+2d, UG-13A-S06-A070 FF+2d, UG-13A-S12-A080 | 0d |  | F7 | UG-13A | UG-13A-S06 | A080 | 16.1 |
| UG-13A-S06-A090 |  | Surround, joint test and line test |  | 3d | 2027-06-19 | 2027-06-21 | UG-13A-S06-A080 SS+1d, UG-13A-S06-A080 FF+2d | 0d |  | F7 | UG-13A | UG-13A-S06 | A090 | 16.1 |
| UG-13A-S06-A100 |  | Backfill to NG and remove struts |  | 1d | 2027-06-23 | 2027-06-23 | UG-13A-S06-A090 SS+2d, UG-13A-S06-A090 FF+2d, UG-13A-S12-A100 | 0d |  | F7 | UG-13A | UG-13A-S06 | A100 | 220.364413 |
| UG-13A-S06-A110 |  | Dewatering off, extract sheets, reinstate |  | 2d | 2027-06-24 | 2027-06-26 | UG-13A-S06-A100 SS+1d, UG-13A-S06-A100 FF+2d |  |  | F7 | UG-13A | UG-13A-S06 | A110 | 32.2 |

Notes:
- UG-13A-S01-A010: Notes: Front F7 / Line UG-13A / Package UG-13A-S01 / Workbook logic: gates: START, D_DLU, structure ready
- UG-13A-S01-A020: Notes: Front F7 / Line UG-13A / Package UG-13A-S01 / Quantity 6 m / Workbook logic: FS from A010; UG-13A-S02-A030 (SS, tie-in team follows the adjacent run)
- UG-13A-S01-A030: Notes: Front F7 / Line UG-13A / Package UG-13A-S01 / Quantity 4 piles / Workbook logic: gate: D_PILEDES
- UG-13A-S01-A040: Notes: Front F7 / Line UG-13A / Package UG-13A-S01 / Quantity 12 m wall
- UG-13A-S01-A050: Notes: Front F7 / Line UG-13A / Package UG-13A-S01 / Quantity 6 m
- UG-13A-S01-A060: Notes: Front F7 / Line UG-13A / Package UG-13A-S01 / Quantity 85 m3
- UG-13A-S01-A070: Notes: Front F7 / Line UG-13A / Package UG-13A-S01 / Quantity 6 m
- UG-13A-S01-A080: Notes: Front F7 / Line UG-13A / Package UG-13A-S01 / Quantity 6 m / Workbook logic: UG-13A-S02-A080 (FS, closure)
- UG-13A-S01-A090: Notes: Front F7 / Line UG-13A / Package UG-13A-S01 / Quantity 6 m
- UG-13A-S01-A100: Notes: Front F7 / Line UG-13A / Package UG-13A-S01 / Quantity 74 m3
- UG-13A-S01-A110: Notes: Front F7 / Line UG-13A / Package UG-13A-S01 / Quantity 12 m wall
- UG-13A-S06-A010: Notes: Front F7 / Line UG-13A / Package UG-13A-S06 / Workbook logic: gates: START, D_DLU
- UG-13A-S06-A020: Notes: Front F7 / Line UG-13A / Package UG-13A-S06 / Quantity 16 m / Workbook logic: FS from A010; UG-13A-S12-A030 (SS, set-out one package ahead of piling)
- UG-13A-S06-A030: Notes: Front F7 / Line UG-13A / Package UG-13A-S06 / Quantity 14 piles / Workbook logic: gate: D_PILEDES
- UG-13A-S06-A040: Notes: Front F7 / Line UG-13A / Package UG-13A-S06 / Quantity 32 m wall
- UG-13A-S06-A050: Notes: Front F7 / Line UG-13A / Package UG-13A-S06 / Quantity 16 m / Workbook logic: UG-13A-S12-A060 (FS, negative lag = own duration: drawdown complete when the excavation crew is free)
- UG-13A-S06-A060: Notes: Front F7 / Line UG-13A / Package UG-13A-S06 / Quantity 264 m3
- UG-13A-S06-A070: Notes: Front F7 / Line UG-13A / Package UG-13A-S06 / Quantity 16 m
- UG-13A-S06-A080: Notes: Front F7 / Line UG-13A / Package UG-13A-S06 / Quantity 16 m
- UG-13A-S06-A090: Notes: Front F7 / Line UG-13A / Package UG-13A-S06 / Quantity 16 m
- UG-13A-S06-A100: Notes: Front F7 / Line UG-13A / Package UG-13A-S06 / Quantity 220 m3
- UG-13A-S06-A110: Notes: Front F7 / Line UG-13A / Package UG-13A-S06 / Quantity 32 m wall

| ID | WBS | Activity | Type | Duration | Start | Finish | Predecessors | Free float | Constraint | Text1 | Text2 | Text3 | Text4 | Number1 |
| --- | --- | --- | --- | --- | --- | --- | --- | --- | --- | --- | --- | --- | --- | --- |
|  | UG-13A-S05 | **UG-13A-S05 / HDPE-UG13A-S05-TEE048-CH053-(-5.48/-5.50)-5m / Run / Sheet piles** |  |  | 2026-12-01 | 2027-06-30 |  |  |  |  |  |  |  |  |
| UG-13A-S05-A010 |  | Release: drawings, holds, access and gates | milestone | 0d | 2026-12-01 | 2026-12-01 |  | 99d | start on or after 2026-12-01 | F7 | UG-13A | UG-13A-S05 | A010 |  |
| UG-13A-S05-A020 |  | Set-out, crossing survey and working platform |  | 1d | 2027-03-27 | 2027-03-27 | UG-13A-S05-A010, UG-13A-S06-A030 SS | 2d |  | F7 | UG-13A | UG-13A-S05 | A020 | 5.188405 |
| UG-13A-S05-A030 |  | Pipe-support piling from platform (incl. integrity tests) |  | 2d | 2027-03-30 | 2027-03-31 | UG-13A-S05-A020 SS+1d, UG-13A-S05-A020 FF+2d, UG-13A-S06-A030 | 0d |  | F7 | UG-13A | UG-13A-S05 | A030 | 6 |
| UG-13A-S05-A040 |  | Install sheet piles (shored lengths) |  | 1d | 2027-04-01 | 2027-04-01 | UG-13A-S05-A030 SS+1d, UG-13A-S05-A030 FF+2d, UG-13A-S06-A040 | 1d |  | F7 | UG-13A | UG-13A-S05 | A040 | 10.37681 |
| UG-13A-S05-A050 |  | Install dewatering and draw down |  | 8d | 2027-04-15 | 2027-04-24 | UG-13A-S05-A040 SS+1d, UG-13A-S05-A040 FF+2d, UG-13A-S06-A060 FS-8d | 0d |  | F7 | UG-13A | UG-13A-S05 | A050 | 5.188405 |
| UG-13A-S05-A060 |  | Excavate and strut to formation |  | 1d | 2027-04-25 | 2027-04-25 | UG-13A-S05-A050 SS+9d, UG-13A-S05-A050 FF+2d, UG-13A-S06-A060 | 0d |  | F7 | UG-13A | UG-13A-S05 | A060 | 84.533611 |
| UG-13A-S05-A070 |  | Trim piles, blinding and piled slab (incl. cure) |  | 4d | 2027-06-22 | 2027-06-26 | UG-13A-S05-A060 SS+1d, UG-13A-S05-A060 FF+2d, UG-13A-S06-A070 | 0d |  | F7 | UG-13A | UG-13A-S05 | A070 | 5.188405 |
| UG-13A-S05-A080 |  | Lay and joint pipe (incl. fittings, tie-in) |  | 1d | 2027-06-24 | 2027-06-24 | UG-13A-S05-A070 SS+2d, UG-13A-S05-A070 FF+2d, UG-13A-S06-A080 | 0d |  | F7 | UG-13A | UG-13A-S05 | A080 | 5.188405 |
| UG-13A-S05-A090 |  | Surround, joint test and line test |  | 3d | 2027-06-26 | 2027-06-28 | UG-13A-S05-A080 SS+1d, UG-13A-S05-A080 FF+2d | 0d |  | F7 | UG-13A | UG-13A-S05 | A090 | 5.188405 |
| UG-13A-S05-A100 |  | Backfill to NG and remove struts |  | 1d | 2027-06-28 | 2027-06-28 | UG-13A-S05-A090 SS+2d, UG-13A-S05-A090 FF+2d, UG-13A-S06-A100 | 0d |  | F7 | UG-13A | UG-13A-S05 | A100 | 70.320682 |
| UG-13A-S05-A110 |  | Dewatering off, extract sheets, reinstate |  | 2d | 2027-06-29 | 2027-06-30 | UG-13A-S05-A100 SS+1d, UG-13A-S05-A100 FF+2d |  |  | F7 | UG-13A | UG-13A-S05 | A110 | 10.37681 |
|  | UG-13A-S10 | **UG-13A-S10 / HDPE-UG13A-S10-EL001-TEE-(-5.40/-5.48)-16m / Run / Sheet piles** |  |  | 2026-12-01 | 2027-07-05 |  |  |  |  |  |  |  |  |
| UG-13A-S10-A010 |  | Release: drawings, holds, access and gates | milestone | 0d | 2026-12-01 | 2026-12-01 |  | 102d | start on or after 2026-12-01 | F7 | UG-13A | UG-13A-S10 | A010 |  |
| UG-13A-S10-A020 |  | Set-out, crossing survey and working platform |  | 1d | 2027-03-30 | 2027-03-30 | UG-13A-S10-A010, UG-13A-S05-A030 SS | 2d |  | F7 | UG-13A | UG-13A-S10 | A020 | 15.825683 |
| UG-13A-S10-A030 |  | Pipe-support piling from platform (incl. integrity tests) |  | 3d | 2027-04-03 | 2027-04-05 | UG-13A-S10-A020 SS+1d, UG-13A-S10-A020 FF+2d, UG-13A-S05-A030 | 0d |  | F7 | UG-13A | UG-13A-S10 | A030 | 14 |
| UG-13A-S10-A040 |  | Install sheet piles (shored lengths) |  | 2d | 2027-04-04 | 2027-04-05 | UG-13A-S10-A030 SS+2d, UG-13A-S10-A030 FF+2d, UG-13A-S05-A040 | 2d |  | F7 | UG-13A | UG-13A-S10 | A040 | 31.651367 |
| UG-13A-S10-A050 |  | Install dewatering and draw down |  | 8d | 2027-04-17 | 2027-04-25 | UG-13A-S10-A040 SS+1d, UG-13A-S10-A040 FF+2d, UG-13A-S05-A060 FS-8d | 0d |  | F7 | UG-13A | UG-13A-S10 | A050 | 15.825683 |
| UG-13A-S10-A060 |  | Excavate and strut to formation |  | 1d | 2027-04-27 | 2027-04-27 | UG-13A-S10-A050 SS+9d, UG-13A-S10-A050 FF+2d, UG-13A-S05-A060 | 0d |  | F7 | UG-13A | UG-13A-S10 | A060 | 236.88238 |
| UG-13A-S10-A070 |  | Trim piles, blinding and piled slab (incl. cure) |  | 5d | 2027-06-27 | 2027-07-01 | UG-13A-S10-A060 SS+1d, UG-13A-S10-A060 FF+2d, UG-13A-S05-A070 | 0d |  | F7 | UG-13A | UG-13A-S10 | A070 | 15.825683 |
| UG-13A-S10-A080 |  | Lay and joint pipe (incl. fittings, tie-in) |  | 2d | 2027-06-29 | 2027-06-30 | UG-13A-S10-A070 SS+2d, UG-13A-S10-A070 FF+2d, UG-13A-S05-A080 | 0d |  | F7 | UG-13A | UG-13A-S10 | A080 | 15.825683 |
| UG-13A-S10-A090 |  | Surround, joint test and line test |  | 3d | 2027-06-30 | 2027-07-03 | UG-13A-S10-A080 SS+1d, UG-13A-S10-A080 FF+2d | 0d |  | F7 | UG-13A | UG-13A-S10 | A090 | 15.825683 |
| UG-13A-S10-A100 |  | Backfill to NG and remove struts |  | 1d | 2027-07-03 | 2027-07-03 | UG-13A-S10-A090 SS+2d, UG-13A-S10-A090 FF+2d, UG-13A-S05-A100 | 0d |  | F7 | UG-13A | UG-13A-S10 | A100 | 203.41364 |
| UG-13A-S10-A110 |  | Dewatering off, extract sheets, reinstate |  | 2d | 2027-07-04 | 2027-07-05 | UG-13A-S10-A100 SS+1d, UG-13A-S10-A100 FF+2d |  |  | F7 | UG-13A | UG-13A-S10 | A110 | 31.651367 |

Notes:
- UG-13A-S05-A010: Notes: Front F7 / Line UG-13A / Package UG-13A-S05 / Workbook logic: gates: START, D_DLU
- UG-13A-S05-A020: Notes: Front F7 / Line UG-13A / Package UG-13A-S05 / Quantity 5 m / Workbook logic: FS from A010; UG-13A-S06-A030 (SS, set-out one package ahead of piling)
- UG-13A-S05-A030: Notes: Front F7 / Line UG-13A / Package UG-13A-S05 / Quantity 6 piles / Workbook logic: gate: D_PILEDES
- UG-13A-S05-A040: Notes: Front F7 / Line UG-13A / Package UG-13A-S05 / Quantity 10 m wall
- UG-13A-S05-A050: Notes: Front F7 / Line UG-13A / Package UG-13A-S05 / Quantity 5 m / Workbook logic: UG-13A-S06-A060 (FS, negative lag = own duration: drawdown complete when the excavation crew is free)
- UG-13A-S05-A060: Notes: Front F7 / Line UG-13A / Package UG-13A-S05 / Quantity 85 m3
- UG-13A-S05-A070: Notes: Front F7 / Line UG-13A / Package UG-13A-S05 / Quantity 5 m
- UG-13A-S05-A080: Notes: Front F7 / Line UG-13A / Package UG-13A-S05 / Quantity 5 m
- UG-13A-S05-A090: Notes: Front F7 / Line UG-13A / Package UG-13A-S05 / Quantity 5 m
- UG-13A-S05-A100: Notes: Front F7 / Line UG-13A / Package UG-13A-S05 / Quantity 70 m3
- UG-13A-S05-A110: Notes: Front F7 / Line UG-13A / Package UG-13A-S05 / Quantity 10 m wall
- UG-13A-S10-A010: Notes: Front F7 / Line UG-13A / Package UG-13A-S10 / Workbook logic: gates: START, D_DLU
- UG-13A-S10-A020: Notes: Front F7 / Line UG-13A / Package UG-13A-S10 / Quantity 16 m / Workbook logic: FS from A010; UG-13A-S05-A030 (SS, set-out one package ahead of piling)
- UG-13A-S10-A030: Notes: Front F7 / Line UG-13A / Package UG-13A-S10 / Quantity 14 piles / Workbook logic: gate: D_PILEDES
- UG-13A-S10-A040: Notes: Front F7 / Line UG-13A / Package UG-13A-S10 / Quantity 32 m wall
- UG-13A-S10-A050: Notes: Front F7 / Line UG-13A / Package UG-13A-S10 / Quantity 16 m / Workbook logic: UG-13A-S05-A060 (FS, negative lag = own duration: drawdown complete when the excavation crew is free)
- UG-13A-S10-A060: Notes: Front F7 / Line UG-13A / Package UG-13A-S10 / Quantity 237 m3
- UG-13A-S10-A070: Notes: Front F7 / Line UG-13A / Package UG-13A-S10 / Quantity 16 m
- UG-13A-S10-A080: Notes: Front F7 / Line UG-13A / Package UG-13A-S10 / Quantity 16 m
- UG-13A-S10-A090: Notes: Front F7 / Line UG-13A / Package UG-13A-S10 / Quantity 16 m
- UG-13A-S10-A100: Notes: Front F7 / Line UG-13A / Package UG-13A-S10 / Quantity 203 m3
- UG-13A-S10-A110: Notes: Front F7 / Line UG-13A / Package UG-13A-S10 / Quantity 32 m wall

| ID | WBS | Activity | Type | Duration | Start | Finish | Predecessors | Free float | Constraint | Text1 | Text2 | Text3 | Text4 | Number1 |
| --- | --- | --- | --- | --- | --- | --- | --- | --- | --- | --- | --- | --- | --- | --- |
|  | UG-13A-S09 | **UG-13A-S09 / HDPE-UG13A-S09-SDCC-EL001-(-5.39/-5.39)-1m / Tie-in / Sheet piles** |  |  | 2026-12-01 | 2027-07-11 |  |  |  |  |  |  |  |  |
| UG-13A-S09-A010 |  | Release: drawings, holds, access and gates | milestone | 0d | 2026-12-01 | 2026-12-01 |  | 105d | start on or after 2026-12-01 | F7 | UG-13A | UG-13A-S09 | A010 |  |
| UG-13A-S09-A020 |  | Set-out, crossing survey and working platform |  | 1d | 2027-04-03 | 2027-04-03 | UG-13A-S09-A010, UG-13A-S10-A030 SS | 0d |  | F7 | UG-13A | UG-13A-S09 | A020 | 0.636397 |
| UG-13A-S09-A030 |  | Pipe-support piling from platform (incl. integrity tests) |  | 1d | 2027-04-03 | 2027-04-03 | UG-13A-S09-A020 SS+1d, UG-13A-S09-A020 FF+2d | 0d |  | F7 | UG-13A | UG-13A-S09 | A030 | 2 |
| UG-13A-S09-A040 |  | Install sheet piles (shored lengths) |  | 1d | 2027-04-04 | 2027-04-04 | UG-13A-S09-A030 SS+1d, UG-13A-S09-A030 FF+2d | 0d |  | F7 | UG-13A | UG-13A-S09 | A040 | 1.272794 |
| UG-13A-S09-A050 |  | Install dewatering and draw down |  | 8d | 2027-04-05 | 2027-04-13 | UG-13A-S09-A040 SS+1d, UG-13A-S09-A040 FF+2d | 0d |  | F7 | UG-13A | UG-13A-S09 | A050 | 0.636397 |
| UG-13A-S09-A060 |  | Excavate and strut to formation |  | 1d | 2027-04-15 | 2027-04-15 | UG-13A-S09-A050 SS+9d, UG-13A-S09-A050 FF+2d | 0d |  | F7 | UG-13A | UG-13A-S09 | A060 | 8.897489 |
| UG-13A-S09-A070 |  | Trim piles, blinding and piled slab (incl. cure) |  | 4d | 2027-04-17 | 2027-04-20 | UG-13A-S09-A060 SS+1d, UG-13A-S09-A060 FF+2d | 66d |  | F7 | UG-13A | UG-13A-S09 | A070 | 0.636397 |
| UG-13A-S09-A080 |  | Lay and joint pipe (incl. fittings, tie-in) |  | 4d | 2027-07-05 | 2027-07-08 | UG-13A-S09-A070 SS+2d, UG-13A-S09-A070 FF+2d, UG-13A-S10-A080 | 0d |  | F7 | UG-13A | UG-13A-S09 | A080 | 0.636397 |
| UG-13A-S09-A090 |  | Surround, joint test and line test |  | 3d | 2027-07-07 | 2027-07-10 | UG-13A-S09-A080 SS+2d, UG-13A-S09-A080 FF+2d | 0d |  | F7 | UG-13A | UG-13A-S09 | A090 | 0.636397 |
| UG-13A-S09-A100 |  | Backfill to NG and remove struts |  | 1d | 2027-07-10 | 2027-07-10 | UG-13A-S09-A090 SS+2d, UG-13A-S09-A090 FF+2d | 0d |  | F7 | UG-13A | UG-13A-S09 | A100 | 7.786408 |
| UG-13A-S09-A110 |  | Dewatering off, extract sheets, reinstate |  | 2d | 2027-07-10 | 2027-07-11 | UG-13A-S09-A100 SS+1d, UG-13A-S09-A100 FF+2d |  |  | F7 | UG-13A | UG-13A-S09 | A110 | 1.272794 |
|  | UG-13A-S14 | **UG-13A-S14 / HDPE-UG13A-S14-EL030-SDCC-(-4.10/-4.09)-31m / Run / Sheet piles** |  |  | 2026-12-01 | 2027-07-13 |  |  |  |  |  |  |  |  |
| UG-13A-S14-A010 |  | Release: drawings, holds, access and gates | milestone | 0d | 2026-12-01 | 2026-12-01 |  | 105d | start on or after 2026-12-01 | F7 | UG-13A | UG-13A-S14 | A010 |  |
| UG-13A-S14-A020 |  | Set-out, crossing survey and working platform |  | 1d | 2027-04-03 | 2027-04-03 | UG-13A-S14-A010, UG-13A-S10-A030 SS | 2d |  | F7 | UG-13A | UG-13A-S14 | A020 | 31.497686 |
| UG-13A-S14-A030 |  | Pipe-support piling from platform (incl. integrity tests) |  | 3d | 2027-04-06 | 2027-04-08 | UG-13A-S14-A020 SS+1d, UG-13A-S14-A020 FF+2d, UG-13A-S10-A030 | 0d |  | F7 | UG-13A | UG-13A-S14 | A030 | 12 |
| UG-13A-S14-A040 |  | Install sheet piles (shored lengths) |  | 3d | 2027-04-08 | 2027-04-11 | UG-13A-S14-A030 SS+2d, UG-13A-S14-A030 FF+2d, UG-13A-S10-A040 | 1d |  | F7 | UG-13A | UG-13A-S14 | A040 | 62.995372 |
| UG-13A-S14-A050 |  | Install dewatering and draw down |  | 8d | 2027-04-19 | 2027-04-27 | UG-13A-S14-A040 SS+2d, UG-13A-S14-A040 FF+2d, UG-13A-S10-A060 FS-8d | 0d |  | F7 | UG-13A | UG-13A-S14 | A050 | 31.497686 |
| UG-13A-S14-A060 |  | Excavate and strut to formation |  | 2d | 2027-04-29 | 2027-05-01 | UG-13A-S14-A050 SS+9d, UG-13A-S14-A050 FF+2d, UG-13A-S10-A060 | 0d |  | F7 | UG-13A | UG-13A-S14 | A060 | 321.215925 |
| UG-13A-S14-A070 |  | Trim piles, blinding and piled slab (incl. cure) |  | 6d | 2027-07-03 | 2027-07-08 | UG-13A-S14-A060 SS+1d, UG-13A-S14-A060 FF+2d, UG-13A-S10-A070 | 0d |  | F7 | UG-13A | UG-13A-S14 | A070 | 31.497686 |
| UG-13A-S14-A080 |  | Lay and joint pipe (incl. fittings, tie-in) |  | 4d | 2027-07-06 | 2027-07-10 | UG-13A-S14-A070 SS+3d, UG-13A-S14-A070 FF+2d, UG-13A-S10-A080 | 0d |  | F7 | UG-13A | UG-13A-S14 | A080 | 31.497686 |
| UG-13A-S14-A090 |  | Surround, joint test and line test |  | 3d | 2027-07-08 | 2027-07-11 | UG-13A-S14-A080 SS+2d, UG-13A-S14-A080 FF+2d | 0d |  | F7 | UG-13A | UG-13A-S14 | A090 | 31.497686 |
| UG-13A-S14-A100 |  | Backfill to NG and remove struts |  | 1d | 2027-07-10 | 2027-07-10 | UG-13A-S14-A090 SS+2d, UG-13A-S14-A090 FF+2d, UG-13A-S10-A100 | 0d |  | F7 | UG-13A | UG-13A-S14 | A100 | 265.005436 |
| UG-13A-S14-A110 |  | Dewatering off, extract sheets, reinstate |  | 3d | 2027-07-11 | 2027-07-13 | UG-13A-S14-A100 SS+1d, UG-13A-S14-A100 FF+2d |  |  | F7 | UG-13A | UG-13A-S14 | A110 | 62.995372 |

Notes:
- UG-13A-S09-A010: Notes: Front F7 / Line UG-13A / Package UG-13A-S09 / Workbook logic: gates: START, D_DLU, structure ready
- UG-13A-S09-A020: Notes: Front F7 / Line UG-13A / Package UG-13A-S09 / Quantity 1 m / Workbook logic: FS from A010; UG-13A-S10-A030 (SS, tie-in team follows the adjacent run)
- UG-13A-S09-A030: Notes: Front F7 / Line UG-13A / Package UG-13A-S09 / Quantity 2 piles / Workbook logic: gate: D_PILEDES
- UG-13A-S09-A040: Notes: Front F7 / Line UG-13A / Package UG-13A-S09 / Quantity 1 m wall
- UG-13A-S09-A050: Notes: Front F7 / Line UG-13A / Package UG-13A-S09 / Quantity 1 m
- UG-13A-S09-A060: Notes: Front F7 / Line UG-13A / Package UG-13A-S09 / Quantity 9 m3
- UG-13A-S09-A070: Notes: Front F7 / Line UG-13A / Package UG-13A-S09 / Quantity 1 m
- UG-13A-S09-A080: Notes: Front F7 / Line UG-13A / Package UG-13A-S09 / Quantity 1 m / Workbook logic: UG-13A-S10-A080 (FS, closure)
- UG-13A-S09-A090: Notes: Front F7 / Line UG-13A / Package UG-13A-S09 / Quantity 1 m
- UG-13A-S09-A100: Notes: Front F7 / Line UG-13A / Package UG-13A-S09 / Quantity 8 m3
- UG-13A-S09-A110: Notes: Front F7 / Line UG-13A / Package UG-13A-S09 / Quantity 1 m wall
- UG-13A-S14-A010: Notes: Front F7 / Line UG-13A / Package UG-13A-S14 / Workbook logic: gates: START, D_DLU
- UG-13A-S14-A020: Notes: Front F7 / Line UG-13A / Package UG-13A-S14 / Quantity 31 m / Workbook logic: FS from A010; UG-13A-S10-A030 (SS, set-out one package ahead of piling)
- UG-13A-S14-A030: Notes: Front F7 / Line UG-13A / Package UG-13A-S14 / Quantity 12 piles / Workbook logic: gate: D_PILEDES
- UG-13A-S14-A040: Notes: Front F7 / Line UG-13A / Package UG-13A-S14 / Quantity 63 m wall
- UG-13A-S14-A050: Notes: Front F7 / Line UG-13A / Package UG-13A-S14 / Quantity 31 m / Workbook logic: UG-13A-S10-A060 (FS, negative lag = own duration: drawdown complete when the excavation crew is free)
- UG-13A-S14-A060: Notes: Front F7 / Line UG-13A / Package UG-13A-S14 / Quantity 321 m3
- UG-13A-S14-A070: Notes: Front F7 / Line UG-13A / Package UG-13A-S14 / Quantity 31 m
- UG-13A-S14-A080: Notes: Front F7 / Line UG-13A / Package UG-13A-S14 / Quantity 31 m
- UG-13A-S14-A090: Notes: Front F7 / Line UG-13A / Package UG-13A-S14 / Quantity 31 m
- UG-13A-S14-A100: Notes: Front F7 / Line UG-13A / Package UG-13A-S14 / Quantity 265 m3
- UG-13A-S14-A110: Notes: Front F7 / Line UG-13A / Package UG-13A-S14 / Quantity 63 m wall

| ID | WBS | Activity | Type | Duration | Start | Finish | Predecessors | Free float | Constraint | Text1 | Text2 | Text3 | Text4 | Number1 |
| --- | --- | --- | --- | --- | --- | --- | --- | --- | --- | --- | --- | --- | --- | --- |
|  | UG-13A-S04 | **UG-13A-S04 / HDPE-UG13A-S04-CH006-TEE048-(-4.15/-5.48)-42m / Run / Sheet piles** |  |  | 2026-12-01 | 2027-08-04 |  |  |  |  |  |  |  |  |
| UG-13A-S04-A010 |  | Release: drawings, holds, access and gates | milestone | 0d | 2026-12-01 | 2026-12-01 |  | 108d | start on or after 2026-12-01 | F7 | UG-13A | UG-13A-S04 | A010 |  |
| UG-13A-S04-A020 |  | Set-out, crossing survey and working platform |  | 1d | 2027-04-06 | 2027-04-06 | UG-13A-S04-A010, UG-13A-S14-A030 SS | 2d |  | F7 | UG-13A | UG-13A-S04 | A020 | 42.211595 |
| UG-13A-S04-A030 |  | Pipe-support piling from platform (incl. integrity tests) |  | 7d | 2027-04-10 | 2027-04-17 | UG-13A-S04-A020 SS+1d, UG-13A-S04-A020 FF+2d, UG-13A-S14-A030 | 0d |  | F7 | UG-13A | UG-13A-S04 | A030 | 32 |
| UG-13A-S04-A040 |  | Install sheet piles (shored lengths) |  | 4d | 2027-04-13 | 2027-04-17 | UG-13A-S04-A030 SS+3d, UG-13A-S04-A030 FF+2d, UG-13A-S14-A040 | 5d |  | F7 | UG-13A | UG-13A-S04 | A040 | 84.42319 |
| UG-13A-S04-A050 |  | Install dewatering and draw down |  | 9d | 2027-04-21 | 2027-05-01 | UG-13A-S04-A040 SS+2d, UG-13A-S04-A040 FF+2d, UG-13A-S14-A060 FS-9d | 0d |  | F7 | UG-13A | UG-13A-S04 | A050 | 42.211595 |
| UG-13A-S04-A060 |  | Excavate and strut to formation |  | 2d | 2027-05-02 | 2027-05-03 | UG-13A-S04-A050 SS+9d, UG-13A-S04-A050 FF+2d, UG-13A-S14-A060 | 58d |  | F7 | UG-13A | UG-13A-S04 | A060 | 463.581085 |
| UG-13A-S04-A070 |  | Trim piles, blinding and piled slab (incl. cure) |  | 7d | 2027-07-10 | 2027-07-17 | UG-13A-S04-A060 SS+1d, UG-13A-S04-A060 FF+2d, UG-13A-S14-A070 | 0d |  | F7 | UG-13A | UG-13A-S04 | A070 | 42.211595 |
| UG-13A-S04-A080 |  | Lay and joint pipe (incl. fittings, tie-in) |  | 6d | 2027-07-13 | 2027-07-19 | UG-13A-S04-A070 SS+3d, UG-13A-S04-A070 FF+2d, UG-13A-S14-A080 | 0d |  | F7 | UG-13A | UG-13A-S04 | A080 | 42.211595 |
| UG-13A-S04-A090 |  | Surround, joint test and line test |  | 3d | 2027-07-17 | 2027-07-19 | UG-13A-S04-A080 SS+3d, UG-13A-S04-A080 FF+2d | 10d |  | F7 | UG-13A | UG-13A-S04 | A090 | 42.211595 |
| UG-13A-S04-A100 |  | Backfill to NG and remove struts |  | 2d | 2027-08-01 | 2027-08-02 | UG-13A-S04-A090 SS+2d, UG-13A-S04-A090 FF+2d, UG-27I-S01-A080, UG-13A-S14-A100 | 0d |  | F7 | UG-13A | UG-13A-S04 | A100 | 385.495905 |
| UG-13A-S04-A110 |  | Dewatering off, extract sheets, reinstate |  | 3d | 2027-08-02 | 2027-08-04 | UG-13A-S04-A100 SS+1d, UG-13A-S04-A100 FF+2d |  |  | F7 | UG-13A | UG-13A-S04 | A110 | 84.42319 |
|  | UG-13A-S03 | **UG-13A-S03 / HDPE-UG13A-S03-FSTI-CH006-(-4.15/-4.15)-6m / Tie-in / Sheet piles** |  |  | 2026-12-01 | 2027-08-03 |  |  |  |  |  |  |  |  |
| UG-13A-S03-A010 |  | Release: drawings, holds, access and gates | milestone | 0d | 2026-12-01 | 2026-12-01 |  | 111d | start on or after 2026-12-01 | F7 | UG-13A | UG-13A-S03 | A010 |  |
| UG-13A-S03-A020 |  | Set-out, crossing survey and working platform |  | 1d | 2027-04-10 | 2027-04-10 | UG-13A-S03-A010, UG-13A-S04-A030 SS | 0d |  | F7 | UG-13A | UG-13A-S03 | A020 | 6 |
| UG-13A-S03-A030 |  | Pipe-support piling from platform (incl. integrity tests) |  | 1d | 2027-04-11 | 2027-04-11 | UG-13A-S03-A020 SS+1d, UG-13A-S03-A020 FF+2d | 0d |  | F7 | UG-13A | UG-13A-S03 | A030 | 4 |
| UG-13A-S03-A040 |  | Install sheet piles (shored lengths) |  | 1d | 2027-04-12 | 2027-04-12 | UG-13A-S03-A030 SS+1d, UG-13A-S03-A030 FF+2d | 0d |  | F7 | UG-13A | UG-13A-S03 | A040 | 12 |
| UG-13A-S03-A050 |  | Install dewatering and draw down |  | 8d | 2027-04-13 | 2027-04-21 | UG-13A-S03-A040 SS+1d, UG-13A-S03-A040 FF+2d | 0d |  | F7 | UG-13A | UG-13A-S03 | A050 | 6 |
| UG-13A-S03-A060 |  | Excavate and strut to formation |  | 1d | 2027-04-24 | 2027-04-24 | UG-13A-S03-A050 SS+9d, UG-13A-S03-A050 FF+2d | 0d |  | F7 | UG-13A | UG-13A-S03 | A060 | 62.099936 |
| UG-13A-S03-A070 |  | Trim piles, blinding and piled slab (incl. cure) |  | 4d | 2027-04-24 | 2027-04-27 | UG-13A-S03-A060 SS+1d, UG-13A-S03-A060 FF+2d | 74d |  | F7 | UG-13A | UG-13A-S03 | A070 | 6 |
| UG-13A-S03-A080 |  | Lay and joint pipe (incl. fittings, tie-in) |  | 4d | 2027-07-21 | 2027-07-25 | UG-13A-S03-A070 SS+2d, UG-13A-S03-A070 FF+2d, UG-13A-S04-A080 | 0d |  | F7 | UG-13A | UG-13A-S03 | A080 | 6 |
| UG-13A-S03-A090 |  | Surround, joint test and line test |  | 3d | 2027-07-24 | 2027-07-26 | UG-13A-S03-A080 SS+2d, UG-13A-S03-A080 FF+2d | 3d |  | F7 | UG-13A | UG-13A-S03 | A090 | 6 |
| UG-13A-S03-A100 |  | Backfill to NG and remove struts |  | 1d | 2027-08-01 | 2027-08-01 | UG-13A-S03-A090 SS+2d, UG-13A-S03-A090 FF+2d, UG-27I-S01-A080 | 0d |  | F7 | UG-13A | UG-13A-S03 | A100 | 51.387574 |
| UG-13A-S03-A110 |  | Dewatering off, extract sheets, reinstate |  | 2d | 2027-08-02 | 2027-08-03 | UG-13A-S03-A100 SS+1d, UG-13A-S03-A100 FF+2d |  |  | F7 | UG-13A | UG-13A-S03 | A110 | 12 |

Notes:
- UG-13A-S04-A010: Notes: Front F7 / Line UG-13A / Package UG-13A-S04 / Workbook logic: gates: START, D_DLU
- UG-13A-S04-A020: Notes: Front F7 / Line UG-13A / Package UG-13A-S04 / Quantity 42 m / Workbook logic: FS from A010; UG-13A-S14-A030 (SS, set-out one package ahead of piling)
- UG-13A-S04-A030: Notes: Front F7 / Line UG-13A / Package UG-13A-S04 / Quantity 32 piles / Workbook logic: gate: D_PILEDES
- UG-13A-S04-A040: Notes: Front F7 / Line UG-13A / Package UG-13A-S04 / Quantity 84 m wall
- UG-13A-S04-A050: Notes: Front F7 / Line UG-13A / Package UG-13A-S04 / Quantity 42 m / Workbook logic: UG-13A-S14-A060 (FS, negative lag = own duration: drawdown complete when the excavation crew is free)
- UG-13A-S04-A060: Notes: Front F7 / Line UG-13A / Package UG-13A-S04 / Quantity 464 m3
- UG-13A-S04-A070: Notes: Front F7 / Line UG-13A / Package UG-13A-S04 / Quantity 42 m
- UG-13A-S04-A080: Notes: Front F7 / Line UG-13A / Package UG-13A-S04 / Quantity 42 m
- UG-13A-S04-A090: Notes: Front F7 / Line UG-13A / Package UG-13A-S04 / Quantity 42 m
- UG-13A-S04-A100: Notes: Front F7 / Line UG-13A / Package UG-13A-S04 / Quantity 385 m3 / Workbook logic: UG-27I-S01-A080 (FS, shared trench laid)
- UG-13A-S04-A110: Notes: Front F7 / Line UG-13A / Package UG-13A-S04 / Quantity 84 m wall
- UG-13A-S03-A010: Notes: Front F7 / Line UG-13A / Package UG-13A-S03 / Workbook logic: gates: START, D_DLU, structure ready
- UG-13A-S03-A020: Notes: Front F7 / Line UG-13A / Package UG-13A-S03 / Quantity 6 m / Workbook logic: FS from A010; UG-13A-S04-A030 (SS, tie-in team follows the adjacent run)
- UG-13A-S03-A030: Notes: Front F7 / Line UG-13A / Package UG-13A-S03 / Quantity 4 piles / Workbook logic: gate: D_PILEDES
- UG-13A-S03-A040: Notes: Front F7 / Line UG-13A / Package UG-13A-S03 / Quantity 12 m wall
- UG-13A-S03-A050: Notes: Front F7 / Line UG-13A / Package UG-13A-S03 / Quantity 6 m
- UG-13A-S03-A060: Notes: Front F7 / Line UG-13A / Package UG-13A-S03 / Quantity 62 m3
- UG-13A-S03-A070: Notes: Front F7 / Line UG-13A / Package UG-13A-S03 / Quantity 6 m
- UG-13A-S03-A080: Notes: Front F7 / Line UG-13A / Package UG-13A-S03 / Quantity 6 m / Workbook logic: UG-13A-S04-A080 (FS, closure)
- UG-13A-S03-A090: Notes: Front F7 / Line UG-13A / Package UG-13A-S03 / Quantity 6 m
- UG-13A-S03-A100: Notes: Front F7 / Line UG-13A / Package UG-13A-S03 / Quantity 51 m3 / Workbook logic: UG-27I-S01-A080 (FS, shared trench laid)
- UG-13A-S03-A110: Notes: Front F7 / Line UG-13A / Package UG-13A-S03 / Quantity 12 m wall

| ID | WBS | Activity | Type | Duration | Start | Finish | Predecessors | Free float | Constraint | Text1 | Text2 | Text3 | Text4 | Number1 |
| --- | --- | --- | --- | --- | --- | --- | --- | --- | --- | --- | --- | --- | --- | --- |
|  | UG-13A-S15 | **UG-13A-S15 / HDPE-UG13A-S15-FSTJ-EL029-(-5.40/-5.40)-29m / Tie-in / Sheet piles** |  |  | 2026-12-01 | 2027-06-21 |  |  |  |  |  |  |  |  |
| UG-13A-S15-A010 |  | Release: drawings, holds, access and gates | milestone | 0d | 2026-12-01 | 2026-12-01 |  | 93d | start on or after 2026-12-01 | F7 | UG-13A | UG-13A-S15 | A010 |  |
| UG-13A-S15-A020 |  | Set-out, crossing survey and working platform |  | 1d | 2027-03-20 | 2027-03-20 | UG-13A-S15-A010, UG-13A-S16-A030 SS | 0d |  | F7 | UG-13A | UG-13A-S15 | A020 | 29.195829 |
| UG-13A-S15-A030 |  | Pipe-support piling from platform (incl. integrity tests) |  | 3d | 2027-03-21 | 2027-03-23 | UG-13A-S15-A020 SS+1d, UG-13A-S15-A020 FF+2d | 0d |  | F7 | UG-13A | UG-13A-S15 | A030 | 11 |
| UG-13A-S15-A040 |  | Install sheet piles (shored lengths) |  | 3d | 2027-03-23 | 2027-03-25 | UG-13A-S15-A030 SS+2d, UG-13A-S15-A030 FF+2d | 0d |  | F7 | UG-13A | UG-13A-S15 | A040 | 58.391658 |
| UG-13A-S15-A050 |  | Install dewatering and draw down |  | 8d | 2027-03-25 | 2027-04-03 | UG-13A-S15-A040 SS+2d, UG-13A-S15-A040 FF+2d | 0d |  | F7 | UG-13A | UG-13A-S15 | A050 | 29.195829 |
| UG-13A-S15-A060 |  | Excavate and strut to formation |  | 2d | 2027-04-04 | 2027-04-05 | UG-13A-S15-A050 SS+9d, UG-13A-S15-A050 FF+2d | 0d |  | F7 | UG-13A | UG-13A-S15 | A060 | 411.660876 |
| UG-13A-S15-A070 |  | Trim piles, blinding and piled slab (incl. cure) |  | 6d | 2027-04-05 | 2027-04-11 | UG-13A-S15-A060 SS+1d, UG-13A-S15-A060 FF+2d | 56d |  | F7 | UG-13A | UG-13A-S15 | A070 | 29.195829 |
| UG-13A-S15-A080 |  | Lay and joint pipe (incl. fittings, tie-in) |  | 5d | 2027-06-13 | 2027-06-17 | UG-13A-S15-A070 SS+3d, UG-13A-S15-A070 FF+2d, UG-13A-S16-A080 | 0d |  | F7 | UG-13A | UG-13A-S15 | A080 | 29.195829 |
| UG-13A-S15-A090 |  | Surround, joint test and line test |  | 3d | 2027-06-15 | 2027-06-17 | UG-13A-S15-A080 SS+2d, UG-13A-S15-A080 FF+2d | 0d |  | F7 | UG-13A | UG-13A-S15 | A090 | 29.195829 |
| UG-13A-S15-A100 |  | Backfill to NG and remove struts |  | 2d | 2027-06-17 | 2027-06-19 | UG-13A-S15-A090 SS+2d, UG-13A-S15-A090 FF+2d | 0d |  | F7 | UG-13A | UG-13A-S15 | A100 | 359.534801 |
| UG-13A-S15-A110 |  | Dewatering off, extract sheets, reinstate |  | 3d | 2027-06-19 | 2027-06-21 | UG-13A-S15-A100 SS+1d, UG-13A-S15-A100 FF+2d |  |  | F7 | UG-13A | UG-13A-S15 | A110 | 58.391658 |
|  | UG-27I | **UG-27I** |  |  | 2026-12-01 | 2027-07-31 |  |  |  |  |  |  |  |  |
|  | UG-27I-S01 | **UG-27I-S01 / HDPE-UG27I-S01-SDCC-FSTI-(0.79/-4.00)-38m / Short connection / Mixed: 1 m sheet piles** |  |  | 2026-12-01 | 2027-07-31 |  |  |  |  |  |  |  |  |
| UG-27I-S01-A010 |  | Release: drawings, holds, access and gates | milestone | 0d | 2026-12-01 | 2026-12-01 |  | 0d | start on or after 2026-12-01 | F7 | UG-27I | UG-27I-S01 | A010 |  |
| UG-27I-S01-A020 |  | Set-out, crossing survey and working platform |  | 1d | 2026-12-01 | 2026-12-01 | UG-27I-S01-A010 | 0d |  | F7 | UG-27I | UG-27I-S01 | A020 | 37.587189 |
| UG-27I-S01-A030 |  | Pipe-support piling from platform (incl. integrity tests) |  | 6d | 2026-12-02 | 2026-12-08 | UG-27I-S01-A020 SS+1d, UG-27I-S01-A020 FF+2d | 0d |  | F7 | UG-27I | UG-27I-S01 | A030 | 28 |
| UG-27I-S01-A040 |  | Install sheet piles (shored lengths) |  | 1d | 2026-12-05 | 2026-12-05 | UG-27I-S01-A030 SS+3d, UG-27I-S01-A030 FF+2d | 0d |  | F7 | UG-27I | UG-27I-S01 | A040 | 1.679948 |
| UG-27I-S01-A050 |  | Install dewatering and draw down |  | 8d | 2026-12-06 | 2026-12-14 | UG-27I-S01-A040 SS+1d, UG-27I-S01-A040 FF+2d | 182d |  | F7 | UG-27I | UG-27I-S01 | A050 | 37.587189 |
| UG-27I-S01-A060 |  | Excavate and strut to formation |  | 3d | 2027-07-17 | 2027-07-19 | UG-27I-S01-A050 SS+9d, UG-27I-S01-A050 FF+2d, UG-13A-S09-A100, UG-13A-S10-A100, UG-13A-S14-A100, UG-13A-S03-A060 SS, UG-13A-S04-A060 SS | 0d |  | F7 | UG-27I | UG-27I-S01 | A060 | 974.908294 |
| UG-27I-S01-A070 |  | Trim piles, blinding and piled slab (incl. cure) |  | 7d | 2027-07-18 | 2027-07-25 | UG-27I-S01-A060 SS+2d, UG-27I-S01-A060 FF+2d | 0d |  | F7 | UG-27I | UG-27I-S01 | A070 | 37.587189 |
| UG-27I-S01-A080 |  | Lay and joint pipe (incl. fittings, tie-in) |  | 9d | 2027-07-21 | 2027-07-31 | UG-27I-S01-A070 SS+3d, UG-27I-S01-A070 FF+2d | 0d |  | F7 | UG-27I | UG-27I-S01 | A080 | 37.587189 |
| UG-27I-S01-A090 |  | Surround, joint test and line test |  | 3d | 2027-07-25 | 2027-07-27 | UG-27I-S01-A080 SS+3d, UG-27I-S01-A080 FF+2d | 0d |  | F7 | UG-27I | UG-27I-S01 | A090 | 37.587189 |
| UG-27I-S01-A100 |  | Backfill to NG and remove struts |  | 3d | 2027-07-27 | 2027-07-29 | UG-27I-S01-A090 SS+2d, UG-27I-S01-A090 FF+2d, UG-13A-S03-A080, UG-13A-S04-A080 | 0d |  | F7 | UG-27I | UG-27I-S01 | A100 | 861.088314 |
| UG-27I-S01-A110 |  | Dewatering off, extract sheets, reinstate |  | 2d | 2027-07-29 | 2027-07-31 | UG-27I-S01-A100 SS+2d, UG-27I-S01-A100 FF+2d |  |  | F7 | UG-27I | UG-27I-S01 | A110 | 1.679948 |

Notes:
- UG-13A-S15-A010: Notes: Front F7 / Line UG-13A / Package UG-13A-S15 / Workbook logic: gates: START, D_DLU, structure ready
- UG-13A-S15-A020: Notes: Front F7 / Line UG-13A / Package UG-13A-S15 / Quantity 29 m / Workbook logic: FS from A010; UG-13A-S16-A030 (SS, tie-in team follows the adjacent run)
- UG-13A-S15-A030: Notes: Front F7 / Line UG-13A / Package UG-13A-S15 / Quantity 11 piles / Workbook logic: gate: D_PILEDES
- UG-13A-S15-A040: Notes: Front F7 / Line UG-13A / Package UG-13A-S15 / Quantity 58 m wall
- UG-13A-S15-A050: Notes: Front F7 / Line UG-13A / Package UG-13A-S15 / Quantity 29 m
- UG-13A-S15-A060: Notes: Front F7 / Line UG-13A / Package UG-13A-S15 / Quantity 412 m3
- UG-13A-S15-A070: Notes: Front F7 / Line UG-13A / Package UG-13A-S15 / Quantity 29 m
- UG-13A-S15-A080: Notes: Front F7 / Line UG-13A / Package UG-13A-S15 / Quantity 29 m / Workbook logic: UG-13A-S16-A080 (FS, closure)
- UG-13A-S15-A090: Notes: Front F7 / Line UG-13A / Package UG-13A-S15 / Quantity 29 m
- UG-13A-S15-A100: Notes: Front F7 / Line UG-13A / Package UG-13A-S15 / Quantity 360 m3
- UG-13A-S15-A110: Notes: Front F7 / Line UG-13A / Package UG-13A-S15 / Quantity 58 m wall
- UG-27I-S01-A010: Notes: Front F7 / Line UG-27I / Package UG-27I-S01 / Workbook logic: gates: START, D_DLU, structure ready
- UG-27I-S01-A020: Notes: Front F7 / Line UG-27I / Package UG-27I-S01 / Quantity 38 m / Workbook logic: FS from A010
- UG-27I-S01-A030: Notes: Front F7 / Line UG-27I / Package UG-27I-S01 / Quantity 28 piles / Workbook logic: gate: D_PILEDES
- UG-27I-S01-A040: Notes: Front F7 / Line UG-27I / Package UG-27I-S01 / Quantity 2 m wall
- UG-27I-S01-A050: Notes: Front F7 / Line UG-27I / Package UG-27I-S01 / Quantity 38 m
- UG-27I-S01-A060: Notes: Front F7 / Line UG-27I / Package UG-27I-S01 / Quantity 975 m3 / Workbook logic: UG-13A-S09-A100 (FS, deeper first); UG-13A-S10-A100 (FS, deeper first); UG-13A-S14-A100 (FS, deeper first); UG-13A-S03-A060 (SS, shared trench); UG-13A-S04-A060 (SS, shared trench)
- UG-27I-S01-A070: Notes: Front F7 / Line UG-27I / Package UG-27I-S01 / Quantity 38 m
- UG-27I-S01-A080: Notes: Front F7 / Line UG-27I / Package UG-27I-S01 / Quantity 38 m
- UG-27I-S01-A090: Notes: Front F7 / Line UG-27I / Package UG-27I-S01 / Quantity 38 m
- UG-27I-S01-A100: Notes: Front F7 / Line UG-27I / Package UG-27I-S01 / Quantity 861 m3 / Workbook logic: UG-13A-S03-A080 (FS, shared trench laid); UG-13A-S04-A080 (FS, shared trench laid)
- UG-27I-S01-A110: Notes: Front F7 / Line UG-27I / Package UG-27I-S01 / Quantity 2 m wall

| ID | WBS | Activity | Type | Duration | Start | Finish | Predecessors | Free float | Constraint | Text1 | Text2 | Text3 | Text4 | Number1 |
| --- | --- | --- | --- | --- | --- | --- | --- | --- | --- | --- | --- | --- | --- | --- |
|  | F8 | **F8 Effluent, outfall & CCT links** |  |  | 2026-12-01 | 2027-07-03 |  |  |  |  |  |  |  |  |
|  | UG-21 | **UG-21** |  |  | 2026-12-01 | 2026-12-27 |  |  |  |  |  |  |  |  |
|  | UG-21-S01 | **UG-21-S01 / GRP-UG21-S01-CCT-WFT-(-6.24/-6.24)-12m / Short connection / Sheet piles** |  |  | 2026-12-01 | 2026-12-27 |  |  |  |  |  |  |  |  |
| UG-21-S01-A010 |  | Release: drawings, holds, access and gates | milestone | 0d | 2026-12-01 | 2026-12-01 |  | 0d | start on or after 2026-12-01 | F8 | UG-21 | UG-21-S01 | A010 |  |
| UG-21-S01-A020 |  | Set-out, crossing survey and working platform |  | 1d | 2026-12-01 | 2026-12-01 | UG-21-S01-A010 | 0d |  | F8 | UG-21 | UG-21-S01 | A020 | 12.20259 |
| UG-21-S01-A030 |  | Pipe-support piling from platform (incl. integrity tests) |  | 2d | 2026-12-02 | 2026-12-03 | UG-21-S01-A020 SS+1d, UG-21-S01-A020 FF+2d | 0d |  | F8 | UG-21 | UG-21-S01 | A030 | 12 |
| UG-21-S01-A040 |  | Install sheet piles (shored lengths) |  | 1d | 2026-12-03 | 2026-12-03 | UG-21-S01-A030 SS+1d, UG-21-S01-A030 FF+2d | 0d |  | F8 | UG-21 | UG-21-S01 | A040 | 24.40518 |
| UG-21-S01-A050 |  | Install dewatering and draw down |  | 8d | 2026-12-05 | 2026-12-13 | UG-21-S01-A040 SS+1d, UG-21-S01-A040 FF+2d | 0d |  | F8 | UG-21 | UG-21-S01 | A050 | 12.20259 |
| UG-21-S01-A060 |  | Excavate and strut to formation |  | 1d | 2026-12-14 | 2026-12-14 | UG-21-S01-A050 SS+9d, UG-21-S01-A050 FF+2d | 0d |  | F8 | UG-21 | UG-21-S01 | A060 | 289.000566 |
| UG-21-S01-A070 |  | Trim piles, blinding and piled slab (incl. cure) |  | 4d | 2026-12-15 | 2026-12-19 | UG-21-S01-A060 SS+1d, UG-21-S01-A060 FF+2d | 0d |  | F8 | UG-21 | UG-21-S01 | A070 | 12.20259 |
| UG-21-S01-A080 |  | Lay and joint pipe (incl. fittings, tie-in) |  | 4d | 2026-12-17 | 2026-12-21 | UG-21-S01-A070 SS+2d, UG-21-S01-A070 FF+2d | 0d |  | F8 | UG-21 | UG-21-S01 | A080 | 12.20259 |
| UG-21-S01-A090 |  | Surround, joint test and line test |  | 3d | 2026-12-19 | 2026-12-21 | UG-21-S01-A080 SS+2d, UG-21-S01-A080 FF+2d | 1d |  | F8 | UG-21 | UG-21-S01 | A090 | 12.20259 |
| UG-21-S01-A100 |  | Backfill to NG and remove struts |  | 1d | 2026-12-24 | 2026-12-24 | UG-21-S01-A090 SS+2d, UG-21-S01-A090 FF+2d, UG-22-S01-A080, UG-28-S02-A080 | 0d |  | F8 | UG-21 | UG-21-S01 | A100 | 219.346685 |
| UG-21-S01-A110 |  | Dewatering off, extract sheets, reinstate |  | 2d | 2026-12-26 | 2026-12-27 | UG-21-S01-A100 SS+1d, UG-21-S01-A100 FF+2d |  |  | F8 | UG-21 | UG-21-S01 | A110 | 24.40518 |
|  | UG-22 | **UG-22** |  |  | 2026-12-01 | 2026-12-27 |  |  |  |  |  |  |  |  |
|  | UG-22-S01 | **UG-22-S01 / GRP-UG22-S01-CCT-WFT-(-6.24/-6.24)-12m / Short connection / Sheet piles** |  |  | 2026-12-01 | 2026-12-27 |  |  |  |  |  |  |  |  |
| UG-22-S01-A010 |  | Release: drawings, holds, access and gates | milestone | 0d | 2026-12-01 | 2026-12-01 |  | 0d | start on or after 2026-12-01 | F8 | UG-22 | UG-22-S01 | A010 |  |
| UG-22-S01-A020 |  | Set-out, crossing survey and working platform |  | 1d | 2026-12-01 | 2026-12-01 | UG-22-S01-A010 | 0d |  | F8 | UG-22 | UG-22-S01 | A020 | 12.21039 |
| UG-22-S01-A030 |  | Pipe-support piling from platform (incl. integrity tests) |  | 2d | 2026-12-02 | 2026-12-03 | UG-22-S01-A020 SS+1d, UG-22-S01-A020 FF+2d | 0d |  | F8 | UG-22 | UG-22-S01 | A030 | 12 |
| UG-22-S01-A040 |  | Install sheet piles (shored lengths) |  | 1d | 2026-12-03 | 2026-12-03 | UG-22-S01-A030 SS+1d, UG-22-S01-A030 FF+2d | 0d |  | F8 | UG-22 | UG-22-S01 | A040 | 24.42078 |
| UG-22-S01-A050 |  | Install dewatering and draw down |  | 8d | 2026-12-05 | 2026-12-13 | UG-22-S01-A040 SS+1d, UG-22-S01-A040 FF+2d | 0d |  | F8 | UG-22 | UG-22-S01 | A050 | 12.21039 |
| UG-22-S01-A060 |  | Excavate and strut to formation |  | 1d | 2026-12-14 | 2026-12-14 | UG-22-S01-A050 SS+9d, UG-22-S01-A050 FF+2d, UG-21-S01-A060 SS | 0d |  | F8 | UG-22 | UG-22-S01 | A060 | 289.185279 |
| UG-22-S01-A070 |  | Trim piles, blinding and piled slab (incl. cure) |  | 4d | 2026-12-15 | 2026-12-19 | UG-22-S01-A060 SS+1d, UG-22-S01-A060 FF+2d | 0d |  | F8 | UG-22 | UG-22-S01 | A070 | 12.21039 |
| UG-22-S01-A080 |  | Lay and joint pipe (incl. fittings, tie-in) |  | 4d | 2026-12-17 | 2026-12-21 | UG-22-S01-A070 SS+2d, UG-22-S01-A070 FF+2d | 0d |  | F8 | UG-22 | UG-22-S01 | A080 | 12.21039 |
| UG-22-S01-A090 |  | Surround, joint test and line test |  | 3d | 2026-12-19 | 2026-12-21 | UG-22-S01-A080 SS+2d, UG-22-S01-A080 FF+2d | 1d |  | F8 | UG-22 | UG-22-S01 | A090 | 12.21039 |
| UG-22-S01-A100 |  | Backfill to NG and remove struts |  | 1d | 2026-12-24 | 2026-12-24 | UG-22-S01-A090 SS+2d, UG-22-S01-A090 FF+2d, UG-21-S01-A080, UG-28-S02-A080 | 0d |  | F8 | UG-22 | UG-22-S01 | A100 | 219.486884 |
| UG-22-S01-A110 |  | Dewatering off, extract sheets, reinstate |  | 2d | 2026-12-26 | 2026-12-27 | UG-22-S01-A100 SS+1d, UG-22-S01-A100 FF+2d |  |  | F8 | UG-22 | UG-22-S01 | A110 | 24.42078 |

Notes:
- UG-21-S01-A010: Notes: Front F8 / Line UG-21 / Package UG-21-S01 / Workbook logic: gates: START, D_DLU, structure ready
- UG-21-S01-A020: Notes: Front F8 / Line UG-21 / Package UG-21-S01 / Quantity 12 m / Workbook logic: FS from A010
- UG-21-S01-A030: Notes: Front F8 / Line UG-21 / Package UG-21-S01 / Quantity 12 piles / Workbook logic: gate: D_PILEDES
- UG-21-S01-A040: Notes: Front F8 / Line UG-21 / Package UG-21-S01 / Quantity 24 m wall
- UG-21-S01-A050: Notes: Front F8 / Line UG-21 / Package UG-21-S01 / Quantity 12 m
- UG-21-S01-A060: Notes: Front F8 / Line UG-21 / Package UG-21-S01 / Quantity 289 m3
- UG-21-S01-A070: Notes: Front F8 / Line UG-21 / Package UG-21-S01 / Quantity 12 m
- UG-21-S01-A080: Notes: Front F8 / Line UG-21 / Package UG-21-S01 / Quantity 12 m
- UG-21-S01-A090: Notes: Front F8 / Line UG-21 / Package UG-21-S01 / Quantity 12 m
- UG-21-S01-A100: Notes: Front F8 / Line UG-21 / Package UG-21-S01 / Quantity 219 m3 / Workbook logic: UG-22-S01-A080 (FS, shared trench laid); UG-28-S02-A080 (FS, shared trench laid)
- UG-21-S01-A110: Notes: Front F8 / Line UG-21 / Package UG-21-S01 / Quantity 24 m wall
- UG-22-S01-A010: Notes: Front F8 / Line UG-22 / Package UG-22-S01 / Workbook logic: gates: START, D_DLU, structure ready
- UG-22-S01-A020: Notes: Front F8 / Line UG-22 / Package UG-22-S01 / Quantity 12 m / Workbook logic: FS from A010
- UG-22-S01-A030: Notes: Front F8 / Line UG-22 / Package UG-22-S01 / Quantity 12 piles / Workbook logic: gate: D_PILEDES
- UG-22-S01-A040: Notes: Front F8 / Line UG-22 / Package UG-22-S01 / Quantity 24 m wall
- UG-22-S01-A050: Notes: Front F8 / Line UG-22 / Package UG-22-S01 / Quantity 12 m
- UG-22-S01-A060: Notes: Front F8 / Line UG-22 / Package UG-22-S01 / Quantity 289 m3 / Workbook logic: UG-21-S01-A060 (SS, shared trench)
- UG-22-S01-A070: Notes: Front F8 / Line UG-22 / Package UG-22-S01 / Quantity 12 m
- UG-22-S01-A080: Notes: Front F8 / Line UG-22 / Package UG-22-S01 / Quantity 12 m
- UG-22-S01-A090: Notes: Front F8 / Line UG-22 / Package UG-22-S01 / Quantity 12 m
- UG-22-S01-A100: Notes: Front F8 / Line UG-22 / Package UG-22-S01 / Quantity 219 m3 / Workbook logic: UG-21-S01-A080 (FS, shared trench laid); UG-28-S02-A080 (FS, shared trench laid)
- UG-22-S01-A110: Notes: Front F8 / Line UG-22 / Package UG-22-S01 / Quantity 24 m wall

| ID | WBS | Activity | Type | Duration | Start | Finish | Predecessors | Free float | Constraint | Text1 | Text2 | Text3 | Text4 | Number1 |
| --- | --- | --- | --- | --- | --- | --- | --- | --- | --- | --- | --- | --- | --- | --- |
|  | UG-28 | **UG-28** |  |  | 2026-12-01 | 2027-03-17 |  |  |  |  |  |  |  |  |
|  | UG-28-S02 | **UG-28-S02 / HDPE-UG28-S02-CCT-WFT-(-5.60/-5.60)-12m / Short connection / Sheet piles** |  |  | 2026-12-01 | 2026-12-24 |  |  |  |  |  |  |  |  |
| UG-28-S02-A010 |  | Release: drawings, holds, access and gates | milestone | 0d | 2026-12-01 | 2026-12-01 |  | 0d | start on or after 2026-12-01 | F8 | UG-28 | UG-28-S02 | A010 |  |
| UG-28-S02-A020 |  | Set-out, crossing survey and working platform |  | 1d | 2026-12-01 | 2026-12-01 | UG-28-S02-A010 | 0d |  | F8 | UG-28 | UG-28-S02 | A020 | 12.445426 |
| UG-28-S02-A030 |  | Pipe-support piling from platform (incl. integrity tests) |  | 1d | 2026-12-02 | 2026-12-02 | UG-28-S02-A020 SS+1d, UG-28-S02-A020 FF+2d | 0d |  | F8 | UG-28 | UG-28-S02 | A030 | 6 |
| UG-28-S02-A040 |  | Install sheet piles (shored lengths) |  | 1d | 2026-12-03 | 2026-12-03 | UG-28-S02-A030 SS+1d, UG-28-S02-A030 FF+2d | 0d |  | F8 | UG-28 | UG-28-S02 | A040 | 24.890853 |
| UG-28-S02-A050 |  | Install dewatering and draw down |  | 8d | 2026-12-05 | 2026-12-13 | UG-28-S02-A040 SS+1d, UG-28-S02-A040 FF+2d | 0d |  | F8 | UG-28 | UG-28-S02 | A050 | 12.445426 |
| UG-28-S02-A060 |  | Excavate and strut to formation |  | 1d | 2026-12-14 | 2026-12-14 | UG-28-S02-A050 SS+9d, UG-28-S02-A050 FF+2d, UG-21-S01-A060 SS, UG-22-S01-A060 SS | 0d |  | F8 | UG-28 | UG-28-S02 | A060 | 152.456469 |
| UG-28-S02-A070 |  | Trim piles, blinding and piled slab (incl. cure) |  | 4d | 2026-12-15 | 2026-12-19 | UG-28-S02-A060 SS+1d, UG-28-S02-A060 FF+2d | 0d |  | F8 | UG-28 | UG-28-S02 | A070 | 12.445426 |
| UG-28-S02-A080 |  | Lay and joint pipe (incl. fittings, tie-in) |  | 6d | 2026-12-17 | 2026-12-23 | UG-28-S02-A070 SS+2d, UG-28-S02-A070 FF+2d | 0d |  | F8 | UG-28 | UG-28-S02 | A080 | 12.445426 |
| UG-28-S02-A090 |  | Surround, joint test and line test |  | 3d | 2026-12-20 | 2026-12-22 | UG-28-S02-A080 SS+3d, UG-28-S02-A080 FF+2d | 0d |  | F8 | UG-28 | UG-28-S02 | A090 | 12.445426 |
| UG-28-S02-A100 |  | Backfill to NG and remove struts |  | 1d | 2026-12-22 | 2026-12-22 | UG-28-S02-A090 SS+2d, UG-28-S02-A090 FF+2d, UG-21-S01-A080, UG-22-S01-A080 | 0d |  | F8 | UG-28 | UG-28-S02 | A100 | 140.678746 |
| UG-28-S02-A110 |  | Dewatering off, extract sheets, reinstate |  | 2d | 2026-12-23 | 2026-12-24 | UG-28-S02-A100 SS+1d, UG-28-S02-A100 FF+2d |  |  | F8 | UG-28 | UG-28-S02 | A110 | 24.890853 |
|  | UG-28-S01 | **UG-28-S01 / HDPE-UG28-S01-CCT-CCT-(-0.64/-0.64)-1m / Short connection / Open cut** |  |  | 2026-12-01 | 2027-03-17 |  |  |  |  |  |  |  |  |
| UG-28-S01-A010 |  | Release: drawings, holds, access and gates | milestone | 0d | 2026-12-01 | 2026-12-01 |  | 0d | start on or after 2026-12-01 | F8 | UG-28 | UG-28-S01 | A010 |  |
| UG-28-S01-A020 |  | Set-out, crossing survey and working platform |  | 1d | 2026-12-01 | 2026-12-01 | UG-28-S01-A010 | 0d |  | F8 | UG-28 | UG-28-S01 | A020 | 1.100001 |
| UG-28-S01-A030 |  | Pipe-support piling from platform (incl. integrity tests) |  | 1d | 2026-12-02 | 2026-12-02 | UG-28-S01-A020 SS+1d, UG-28-S01-A020 FF+2d | 78d |  | F8 | UG-28 | UG-28-S01 | A030 | 2 |
| UG-28-S01-A060 |  | Excavate and strut to formation |  | 1d | 2027-03-06 | 2027-03-06 | UG-10-S02-A100, UG-10-S03-A100, UG-21-S01-A100, UG-22-S01-A100, UG-28-S01-A030 SS+1d, UG-28-S01-A030 SF+3d, UG-28-S01-A030 FF+2d | 0d |  | F8 | UG-28 | UG-28-S01 | A060 | 0 |
| UG-28-S01-A070 |  | Trim piles, blinding and piled slab (incl. cure) |  | 4d | 2027-03-06 | 2027-03-09 | UG-28-S01-A060 SS+1d, UG-28-S01-A060 FF+2d | 0d |  | F8 | UG-28 | UG-28-S01 | A070 | 1.100001 |
| UG-28-S01-A080 |  | Lay and joint pipe (incl. fittings, tie-in) |  | 4d | 2027-03-08 | 2027-03-11 | UG-28-S01-A070 SS+2d, UG-28-S01-A070 FF+2d | 0d |  | F8 | UG-28 | UG-28-S01 | A080 | 1.100001 |
| UG-28-S01-A090 |  | Surround, joint test and line test |  | 3d | 2027-03-10 | 2027-03-13 | UG-28-S01-A080 SS+2d, UG-28-S01-A080 FF+2d | 2d |  | F8 | UG-28 | UG-28-S01 | A090 | 1.100001 |
| UG-28-S01-A100 |  | Backfill to NG and remove struts |  | 1d | 2027-03-17 | 2027-03-17 | UG-28-S01-A090 SS+2d, UG-28-S01-A090 FF+2d, UG-28A-S01-A080 |  |  | F8 | UG-28 | UG-28-S01 | A100 | 0 |
|  | UG-15 | **UG-15** |  |  | 2026-12-01 | 2027-01-10 |  |  |  |  |  |  |  |  |
|  | UG-15-S01 | **UG-15-S01 / GRP-UG15-S01-FSTA-CH049-(-5.03/-5.33)-49m / Run / Sheet piles** |  |  | 2026-12-01 | 2027-01-10 |  |  |  |  |  |  |  |  |
| UG-15-S01-A010 |  | Release: drawings, holds, access and gates | milestone | 0d | 2026-12-01 | 2026-12-01 |  | 0d | start on or after 2026-12-01 | F8 | UG-15 | UG-15-S01 | A010 |  |
| UG-15-S01-A020 |  | Set-out, crossing survey and working platform |  | 1d | 2026-12-01 | 2026-12-01 | UG-15-S01-A010 | 0d |  | F8 | UG-15 | UG-15-S01 | A020 | 49.3 |
| UG-15-S01-A030 |  | Pipe-support piling from platform (incl. integrity tests) |  | 4d | 2026-12-02 | 2026-12-06 | UG-15-S01-A020 SS+1d, UG-15-S01-A020 FF+2d | 0d |  | F8 | UG-15 | UG-15-S01 | A030 | 36 |
| UG-15-S01-A040 |  | Install sheet piles (shored lengths) |  | 2d | 2026-12-05 | 2026-12-06 | UG-15-S01-A030 SS+2d, UG-15-S01-A030 FF+2d | 0d |  | F8 | UG-15 | UG-15-S01 | A040 | 98.6 |
| UG-15-S01-A050 |  | Install dewatering and draw down |  | 9d | 2026-12-05 | 2026-12-14 | UG-15-S01-A040 SS+1d, UG-15-S01-A040 FF+2d | 0d |  | F8 | UG-15 | UG-15-S01 | A050 | 49.3 |
| UG-15-S01-A060 |  | Excavate and strut to formation |  | 2d | 2026-12-15 | 2026-12-16 | UG-15-S01-A050 SS+9d, UG-15-S01-A050 FF+2d | 0d |  | F8 | UG-15 | UG-15-S01 | A060 | 920.863397 |
| UG-15-S01-A070 |  | Trim piles, blinding and piled slab (incl. cure) |  | 6d | 2026-12-16 | 2026-12-22 | UG-15-S01-A060 SS+1d, UG-15-S01-A060 FF+2d | 0d |  | F8 | UG-15 | UG-15-S01 | A070 | 49.3 |
| UG-15-S01-A080 |  | Lay and joint pipe (incl. fittings, tie-in) |  | 3d | 2026-12-19 | 2026-12-21 | UG-15-S01-A070 SS+3d, UG-15-S01-A070 FF+2d | 0d |  | F8 | UG-15 | UG-15-S01 | A080 | 49.3 |
| UG-15-S01-A090 |  | Surround, joint test and line test |  | 3d | 2026-12-21 | 2026-12-23 | UG-15-S01-A080 SS+2d, UG-15-S01-A080 FF+2d | 10d |  | F8 | UG-15 | UG-15-S01 | A090 | 49.3 |
| UG-15-S01-A100 |  | Backfill to NG and remove struts |  | 1d | 2027-01-06 | 2027-01-06 | UG-15-S01-A090 SS+2d, UG-15-S01-A090 FF+2d, UG-15A-S06-A080, UG-15A-S09-A080, UG-15A-S10-A080 | 0d |  | F8 | UG-15 | UG-15-S01 | A100 | 683.962818 |
| UG-15-S01-A110 |  | Dewatering off, extract sheets, reinstate |  | 3d | 2027-01-07 | 2027-01-10 | UG-15-S01-A100 SS+1d, UG-15-S01-A100 FF+2d |  |  | F8 | UG-15 | UG-15-S01 | A110 | 98.6 |

Notes:
- UG-28-S02-A010: Notes: Front F8 / Line UG-28 / Package UG-28-S02 / Workbook logic: gates: START, D_DLU, structure ready
- UG-28-S02-A020: Notes: Front F8 / Line UG-28 / Package UG-28-S02 / Quantity 12 m / Workbook logic: FS from A010
- UG-28-S02-A030: Notes: Front F8 / Line UG-28 / Package UG-28-S02 / Quantity 6 piles / Workbook logic: gate: D_PILEDES
- UG-28-S02-A040: Notes: Front F8 / Line UG-28 / Package UG-28-S02 / Quantity 25 m wall
- UG-28-S02-A050: Notes: Front F8 / Line UG-28 / Package UG-28-S02 / Quantity 12 m
- UG-28-S02-A060: Notes: Front F8 / Line UG-28 / Package UG-28-S02 / Quantity 152 m3 / Workbook logic: UG-21-S01-A060 (SS, shared trench); UG-22-S01-A060 (SS, shared trench)
- UG-28-S02-A070: Notes: Front F8 / Line UG-28 / Package UG-28-S02 / Quantity 12 m
- UG-28-S02-A080: Notes: Front F8 / Line UG-28 / Package UG-28-S02 / Quantity 12 m
- UG-28-S02-A090: Notes: Front F8 / Line UG-28 / Package UG-28-S02 / Quantity 12 m
- UG-28-S02-A100: Notes: Front F8 / Line UG-28 / Package UG-28-S02 / Quantity 141 m3 / Workbook logic: UG-21-S01-A080 (FS, shared trench laid); UG-22-S01-A080 (FS, shared trench laid)
- UG-28-S02-A110: Notes: Front F8 / Line UG-28 / Package UG-28-S02 / Quantity 25 m wall
- UG-28-S01-A010: Notes: Front F8 / Line UG-28 / Package UG-28-S01 / Workbook logic: gates: START, D_DLU, structure ready
- UG-28-S01-A020: Notes: Front F8 / Line UG-28 / Package UG-28-S01 / Quantity 1 m / Workbook logic: FS from A010
- UG-28-S01-A030: Notes: Front F8 / Line UG-28 / Package UG-28-S01 / Quantity 2 piles / Workbook logic: gate: D_PILEDES
- UG-28-S01-A060: Notes: Front F8 / Line UG-28 / Package UG-28-S01 / Quantity 0 m3 / Workbook logic: UG-10-S02-A100 (FS, deeper first); UG-10-S03-A100 (FS, deeper first); UG-21-S01-A100 (FS, deeper first); UG-22-S01-A100 (FS, deeper first)
- UG-28-S01-A070: Notes: Front F8 / Line UG-28 / Package UG-28-S01 / Quantity 1 m
- UG-28-S01-A080: Notes: Front F8 / Line UG-28 / Package UG-28-S01 / Quantity 1 m
- UG-28-S01-A090: Notes: Front F8 / Line UG-28 / Package UG-28-S01 / Quantity 1 m
- UG-28-S01-A100: Notes: Front F8 / Line UG-28 / Package UG-28-S01 / Quantity 0 m3 / Workbook logic: UG-28A-S01-A080 (FS, shared trench laid)
- UG-15-S01-A010: Notes: Front F8 / Line UG-15 / Package UG-15-S01 / Workbook logic: gates: START, D_DLU
- UG-15-S01-A020: Notes: Front F8 / Line UG-15 / Package UG-15-S01 / Quantity 49 m / Workbook logic: FS from A010
- UG-15-S01-A030: Notes: Front F8 / Line UG-15 / Package UG-15-S01 / Quantity 36 piles / Workbook logic: gate: D_PILEDES
- UG-15-S01-A040: Notes: Front F8 / Line UG-15 / Package UG-15-S01 / Quantity 99 m wall
- UG-15-S01-A050: Notes: Front F8 / Line UG-15 / Package UG-15-S01 / Quantity 49 m
- UG-15-S01-A060: Notes: Front F8 / Line UG-15 / Package UG-15-S01 / Quantity 921 m3
- UG-15-S01-A070: Notes: Front F8 / Line UG-15 / Package UG-15-S01 / Quantity 49 m
- UG-15-S01-A080: Notes: Front F8 / Line UG-15 / Package UG-15-S01 / Quantity 49 m
- UG-15-S01-A090: Notes: Front F8 / Line UG-15 / Package UG-15-S01 / Quantity 49 m
- UG-15-S01-A100: Notes: Front F8 / Line UG-15 / Package UG-15-S01 / Quantity 684 m3 / Workbook logic: UG-15A-S06-A080 (FS, shared trench laid); UG-15A-S09-A080 (FS, shared trench laid); UG-15A-S10-A080 (FS, shared trench laid)
- UG-15-S01-A110: Notes: Front F8 / Line UG-15 / Package UG-15-S01 / Quantity 99 m wall

| ID | WBS | Activity | Type | Duration | Start | Finish | Predecessors | Free float | Constraint | Text1 | Text2 | Text3 | Text4 | Number1 |
| --- | --- | --- | --- | --- | --- | --- | --- | --- | --- | --- | --- | --- | --- | --- |
|  | UG-15A | **UG-15A** |  |  | 2026-12-01 | 2027-06-23 |  |  |  |  |  |  |  |  |
|  | UG-15A-S10 | **UG-15A-S10 / HDPE-UG15A-S10-EL001-CCT-(-4.82/-4.84)-6m / Run / Sheet piles** |  |  | 2026-12-01 | 2027-01-19 |  |  |  |  |  |  |  |  |
| UG-15A-S10-A010 |  | Release: drawings, holds, access and gates | milestone | 0d | 2026-12-01 | 2026-12-01 |  | 1d | start on or after 2026-12-01 | F8 | UG-15A | UG-15A-S10 | A010 |  |
| UG-15A-S10-A020 |  | Set-out, crossing survey and working platform |  | 1d | 2026-12-02 | 2026-12-02 | UG-15A-S10-A010, UG-15-S01-A030 SS | 2d |  | F8 | UG-15A | UG-15A-S10 | A020 | 6.312461 |
| UG-15A-S10-A030 |  | Pipe-support piling from platform (incl. integrity tests) |  | 1d | 2026-12-07 | 2026-12-07 | UG-15A-S10-A020 SS+1d, UG-15A-S10-A020 FF+2d, UG-15-S01-A030 | 0d |  | F8 | UG-15A | UG-15A-S10 | A030 | 8 |
| UG-15A-S10-A040 |  | Install sheet piles (shored lengths) |  | 1d | 2026-12-09 | 2026-12-09 | UG-15A-S10-A030 SS+1d, UG-15A-S10-A030 FF+2d, UG-15-S01-A040 | 0d |  | F8 | UG-15A | UG-15A-S10 | A040 | 12.624923 |
| UG-15A-S10-A050 |  | Install dewatering and draw down |  | 8d | 2026-12-10 | 2026-12-19 | UG-15A-S10-A040 SS+1d, UG-15A-S10-A040 FF+2d, UG-15-S01-A060 FS-8d | 0d |  | F8 | UG-15A | UG-15A-S10 | A050 | 6.312461 |
| UG-15A-S10-A060 |  | Excavate and strut to formation |  | 1d | 2026-12-20 | 2026-12-20 | UG-15A-S10-A050 SS+9d, UG-15A-S10-A050 FF+2d, UG-15-S01-A060 SS, UG-15-S01-A060 | 2d |  | F8 | UG-15A | UG-15A-S10 | A060 | 83.771846 |
| UG-15A-S10-A070 |  | Trim piles, blinding and piled slab (incl. cure) |  | 4d | 2026-12-23 | 2026-12-27 | UG-15A-S10-A060 SS+1d, UG-15A-S10-A060 FF+2d, UG-15-S01-A070 | 0d |  | F8 | UG-15A | UG-15A-S10 | A070 | 6.312461 |
| UG-15A-S10-A080 |  | Lay and joint pipe (incl. fittings, tie-in) |  | 1d | 2026-12-26 | 2026-12-26 | UG-15A-S10-A070 SS+2d, UG-15A-S10-A070 FF+2d, UG-15-S01-A080 | 0d |  | F8 | UG-15A | UG-15A-S10 | A080 | 6.312461 |
| UG-15A-S10-A090 |  | Surround, joint test and line test |  | 3d | 2026-12-26 | 2026-12-28 | UG-15A-S10-A080 SS+1d, UG-15A-S10-A080 FF+2d | 15d |  | F8 | UG-15A | UG-15A-S10 | A090 | 6.312461 |
| UG-15A-S10-A100 |  | Backfill to NG and remove struts |  | 1d | 2027-01-17 | 2027-01-17 | UG-15A-S10-A090 SS+2d, UG-15A-S10-A090 FF+2d, UG-15-S01-A080, UG-17-S02-A080, UG-15-S01-A100 | 0d |  | F8 | UG-15A | UG-15A-S10 | A100 | 69.501303 |
| UG-15A-S10-A110 |  | Dewatering off, extract sheets, reinstate |  | 2d | 2027-01-18 | 2027-01-19 | UG-15A-S10-A100 SS+1d, UG-15A-S10-A100 FF+2d |  |  | F8 | UG-15A | UG-15A-S10 | A110 | 12.624923 |
|  | UG-15A-S09 | **UG-15A-S09 / HDPE-UG15A-S09-FSTB-EL001-(-4.82/-4.82)-1m / Tie-in / Sheet piles** |  |  | 2026-12-01 | 2027-01-05 |  |  |  |  |  |  |  |  |
| UG-15A-S09-A010 |  | Release: drawings, holds, access and gates | milestone | 0d | 2026-12-01 | 2026-12-01 |  | 5d | start on or after 2026-12-01 | F8 | UG-15A | UG-15A-S09 | A010 |  |
| UG-15A-S09-A020 |  | Set-out, crossing survey and working platform |  | 1d | 2026-12-07 | 2026-12-07 | UG-15A-S09-A010, UG-15A-S10-A030 SS | 0d |  | F8 | UG-15A | UG-15A-S09 | A020 | 0.880821 |
| UG-15A-S09-A030 |  | Pipe-support piling from platform (incl. integrity tests) |  | 1d | 2026-12-08 | 2026-12-08 | UG-15A-S09-A020 SS+1d, UG-15A-S09-A020 FF+2d | 0d |  | F8 | UG-15A | UG-15A-S09 | A030 | 4 |
| UG-15A-S09-A040 |  | Install sheet piles (shored lengths) |  | 1d | 2026-12-09 | 2026-12-09 | UG-15A-S09-A030 SS+1d, UG-15A-S09-A030 FF+2d | 0d |  | F8 | UG-15A | UG-15A-S09 | A040 | 1.761641 |
| UG-15A-S09-A050 |  | Install dewatering and draw down |  | 8d | 2026-12-10 | 2026-12-19 | UG-15A-S09-A040 SS+1d, UG-15A-S09-A040 FF+2d | 0d |  | F8 | UG-15A | UG-15A-S09 | A050 | 0.880821 |
| UG-15A-S09-A060 |  | Excavate and strut to formation |  | 1d | 2026-12-20 | 2026-12-20 | UG-15A-S09-A050 SS+9d, UG-15A-S09-A050 FF+2d, UG-15-S01-A060 SS | 0d |  | F8 | UG-15A | UG-15A-S09 | A060 | 11.595004 |
| UG-15A-S09-A070 |  | Trim piles, blinding and piled slab (incl. cure) |  | 4d | 2026-12-21 | 2026-12-24 | UG-15A-S09-A060 SS+1d, UG-15A-S09-A060 FF+2d | 6d |  | F8 | UG-15A | UG-15A-S09 | A070 | 0.880821 |
| UG-15A-S09-A080 |  | Lay and joint pipe (incl. fittings, tie-in) |  | 4d | 2026-12-30 | 2027-01-03 | UG-15A-S09-A070 SS+2d, UG-15A-S09-A070 FF+2d, UG-15A-S10-A080 | 0d |  | F8 | UG-15A | UG-15A-S09 | A080 | 0.880821 |
| UG-15A-S09-A090 |  | Surround, joint test and line test |  | 3d | 2027-01-02 | 2027-01-04 | UG-15A-S09-A080 SS+2d, UG-15A-S09-A080 FF+2d | 0d |  | F8 | UG-15A | UG-15A-S09 | A090 | 0.880821 |
| UG-15A-S09-A100 |  | Backfill to NG and remove struts |  | 1d | 2027-01-03 | 2027-01-03 | UG-15A-S09-A090 SS+2d, UG-15A-S09-A090 FF+2d, UG-15-S01-A080 | 0d |  | F8 | UG-15A | UG-15A-S09 | A100 | 9.643109 |
| UG-15A-S09-A110 |  | Dewatering off, extract sheets, reinstate |  | 2d | 2027-01-04 | 2027-01-05 | UG-15A-S09-A100 SS+1d, UG-15A-S09-A100 FF+2d |  |  | F8 | UG-15A | UG-15A-S09 | A110 | 1.761641 |

Notes:
- UG-15A-S10-A010: Notes: Front F8 / Line UG-15A / Package UG-15A-S10 / Workbook logic: gates: START, D_DLU
- UG-15A-S10-A020: Notes: Front F8 / Line UG-15A / Package UG-15A-S10 / Quantity 6 m / Workbook logic: FS from A010; UG-15-S01-A030 (SS, set-out one package ahead of piling)
- UG-15A-S10-A030: Notes: Front F8 / Line UG-15A / Package UG-15A-S10 / Quantity 8 piles / Workbook logic: gate: D_PILEDES
- UG-15A-S10-A040: Notes: Front F8 / Line UG-15A / Package UG-15A-S10 / Quantity 13 m wall
- UG-15A-S10-A050: Notes: Front F8 / Line UG-15A / Package UG-15A-S10 / Quantity 6 m / Workbook logic: UG-15-S01-A060 (FS, negative lag = own duration: drawdown complete when the excavation crew is free)
- UG-15A-S10-A060: Notes: Front F8 / Line UG-15A / Package UG-15A-S10 / Quantity 84 m3 / Workbook logic: UG-15-S01-A060 (SS, shared trench)
- UG-15A-S10-A070: Notes: Front F8 / Line UG-15A / Package UG-15A-S10 / Quantity 6 m
- UG-15A-S10-A080: Notes: Front F8 / Line UG-15A / Package UG-15A-S10 / Quantity 6 m
- UG-15A-S10-A090: Notes: Front F8 / Line UG-15A / Package UG-15A-S10 / Quantity 6 m
- UG-15A-S10-A100: Notes: Front F8 / Line UG-15A / Package UG-15A-S10 / Quantity 70 m3 / Workbook logic: UG-15-S01-A080 (FS, shared trench laid); UG-17-S02-A080 (FS, shared trench laid)
- UG-15A-S10-A110: Notes: Front F8 / Line UG-15A / Package UG-15A-S10 / Quantity 13 m wall
- UG-15A-S09-A010: Notes: Front F8 / Line UG-15A / Package UG-15A-S09 / Workbook logic: gates: START, D_DLU, structure ready
- UG-15A-S09-A020: Notes: Front F8 / Line UG-15A / Package UG-15A-S09 / Quantity 1 m / Workbook logic: FS from A010; UG-15A-S10-A030 (SS, tie-in team follows the adjacent run)
- UG-15A-S09-A030: Notes: Front F8 / Line UG-15A / Package UG-15A-S09 / Quantity 4 piles / Workbook logic: gate: D_PILEDES
- UG-15A-S09-A040: Notes: Front F8 / Line UG-15A / Package UG-15A-S09 / Quantity 2 m wall
- UG-15A-S09-A050: Notes: Front F8 / Line UG-15A / Package UG-15A-S09 / Quantity 1 m
- UG-15A-S09-A060: Notes: Front F8 / Line UG-15A / Package UG-15A-S09 / Quantity 12 m3 / Workbook logic: UG-15-S01-A060 (SS, shared trench)
- UG-15A-S09-A070: Notes: Front F8 / Line UG-15A / Package UG-15A-S09 / Quantity 1 m
- UG-15A-S09-A080: Notes: Front F8 / Line UG-15A / Package UG-15A-S09 / Quantity 1 m / Workbook logic: UG-15A-S10-A080 (FS, closure)
- UG-15A-S09-A090: Notes: Front F8 / Line UG-15A / Package UG-15A-S09 / Quantity 1 m
- UG-15A-S09-A100: Notes: Front F8 / Line UG-15A / Package UG-15A-S09 / Quantity 10 m3 / Workbook logic: UG-15-S01-A080 (FS, shared trench laid)
- UG-15A-S09-A110: Notes: Front F8 / Line UG-15A / Package UG-15A-S09 / Quantity 2 m wall

| ID | WBS | Activity | Type | Duration | Start | Finish | Predecessors | Free float | Constraint | Text1 | Text2 | Text3 | Text4 | Number1 |
| --- | --- | --- | --- | --- | --- | --- | --- | --- | --- | --- | --- | --- | --- | --- |
|  | UG-15A-S06 | **UG-15A-S06 / HDPE-UG15A-S06-TEE149-CCT-(-4.90/-5.03)-63m / Run / Sheet piles** |  |  | 2026-12-01 | 2027-04-11 |  |  |  |  |  |  |  |  |
| UG-15A-S06-A010 |  | Release: drawings, holds, access and gates | milestone | 0d | 2026-12-01 | 2026-12-01 |  | 5d | start on or after 2026-12-01 | F8 | UG-15A | UG-15A-S06 | A010 |  |
| UG-15A-S06-A020 |  | Set-out, crossing survey and working platform |  | 1d | 2026-12-07 | 2026-12-07 | UG-15A-S06-A010, UG-15A-S10-A030 SS | 1d |  | F8 | UG-15A | UG-15A-S06 | A020 | 62.526693 |
| UG-15A-S06-A030 |  | Pipe-support piling from platform (incl. integrity tests) |  | 5d | 2026-12-09 | 2026-12-14 | UG-15A-S06-A020 SS+1d, UG-15A-S06-A020 FF+2d, UG-15A-S10-A030 | 0d |  | F8 | UG-15A | UG-15A-S06 | A030 | 44 |
| UG-15A-S06-A040 |  | Install sheet piles (shored lengths) |  | 3d | 2026-12-12 | 2026-12-14 | UG-15A-S06-A030 SS+2d, UG-15A-S06-A030 FF+2d, UG-15A-S10-A040 | 0d |  | F8 | UG-15A | UG-15A-S06 | A040 | 125.053387 |
| UG-15A-S06-A050 |  | Install dewatering and draw down |  | 9d | 2026-12-13 | 2026-12-22 | UG-15A-S06-A040 SS+2d, UG-15A-S06-A040 FF+2d, UG-15A-S10-A060 FS-9d | 0d |  | F8 | UG-15A | UG-15A-S06 | A050 | 62.526693 |
| UG-15A-S06-A060 |  | Excavate and strut to formation |  | 2d | 2026-12-23 | 2026-12-24 | UG-15A-S06-A050 SS+9d, UG-15A-S06-A050 FF+2d, UG-15-S01-A060 SS, UG-15A-S10-A060 | 3d |  | F8 | UG-15A | UG-15A-S06 | A060 | 949.84886 |
| UG-15A-S06-A070 |  | Trim piles, blinding and piled slab (incl. cure) |  | 6d | 2026-12-28 | 2027-01-03 | UG-15A-S06-A060 SS+1d, UG-15A-S06-A060 FF+2d, UG-15A-S10-A070 | 0d |  | F8 | UG-15A | UG-15A-S06 | A070 | 62.526693 |
| UG-15A-S06-A080 |  | Lay and joint pipe (incl. fittings, tie-in) |  | 3d | 2026-12-31 | 2027-01-03 | UG-15A-S06-A070 SS+3d, UG-15A-S06-A070 FF+2d, UG-15A-S10-A080 | 0d |  | F8 | UG-15A | UG-15A-S06 | A080 | 62.526693 |
| UG-15A-S06-A090 |  | Surround, joint test and line test |  | 3d | 2027-01-02 | 2027-01-04 | UG-15A-S06-A080 SS+2d, UG-15A-S06-A080 FF+2d | 78d |  | F8 | UG-15A | UG-15A-S06 | A090 | 62.526693 |
| UG-15A-S06-A100 |  | Backfill to NG and remove struts |  | 2d | 2027-04-06 | 2027-04-07 | UG-15A-S06-A090 SS+2d, UG-15A-S06-A090 FF+2d, UG-15-S01-A080, UG-17-S02-A080, UG-17-S03-A080, UG-15A-S10-A100 | 0d |  | F8 | UG-15A | UG-15A-S06 | A100 | 741.751354 |
| UG-15A-S06-A110 |  | Dewatering off, extract sheets, reinstate |  | 4d | 2027-04-07 | 2027-04-11 | UG-15A-S06-A100 SS+1d, UG-15A-S06-A100 FF+2d |  |  | F8 | UG-15A | UG-15A-S06 | A110 | 125.053387 |
|  | UG-15A-S08 | **UG-15A-S08 / HDPE-UG15A-S08-EL011-TEE-(-4.70/-4.70)-11m / Run / Sheet piles** |  |  | 2026-12-01 | 2027-05-20 |  |  |  |  |  |  |  |  |
| UG-15A-S08-A010 |  | Release: drawings, holds, access and gates | milestone | 0d | 2026-12-01 | 2026-12-01 |  | 31d | start on or after 2026-12-01 | F8 | UG-15A | UG-15A-S08 | A010 |  |
| UG-15A-S08-A020 |  | Set-out, crossing survey and working platform |  | 1d | 2027-01-06 | 2027-01-06 | UG-15A-S08-A010, UG-19-S02-A030 SS | 1d |  | F8 | UG-15A | UG-15A-S08 | A020 | 10.981804 |
| UG-15A-S08-A030 |  | Pipe-support piling from platform (incl. integrity tests) |  | 1d | 2027-01-10 | 2027-01-10 | UG-15A-S08-A020 SS+1d, UG-15A-S08-A020 FF+2d, UG-19-S02-A030 | 0d |  | F8 | UG-15A | UG-15A-S08 | A030 | 10 |
| UG-15A-S08-A040 |  | Install sheet piles (shored lengths) |  | 1d | 2027-01-12 | 2027-01-12 | UG-15A-S08-A030 SS+1d, UG-15A-S08-A030 FF+2d, UG-19-S02-A040 | 0d |  | F8 | UG-15A | UG-15A-S08 | A040 | 21.963608 |
| UG-15A-S08-A050 |  | Install dewatering and draw down |  | 8d | 2027-01-13 | 2027-01-21 | UG-15A-S08-A040 SS+1d, UG-15A-S08-A040 FF+2d, UG-19-S02-A060 FS-8d | 0d |  | F8 | UG-15A | UG-15A-S08 | A050 | 10.981804 |
| UG-15A-S08-A060 |  | Excavate and strut to formation |  | 1d | 2027-01-23 | 2027-01-23 | UG-15A-S08-A050 SS+9d, UG-15A-S08-A050 FF+2d, UG-19-S02-A060 | 5d |  | F8 | UG-15A | UG-15A-S08 | A060 | 140.567193 |
| UG-15A-S08-A070 |  | Trim piles, blinding and piled slab (incl. cure) |  | 4d | 2027-02-09 | 2027-02-13 | UG-15A-S08-A060 SS+1d, UG-15A-S08-A060 FF+2d, UG-19-S02-A070 | 0d |  | F8 | UG-15A | UG-15A-S08 | A070 | 10.981804 |
| UG-15A-S08-A080 |  | Lay and joint pipe (incl. fittings, tie-in) |  | 1d | 2027-02-11 | 2027-02-11 | UG-15A-S08-A070 SS+2d, UG-15A-S08-A070 FF+2d, UG-19-S02-A080 | 0d |  | F8 | UG-15A | UG-15A-S08 | A080 | 10.981804 |
| UG-15A-S08-A090 |  | Surround, joint test and line test |  | 3d | 2027-02-13 | 2027-02-15 | UG-15A-S08-A080 SS+1d, UG-15A-S08-A080 FF+2d | 77d |  | F8 | UG-15A | UG-15A-S08 | A090 | 10.981804 |
| UG-15A-S08-A100 |  | Backfill to NG and remove struts |  | 1d | 2027-05-18 | 2027-05-18 | UG-15A-S08-A090 SS+2d, UG-15A-S08-A090 FF+2d, UG-17-S03-A080, UG-19-S02-A100 | 0d |  | F8 | UG-15A | UG-15A-S08 | A100 | 116.067037 |
| UG-15A-S08-A110 |  | Dewatering off, extract sheets, reinstate |  | 2d | 2027-05-19 | 2027-05-20 | UG-15A-S08-A100 SS+1d, UG-15A-S08-A100 FF+2d |  |  | F8 | UG-15A | UG-15A-S08 | A110 | 21.963608 |

Notes:
- UG-15A-S06-A010: Notes: Front F8 / Line UG-15A / Package UG-15A-S06 / Workbook logic: gates: START, D_DLU
- UG-15A-S06-A020: Notes: Front F8 / Line UG-15A / Package UG-15A-S06 / Quantity 63 m / Workbook logic: FS from A010; UG-15A-S10-A030 (SS, set-out one package ahead of piling)
- UG-15A-S06-A030: Notes: Front F8 / Line UG-15A / Package UG-15A-S06 / Quantity 44 piles / Workbook logic: gate: D_PILEDES
- UG-15A-S06-A040: Notes: Front F8 / Line UG-15A / Package UG-15A-S06 / Quantity 125 m wall
- UG-15A-S06-A050: Notes: Front F8 / Line UG-15A / Package UG-15A-S06 / Quantity 63 m / Workbook logic: UG-15A-S10-A060 (FS, negative lag = own duration: drawdown complete when the excavation crew is free)
- UG-15A-S06-A060: Notes: Front F8 / Line UG-15A / Package UG-15A-S06 / Quantity 950 m3 / Workbook logic: UG-15-S01-A060 (SS, shared trench)
- UG-15A-S06-A070: Notes: Front F8 / Line UG-15A / Package UG-15A-S06 / Quantity 63 m
- UG-15A-S06-A080: Notes: Front F8 / Line UG-15A / Package UG-15A-S06 / Quantity 63 m
- UG-15A-S06-A090: Notes: Front F8 / Line UG-15A / Package UG-15A-S06 / Quantity 63 m
- UG-15A-S06-A100: Notes: Front F8 / Line UG-15A / Package UG-15A-S06 / Quantity 742 m3 / Workbook logic: UG-15-S01-A080 (FS, shared trench laid); UG-17-S02-A080 (FS, shared trench laid); UG-17-S03-A080 (FS, shared trench laid)
- UG-15A-S06-A110: Notes: Front F8 / Line UG-15A / Package UG-15A-S06 / Quantity 125 m wall
- UG-15A-S08-A010: Notes: Front F8 / Line UG-15A / Package UG-15A-S08 / Workbook logic: gates: START, D_DLU
- UG-15A-S08-A020: Notes: Front F8 / Line UG-15A / Package UG-15A-S08 / Quantity 11 m / Workbook logic: FS from A010; UG-19-S02-A030 (SS, set-out one package ahead of piling)
- UG-15A-S08-A030: Notes: Front F8 / Line UG-15A / Package UG-15A-S08 / Quantity 10 piles / Workbook logic: gate: D_PILEDES
- UG-15A-S08-A040: Notes: Front F8 / Line UG-15A / Package UG-15A-S08 / Quantity 22 m wall
- UG-15A-S08-A050: Notes: Front F8 / Line UG-15A / Package UG-15A-S08 / Quantity 11 m / Workbook logic: UG-19-S02-A060 (FS, negative lag = own duration: drawdown complete when the excavation crew is free)
- UG-15A-S08-A060: Notes: Front F8 / Line UG-15A / Package UG-15A-S08 / Quantity 141 m3
- UG-15A-S08-A070: Notes: Front F8 / Line UG-15A / Package UG-15A-S08 / Quantity 11 m
- UG-15A-S08-A080: Notes: Front F8 / Line UG-15A / Package UG-15A-S08 / Quantity 11 m
- UG-15A-S08-A090: Notes: Front F8 / Line UG-15A / Package UG-15A-S08 / Quantity 11 m
- UG-15A-S08-A100: Notes: Front F8 / Line UG-15A / Package UG-15A-S08 / Quantity 116 m3 / Workbook logic: UG-17-S03-A080 (FS, shared trench laid)
- UG-15A-S08-A110: Notes: Front F8 / Line UG-15A / Package UG-15A-S08 / Quantity 22 m wall

| ID | WBS | Activity | Type | Duration | Start | Finish | Predecessors | Free float | Constraint | Text1 | Text2 | Text3 | Text4 | Number1 |
| --- | --- | --- | --- | --- | --- | --- | --- | --- | --- | --- | --- | --- | --- | --- |
|  | UG-15A-S05 | **UG-15A-S05 / HDPE-UG15A-S05-CH027-TEE149-(-4.66/-4.90)-122m / Run / Sheet piles** |  |  | 2026-12-01 | 2027-05-27 |  |  |  |  |  |  |  |  |
| UG-15A-S05-A010 |  | Release: drawings, holds, access and gates | milestone | 0d | 2026-12-01 | 2026-12-01 |  | 34d | start on or after 2026-12-01 | F8 | UG-15A | UG-15A-S05 | A010 |  |
| UG-15A-S05-A020 |  | Set-out, crossing survey and working platform |  | 2d | 2027-01-10 | 2027-01-11 | UG-15A-S05-A010, UG-15A-S08-A030 SS | 1d |  | F8 | UG-15A | UG-15A-S05 | A020 | 122.119826 |
| UG-15A-S05-A030 |  | Pipe-support piling from platform (incl. integrity tests) |  | 9d | 2027-01-12 | 2027-01-21 | UG-15A-S05-A020 SS+1d, UG-15A-S05-A020 FF+2d, UG-15A-S08-A030 | 0d |  | F8 | UG-15A | UG-15A-S05 | A030 | 84 |
| UG-15A-S05-A040 |  | Install sheet piles (shored lengths) |  | 5d | 2027-01-16 | 2027-01-20 | UG-15A-S05-A030 SS+3d, UG-15A-S05-A030 FF+2d, UG-15A-S08-A040 | 0d |  | F8 | UG-15A | UG-15A-S05 | A040 | 244.239652 |
| UG-15A-S05-A050 |  | Install dewatering and draw down |  | 11d | 2027-01-18 | 2027-01-30 | UG-15A-S05-A040 SS+2d, UG-15A-S05-A040 FF+2d, UG-15A-S08-A060 FS-11d | 1d |  | F8 | UG-15A | UG-15A-S05 | A050 | 122.119826 |
| UG-15A-S05-A060 |  | Excavate and strut to formation |  | 4d | 2027-01-30 | 2027-02-02 | UG-15A-S05-A050 SS+9d, UG-15A-S05-A050 FF+2d, UG-15A-S08-A060 | 3d |  | F8 | UG-15A | UG-15A-S05 | A060 | 1568.875604 |
| UG-15A-S05-A070 |  | Trim piles, blinding and piled slab (incl. cure) |  | 9d | 2027-02-14 | 2027-02-23 | UG-15A-S05-A060 SS+2d, UG-15A-S05-A060 FF+2d, UG-15A-S08-A070 | 0d |  | F8 | UG-15A | UG-15A-S05 | A070 | 122.119826 |
| UG-15A-S05-A080 |  | Lay and joint pipe (incl. fittings, tie-in) |  | 6d | 2027-02-18 | 2027-02-24 | UG-15A-S05-A070 SS+3d, UG-15A-S05-A070 FF+2d, UG-15A-S08-A080 | 0d |  | F8 | UG-15A | UG-15A-S05 | A080 | 122.119826 |
| UG-15A-S05-A090 |  | Surround, joint test and line test |  | 3d | 2027-02-21 | 2027-02-23 | UG-15A-S05-A080 SS+3d, UG-15A-S05-A080 FF+2d | 73d |  | F8 | UG-15A | UG-15A-S05 | A090 | 122.119826 |
| UG-15A-S05-A100 |  | Backfill to NG and remove struts |  | 2d | 2027-05-20 | 2027-05-22 | UG-15A-S05-A090 SS+2d, UG-15A-S05-A090 FF+2d, UG-11B-S06-A080, UG-17-S03-A080, UG-18-S02-A080, UG-15A-S08-A100 | 0d |  | F8 | UG-15A | UG-15A-S05 | A100 | 1291.707739 |
| UG-15A-S05-A110 |  | Dewatering off, extract sheets, reinstate |  | 6d | 2027-05-22 | 2027-05-27 | UG-15A-S05-A100 SS+1d, UG-15A-S05-A100 FF+2d |  |  | F8 | UG-15A | UG-15A-S05 | A110 | 244.239652 |
|  | UG-15A-S04 | **UG-15A-S04 / HDPE-UG15A-S04-EL017-CH027-(-2.72/-4.66)-10m / Run / Mixed: 7 m sheet piles** |  |  | 2026-12-01 | 2027-06-23 |  |  |  |  |  |  |  |  |
| UG-15A-S04-A010 |  | Release: drawings, holds, access and gates | milestone | 0d | 2026-12-01 | 2026-12-01 |  | 101d | start on or after 2026-12-01 | F8 | UG-15A | UG-15A-S04 | A010 |  |
| UG-15A-S04-A020 |  | Set-out, crossing survey and working platform |  | 1d | 2027-03-29 | 2027-03-29 | UG-15A-S04-A010, UG-11B-S06-A030 SS | 1d |  | F8 | UG-15A | UG-15A-S04 | A020 | 9.649574 |
| UG-15A-S04-A030 |  | Pipe-support piling from platform (incl. integrity tests) |  | 1d | 2027-04-01 | 2027-04-01 | UG-15A-S04-A020 SS+1d, UG-15A-S04-A020 FF+2d, UG-11B-S06-A030 | 0d |  | F8 | UG-15A | UG-15A-S04 | A030 | 10 |
| UG-15A-S04-A040 |  | Install sheet piles (shored lengths) |  | 1d | 2027-04-03 | 2027-04-03 | UG-15A-S04-A030 SS+1d, UG-15A-S04-A030 FF+2d, UG-11B-S06-A040 | 0d |  | F8 | UG-15A | UG-15A-S04 | A040 | 14.2 |
| UG-15A-S04-A050 |  | Install dewatering and draw down |  | 8d | 2027-04-04 | 2027-04-12 | UG-15A-S04-A040 SS+1d, UG-15A-S04-A040 FF+2d, UG-11B-S06-A060 FS-8d | 40d |  | F8 | UG-15A | UG-15A-S04 | A050 | 9.649574 |
| UG-15A-S04-A060 |  | Excavate and strut to formation |  | 1d | 2027-05-31 | 2027-05-31 | UG-15A-S04-A050 SS+9d, UG-15A-S04-A050 FF+2d, UG-11B-S05-A100, UG-17-S04-A100, UG-11B-S06-A060 SS, UG-17-S03-A060 SS, UG-11B-S06-A060 | 0d |  | F8 | UG-15A | UG-15A-S04 | A060 | 125.907025 |
| UG-15A-S04-A070 |  | Trim piles, blinding and piled slab (incl. cure) |  | 4d | 2027-06-01 | 2027-06-05 | UG-15A-S04-A060 SS+1d, UG-15A-S04-A060 FF+2d, UG-11B-S06-A070 | 0d |  | F8 | UG-15A | UG-15A-S04 | A070 | 9.649574 |
| UG-15A-S04-A080 |  | Lay and joint pipe (incl. fittings, tie-in) |  | 2d | 2027-06-03 | 2027-06-05 | UG-15A-S04-A070 SS+2d, UG-15A-S04-A070 FF+2d, UG-11B-S06-A080 | 0d |  | F8 | UG-15A | UG-15A-S04 | A080 | 9.649574 |
| UG-15A-S04-A090 |  | Surround, joint test and line test |  | 3d | 2027-06-05 | 2027-06-07 | UG-15A-S04-A080 SS+1d, UG-15A-S04-A080 FF+2d | 10d |  | F8 | UG-15A | UG-15A-S04 | A090 | 9.649574 |
| UG-15A-S04-A100 |  | Backfill to NG and remove struts |  | 1d | 2027-06-21 | 2027-06-21 | UG-15A-S04-A090 SS+2d, UG-15A-S04-A090 FF+2d, UG-11B-S06-A080, UG-17-S03-A080, UG-11B-S06-A100 | 0d |  | F8 | UG-15A | UG-15A-S04 | A100 | 104.425165 |
| UG-15A-S04-A110 |  | Dewatering off, extract sheets, reinstate |  | 2d | 2027-06-22 | 2027-06-23 | UG-15A-S04-A100 SS+1d, UG-15A-S04-A100 FF+2d |  |  | F8 | UG-15A | UG-15A-S04 | A110 | 14.2 |

Notes:
- UG-15A-S05-A010: Notes: Front F8 / Line UG-15A / Package UG-15A-S05 / Workbook logic: gates: START, D_DLU
- UG-15A-S05-A020: Notes: Front F8 / Line UG-15A / Package UG-15A-S05 / Quantity 122 m / Workbook logic: FS from A010; UG-15A-S08-A030 (SS, set-out one package ahead of piling)
- UG-15A-S05-A030: Notes: Front F8 / Line UG-15A / Package UG-15A-S05 / Quantity 84 piles / Workbook logic: gate: D_PILEDES
- UG-15A-S05-A040: Notes: Front F8 / Line UG-15A / Package UG-15A-S05 / Quantity 244 m wall
- UG-15A-S05-A050: Notes: Front F8 / Line UG-15A / Package UG-15A-S05 / Quantity 122 m / Workbook logic: UG-15A-S08-A060 (FS, negative lag = own duration: drawdown complete when the excavation crew is free)
- UG-15A-S05-A060: Notes: Front F8 / Line UG-15A / Package UG-15A-S05 / Quantity 1,569 m3
- UG-15A-S05-A070: Notes: Front F8 / Line UG-15A / Package UG-15A-S05 / Quantity 122 m
- UG-15A-S05-A080: Notes: Front F8 / Line UG-15A / Package UG-15A-S05 / Quantity 122 m
- UG-15A-S05-A090: Notes: Front F8 / Line UG-15A / Package UG-15A-S05 / Quantity 122 m
- UG-15A-S05-A100: Notes: Front F8 / Line UG-15A / Package UG-15A-S05 / Quantity 1,292 m3 / Workbook logic: UG-11B-S06-A080 (FS, shared trench laid); UG-17-S03-A080 (FS, shared trench laid); UG-18-S02-A080 (FS, shared trench laid)
- UG-15A-S05-A110: Notes: Front F8 / Line UG-15A / Package UG-15A-S05 / Quantity 244 m wall
- UG-15A-S04-A010: Notes: Front F8 / Line UG-15A / Package UG-15A-S04 / Workbook logic: gates: START, D_DLU
- UG-15A-S04-A020: Notes: Front F8 / Line UG-15A / Package UG-15A-S04 / Quantity 10 m / Workbook logic: FS from A010; UG-11B-S06-A030 (SS, set-out one package ahead of piling)
- UG-15A-S04-A030: Notes: Front F8 / Line UG-15A / Package UG-15A-S04 / Quantity 10 piles / Workbook logic: gate: D_PILEDES
- UG-15A-S04-A040: Notes: Front F8 / Line UG-15A / Package UG-15A-S04 / Quantity 14 m wall
- UG-15A-S04-A050: Notes: Front F8 / Line UG-15A / Package UG-15A-S04 / Quantity 10 m / Workbook logic: UG-11B-S06-A060 (FS, negative lag = own duration: drawdown complete when the excavation crew is free)
- UG-15A-S04-A060: Notes: Front F8 / Line UG-15A / Package UG-15A-S04 / Quantity 126 m3 / Workbook logic: UG-11B-S05-A100 (FS, deeper first); UG-17-S04-A100 (FS, deeper first); UG-11B-S06-A060 (SS, shared trench); UG-17-S03-A060 (SS, shared trench)
- UG-15A-S04-A070: Notes: Front F8 / Line UG-15A / Package UG-15A-S04 / Quantity 10 m
- UG-15A-S04-A080: Notes: Front F8 / Line UG-15A / Package UG-15A-S04 / Quantity 10 m
- UG-15A-S04-A090: Notes: Front F8 / Line UG-15A / Package UG-15A-S04 / Quantity 10 m
- UG-15A-S04-A100: Notes: Front F8 / Line UG-15A / Package UG-15A-S04 / Quantity 104 m3 / Workbook logic: UG-11B-S06-A080 (FS, shared trench laid); UG-17-S03-A080 (FS, shared trench laid)
- UG-15A-S04-A110: Notes: Front F8 / Line UG-15A / Package UG-15A-S04 / Quantity 14 m wall

| ID | WBS | Activity | Type | Duration | Start | Finish | Predecessors | Free float | Constraint | Text1 | Text2 | Text3 | Text4 | Number1 |
| --- | --- | --- | --- | --- | --- | --- | --- | --- | --- | --- | --- | --- | --- | --- |
|  | UG-17 | **UG-17** |  |  | 2026-12-01 | 2027-06-21 |  |  |  |  |  |  |  |  |
|  | UG-17-S02 | **UG-17-S02 / GRP-UG17-S02-EL015-CH060-(-3.93/-4.32)-45m / Run / Mixed: 40 m sheet piles** |  |  | 2026-12-01 | 2027-05-11 |  |  |  |  |  |  |  |  |
| UG-17-S02-A010 |  | Release: drawings, holds, access and gates | milestone | 0d | 2026-12-01 | 2026-12-01 |  | 7d | start on or after 2026-12-01 | F8 | UG-17 | UG-17-S02 | A010 |  |
| UG-17-S02-A020 |  | Set-out, crossing survey and working platform |  | 1d | 2026-12-09 | 2026-12-09 | UG-17-S02-A010, UG-15A-S06-A030 SS | 4d |  | F8 | UG-17 | UG-17-S02 | A020 | 45.267444 |
| UG-17-S02-A030 |  | Pipe-support piling from platform (incl. integrity tests) |  | 4d | 2026-12-15 | 2026-12-19 | UG-17-S02-A020 SS+1d, UG-17-S02-A020 FF+2d, UG-15A-S06-A030 | 0d |  | F8 | UG-17 | UG-17-S02 | A030 | 34 |
| UG-17-S02-A040 |  | Install sheet piles (shored lengths) |  | 2d | 2026-12-17 | 2026-12-19 | UG-17-S02-A030 SS+2d, UG-17-S02-A030 FF+2d, UG-15A-S06-A040 | 0d |  | F8 | UG-17 | UG-17-S02 | A040 | 80 |
| UG-17-S02-A050 |  | Install dewatering and draw down |  | 9d | 2026-12-19 | 2026-12-28 | UG-17-S02-A040 SS+1d, UG-17-S02-A040 FF+2d, UG-15A-S06-A060 FS-9d | 9d |  | F8 | UG-17 | UG-17-S02 | A050 | 45.267444 |
| UG-17-S02-A060 |  | Excavate and strut to formation |  | 2d | 2027-01-09 | 2027-01-10 | UG-17-S02-A050 SS+9d, UG-17-S02-A050 FF+2d, UG-15-S01-A100, UG-15A-S06-A060 SS, UG-15A-S10-A060 SS, UG-15A-S06-A060 | 0d |  | F8 | UG-17 | UG-17-S02 | A060 | 782.365022 |
| UG-17-S02-A070 |  | Trim piles, blinding and piled slab (incl. cure) |  | 5d | 2027-01-09 | 2027-01-13 | UG-17-S02-A060 SS+1d, UG-17-S02-A060 FF+2d, UG-15A-S06-A070 | 0d |  | F8 | UG-17 | UG-17-S02 | A070 | 45.267444 |
| UG-17-S02-A080 |  | Lay and joint pipe (incl. fittings, tie-in) |  | 3d | 2027-01-11 | 2027-01-13 | UG-17-S02-A070 SS+2d, UG-17-S02-A070 FF+2d, UG-15A-S06-A080 | 0d |  | F8 | UG-17 | UG-17-S02 | A080 | 45.267444 |
| UG-17-S02-A090 |  | Surround, joint test and line test |  | 3d | 2027-01-13 | 2027-01-16 | UG-17-S02-A080 SS+2d, UG-17-S02-A080 FF+2d | 94d |  | F8 | UG-17 | UG-17-S02 | A090 | 45.267444 |
| UG-17-S02-A100 |  | Backfill to NG and remove struts |  | 1d | 2027-05-08 | 2027-05-08 | UG-17-S02-A090 SS+2d, UG-17-S02-A090 FF+2d, UG-15A-S06-A080, UG-15A-S10-A080, UG-18-S01-A080, UG-18-S02-A080, UG-15A-S06-A100 | 0d |  | F8 | UG-17 | UG-17-S02 | A100 | 523.973101 |
| UG-17-S02-A110 |  | Dewatering off, extract sheets, reinstate |  | 3d | 2027-05-09 | 2027-05-11 | UG-17-S02-A100 SS+1d, UG-17-S02-A100 FF+2d |  |  | F8 | UG-17 | UG-17-S02 | A110 | 80 |
|  | UG-17-S04 | **UG-17-S04 / GRP-UG17-S04-CH267-CH343-(-4.30/-4.30)-76m / Run / Sheet piles** |  |  | 2026-12-01 | 2027-05-29 |  |  |  |  |  |  |  |  |
| UG-17-S04-A010 |  | Release: drawings, holds, access and gates | milestone | 0d | 2026-12-01 | 2026-12-01 |  | 36d | start on or after 2026-12-01 | F8 | UG-17 | UG-17-S04 | A010 |  |
| UG-17-S04-A020 |  | Set-out, crossing survey and working platform |  | 1d | 2027-01-12 | 2027-01-12 | UG-17-S04-A010, UG-15A-S05-A030 SS | 8d |  | F8 | UG-17 | UG-17-S04 | A020 | 76 |
| UG-17-S04-A030 |  | Pipe-support piling from platform (incl. integrity tests) |  | 6d | 2027-01-23 | 2027-01-28 | UG-17-S04-A020 SS+1d, UG-17-S04-A020 FF+2d, UG-15A-S05-A030 | 0d |  | F8 | UG-17 | UG-17-S04 | A030 | 54 |
| UG-17-S04-A040 |  | Install sheet piles (shored lengths) |  | 4d | 2027-01-26 | 2027-01-30 | UG-17-S04-A030 SS+3d, UG-17-S04-A030 FF+2d, UG-15A-S05-A040 | 0d |  | F8 | UG-17 | UG-17-S04 | A040 | 152 |
| UG-17-S04-A050 |  | Install dewatering and draw down |  | 9d | 2027-01-28 | 2027-02-07 | UG-17-S04-A040 SS+2d, UG-17-S04-A040 FF+2d, UG-15A-S05-A060 FS-9d | 0d |  | F8 | UG-17 | UG-17-S04 | A050 | 76 |
| UG-17-S04-A060 |  | Excavate and strut to formation |  | 3d | 2027-02-07 | 2027-02-09 | UG-17-S04-A050 SS+9d, UG-17-S04-A050 FF+2d, UG-15A-S05-A060 | 1d |  | F8 | UG-17 | UG-17-S04 | A060 | 1163.981945 |
| UG-17-S04-A070 |  | Trim piles, blinding and piled slab (incl. cure) |  | 7d | 2027-02-25 | 2027-03-04 | UG-17-S04-A060 SS+2d, UG-17-S04-A060 FF+2d, UG-15A-S05-A070 | 0d |  | F8 | UG-17 | UG-17-S04 | A070 | 76 |
| UG-17-S04-A080 |  | Lay and joint pipe (incl. fittings, tie-in) |  | 2d | 2027-02-28 | 2027-03-01 | UG-17-S04-A070 SS+3d, UG-17-S04-A070 FF+2d, UG-15A-S05-A080 | 0d |  | F8 | UG-17 | UG-17-S04 | A080 | 76 |
| UG-17-S04-A090 |  | Surround, joint test and line test |  | 3d | 2027-03-01 | 2027-03-03 | UG-17-S04-A080 SS+1d, UG-17-S04-A080 FF+2d | 68d |  | F8 | UG-17 | UG-17-S04 | A090 | 76 |
| UG-17-S04-A100 |  | Backfill to NG and remove struts |  | 2d | 2027-05-23 | 2027-05-24 | UG-17-S04-A090 SS+2d, UG-17-S04-A090 FF+2d, UG-11B-S05-A080, UG-11B-S06-A080, UG-18-S02-A080, UG-15A-S05-A100 | 0d |  | F8 | UG-17 | UG-17-S04 | A100 | 738.604868 |
| UG-17-S04-A110 |  | Dewatering off, extract sheets, reinstate |  | 5d | 2027-05-24 | 2027-05-29 | UG-17-S04-A100 SS+1d, UG-17-S04-A100 FF+2d |  |  | F8 | UG-17 | UG-17-S04 | A110 | 152 |

Notes:
- UG-17-S02-A010: Notes: Front F8 / Line UG-17 / Package UG-17-S02 / Workbook logic: gates: START, D_DLU
- UG-17-S02-A020: Notes: Front F8 / Line UG-17 / Package UG-17-S02 / Quantity 45 m / Workbook logic: FS from A010; UG-15A-S06-A030 (SS, set-out one package ahead of piling)
- UG-17-S02-A030: Notes: Front F8 / Line UG-17 / Package UG-17-S02 / Quantity 34 piles / Workbook logic: gate: D_PILEDES
- UG-17-S02-A040: Notes: Front F8 / Line UG-17 / Package UG-17-S02 / Quantity 80 m wall
- UG-17-S02-A050: Notes: Front F8 / Line UG-17 / Package UG-17-S02 / Quantity 45 m / Workbook logic: UG-15A-S06-A060 (FS, negative lag = own duration: drawdown complete when the excavation crew is free)
- UG-17-S02-A060: Notes: Front F8 / Line UG-17 / Package UG-17-S02 / Quantity 782 m3 / Workbook logic: UG-15-S01-A100 (FS, deeper first); UG-15A-S06-A060 (SS, shared trench); UG-15A-S10-A060 (SS, shared trench)
- UG-17-S02-A070: Notes: Front F8 / Line UG-17 / Package UG-17-S02 / Quantity 45 m
- UG-17-S02-A080: Notes: Front F8 / Line UG-17 / Package UG-17-S02 / Quantity 45 m
- UG-17-S02-A090: Notes: Front F8 / Line UG-17 / Package UG-17-S02 / Quantity 45 m
- UG-17-S02-A100: Notes: Front F8 / Line UG-17 / Package UG-17-S02 / Quantity 524 m3 / Workbook logic: UG-15A-S06-A080 (FS, shared trench laid); UG-15A-S10-A080 (FS, shared trench laid); UG-18-S01-A080 (FS, shared trench laid); UG-18-S02-A080 (FS, shared trench laid)
- UG-17-S02-A110: Notes: Front F8 / Line UG-17 / Package UG-17-S02 / Quantity 80 m wall
- UG-17-S04-A010: Notes: Front F8 / Line UG-17 / Package UG-17-S04 / Workbook logic: gates: START, D_DLU
- UG-17-S04-A020: Notes: Front F8 / Line UG-17 / Package UG-17-S04 / Quantity 76 m / Workbook logic: FS from A010; UG-15A-S05-A030 (SS, set-out one package ahead of piling)
- UG-17-S04-A030: Notes: Front F8 / Line UG-17 / Package UG-17-S04 / Quantity 54 piles / Workbook logic: gate: D_PILEDES
- UG-17-S04-A040: Notes: Front F8 / Line UG-17 / Package UG-17-S04 / Quantity 152 m wall
- UG-17-S04-A050: Notes: Front F8 / Line UG-17 / Package UG-17-S04 / Quantity 76 m / Workbook logic: UG-15A-S05-A060 (FS, negative lag = own duration: drawdown complete when the excavation crew is free)
- UG-17-S04-A060: Notes: Front F8 / Line UG-17 / Package UG-17-S04 / Quantity 1,164 m3
- UG-17-S04-A070: Notes: Front F8 / Line UG-17 / Package UG-17-S04 / Quantity 76 m
- UG-17-S04-A080: Notes: Front F8 / Line UG-17 / Package UG-17-S04 / Quantity 76 m
- UG-17-S04-A090: Notes: Front F8 / Line UG-17 / Package UG-17-S04 / Quantity 76 m
- UG-17-S04-A100: Notes: Front F8 / Line UG-17 / Package UG-17-S04 / Quantity 739 m3 / Workbook logic: UG-11B-S05-A080 (FS, shared trench laid); UG-11B-S06-A080 (FS, shared trench laid); UG-18-S02-A080 (FS, shared trench laid)
- UG-17-S04-A110: Notes: Front F8 / Line UG-17 / Package UG-17-S04 / Quantity 152 m wall

| ID | WBS | Activity | Type | Duration | Start | Finish | Predecessors | Free float | Constraint | Text1 | Text2 | Text3 | Text4 | Number1 |
| --- | --- | --- | --- | --- | --- | --- | --- | --- | --- | --- | --- | --- | --- | --- |
|  | UG-17-S05 | **UG-17-S05 / GRP-UG17-S05-CH343-OUTF-(-4.30/-4.30)-25m / Run / Sheet piles** |  |  | 2026-12-01 | 2027-05-29 |  |  |  |  |  |  |  |  |
| UG-17-S05-A010 |  | Release: drawings, holds, access and gates | milestone | 0d | 2026-12-01 | 2026-12-01 |  | 45d | start on or after 2026-12-01 | F8 | UG-17 | UG-17-S05 | A010 |  |
| UG-17-S05-A020 |  | Set-out, crossing survey and working platform |  | 1d | 2027-01-23 | 2027-01-23 | UG-17-S05-A010, UG-17-S04-A030 SS | 5d |  | F8 | UG-17 | UG-17-S05 | A020 | 24.973464 |
| UG-17-S05-A030 |  | Pipe-support piling from platform (incl. integrity tests) |  | 2d | 2027-01-30 | 2027-01-31 | UG-17-S05-A020 SS+1d, UG-17-S05-A020 FF+2d, UG-17-S04-A030 | 0d |  | F8 | UG-17 | UG-17-S05 | A030 | 20 |
| UG-17-S05-A040 |  | Install sheet piles (shored lengths) |  | 1d | 2027-02-01 | 2027-02-01 | UG-17-S05-A030 SS+1d, UG-17-S05-A030 FF+2d, UG-17-S04-A040 | 0d |  | F8 | UG-17 | UG-17-S05 | A040 | 49.946928 |
| UG-17-S05-A050 |  | Install dewatering and draw down |  | 8d | 2027-02-02 | 2027-02-10 | UG-17-S05-A040 SS+1d, UG-17-S05-A040 FF+2d, UG-17-S04-A060 FS-8d | 0d |  | F8 | UG-17 | UG-17-S05 | A050 | 24.973464 |
| UG-17-S05-A060 |  | Excavate and strut to formation |  | 1d | 2027-02-13 | 2027-02-13 | UG-17-S05-A050 SS+9d, UG-17-S05-A050 FF+2d, UG-17-S04-A060 | 3d |  | F8 | UG-17 | UG-17-S05 | A060 | 382.482387 |
| UG-17-S05-A070 |  | Trim piles, blinding and piled slab (incl. cure) |  | 5d | 2027-03-06 | 2027-03-10 | UG-17-S05-A060 SS+1d, UG-17-S05-A060 FF+2d, UG-17-S04-A070 | 0d |  | F8 | UG-17 | UG-17-S05 | A070 | 24.973464 |
| UG-17-S05-A080 |  | Lay and joint pipe (incl. fittings, tie-in) |  | 1d | 2027-03-08 | 2027-03-08 | UG-17-S05-A070 SS+2d, UG-17-S05-A070 FF+2d, UG-17-S04-A080 | 0d |  | F8 | UG-17 | UG-17-S05 | A080 | 24.973464 |
| UG-17-S05-A090 |  | Surround, joint test and line test |  | 3d | 2027-03-09 | 2027-03-11 | UG-17-S05-A080 SS+1d, UG-17-S05-A080 FF+2d | 63d |  | F8 | UG-17 | UG-17-S05 | A090 | 24.973464 |
| UG-17-S05-A100 |  | Backfill to NG and remove struts |  | 1d | 2027-05-26 | 2027-05-26 | UG-17-S05-A090 SS+2d, UG-17-S05-A090 FF+2d, UG-11B-S05-A080, UG-18-S02-A080, UG-17-S04-A100 | 0d |  | F8 | UG-17 | UG-17-S05 | A100 | 242.704239 |
| UG-17-S05-A110 |  | Dewatering off, extract sheets, reinstate |  | 2d | 2027-05-27 | 2027-05-29 | UG-17-S05-A100 SS+1d, UG-17-S05-A100 FF+2d |  |  | F8 | UG-17 | UG-17-S05 | A110 | 49.946928 |
|  | UG-17-S03 | **UG-17-S03 / GRP-UG17-S03-CH060-CH267-(-4.32/-4.30)-207m / Run / Sheet piles** |  |  | 2026-12-01 | 2027-06-21 |  |  |  |  |  |  |  |  |
| UG-17-S03-A010 |  | Release: drawings, holds, access and gates | milestone | 0d | 2026-12-01 | 2026-12-01 |  | 54d | start on or after 2026-12-01 | F8 | UG-17 | UG-17-S03 | A010 |  |
| UG-17-S03-A020 |  | Set-out, crossing survey and working platform |  | 3d | 2027-02-02 | 2027-02-04 | UG-17-S03-A010, UG-11B-S05-A030 SS | 4d |  | F8 | UG-17 | UG-17-S03 | A020 | 207.1 |
| UG-17-S03-A030 |  | Pipe-support piling from platform (incl. integrity tests) |  | 15d | 2027-02-09 | 2027-02-25 | UG-17-S03-A020 SS+2d, UG-17-S03-A020 FF+2d, UG-11B-S05-A030 | 0d |  | F8 | UG-17 | UG-17-S03 | A030 | 142 |
| UG-17-S03-A040 |  | Install sheet piles (shored lengths) |  | 9d | 2027-02-15 | 2027-02-24 | UG-17-S03-A030 SS+5d, UG-17-S03-A030 FF+2d, UG-11B-S05-A040 | 1d |  | F8 | UG-17 | UG-17-S03 | A040 | 414.2 |
| UG-17-S03-A050 |  | Install dewatering and draw down |  | 13d | 2027-02-20 | 2027-03-06 | UG-17-S03-A040 SS+3d, UG-17-S03-A040 FF+2d, UG-11B-S05-A060 FS-13d | 0d |  | F8 | UG-17 | UG-17-S03 | A050 | 207.1 |
| UG-17-S03-A060 |  | Excavate and strut to formation |  | 7d | 2027-03-03 | 2027-03-10 | UG-17-S03-A050 SS+10d, UG-17-S03-A050 FF+2d, UG-11B-S05-A060 SS, UG-15-S01-A060 SS, UG-15A-S05-A060 SS, UG-15A-S06-A060 SS, UG-15A-S08-A060 SS, UG-11B-S05-A060 | 12d |  | F8 | UG-17 | UG-17-S03 | A060 | 3176.541491 |
| UG-17-S03-A070 |  | Trim piles, blinding and piled slab (incl. cure) |  | 12d | 2027-03-21 | 2027-04-03 | UG-17-S03-A060 SS+3d, UG-17-S03-A060 FF+2d, UG-11B-S05-A070 | 0d |  | F8 | UG-17 | UG-17-S03 | A070 | 207.1 |
| UG-17-S03-A080 |  | Lay and joint pipe (incl. fittings, tie-in) |  | 9d | 2027-03-27 | 2027-04-05 | UG-17-S03-A070 SS+4d, UG-17-S03-A070 FF+2d, UG-11B-S05-A080 | 0d |  | F8 | UG-17 | UG-17-S03 | A080 | 207.1 |
| UG-17-S03-A090 |  | Surround, joint test and line test |  | 4d | 2027-03-30 | 2027-04-03 | UG-17-S03-A080 SS+3d, UG-17-S03-A080 FF+2d | 57d |  | F8 | UG-17 | UG-17-S03 | A090 | 207.1 |
| UG-17-S03-A100 |  | Backfill to NG and remove struts |  | 3d | 2027-06-08 | 2027-06-10 | UG-17-S03-A090 SS+2d, UG-17-S03-A090 FF+2d, UG-11B-S05-A080, UG-11B-S06-A080, UG-15-S01-A080, UG-15A-S04-A080, UG-15A-S05-A080, UG-15A-S06-A080, UG-15A-S08-A080, UG-18-S02-A080, UG-11B-S05-A100 | 0d |  | F8 | UG-17 | UG-17-S03 | A100 | 2014.077393 |
| UG-17-S03-A110 |  | Dewatering off, extract sheets, reinstate |  | 10d | 2027-06-10 | 2027-06-21 | UG-17-S03-A100 SS+2d, UG-17-S03-A100 FF+2d |  |  | F8 | UG-17 | UG-17-S03 | A110 | 414.2 |

Notes:
- UG-17-S05-A010: Notes: Front F8 / Line UG-17 / Package UG-17-S05 / Workbook logic: gates: START, D_DLU
- UG-17-S05-A020: Notes: Front F8 / Line UG-17 / Package UG-17-S05 / Quantity 25 m / Workbook logic: FS from A010; UG-17-S04-A030 (SS, set-out one package ahead of piling)
- UG-17-S05-A030: Notes: Front F8 / Line UG-17 / Package UG-17-S05 / Quantity 20 piles / Workbook logic: gate: D_PILEDES
- UG-17-S05-A040: Notes: Front F8 / Line UG-17 / Package UG-17-S05 / Quantity 50 m wall
- UG-17-S05-A050: Notes: Front F8 / Line UG-17 / Package UG-17-S05 / Quantity 25 m / Workbook logic: UG-17-S04-A060 (FS, negative lag = own duration: drawdown complete when the excavation crew is free)
- UG-17-S05-A060: Notes: Front F8 / Line UG-17 / Package UG-17-S05 / Quantity 382 m3
- UG-17-S05-A070: Notes: Front F8 / Line UG-17 / Package UG-17-S05 / Quantity 25 m
- UG-17-S05-A080: Notes: Front F8 / Line UG-17 / Package UG-17-S05 / Quantity 25 m
- UG-17-S05-A090: Notes: Front F8 / Line UG-17 / Package UG-17-S05 / Quantity 25 m
- UG-17-S05-A100: Notes: Front F8 / Line UG-17 / Package UG-17-S05 / Quantity 243 m3 / Workbook logic: UG-11B-S05-A080 (FS, shared trench laid); UG-18-S02-A080 (FS, shared trench laid)
- UG-17-S05-A110: Notes: Front F8 / Line UG-17 / Package UG-17-S05 / Quantity 50 m wall
- UG-17-S03-A010: Notes: Front F8 / Line UG-17 / Package UG-17-S03 / Workbook logic: gates: START, D_DLU
- UG-17-S03-A020: Notes: Front F8 / Line UG-17 / Package UG-17-S03 / Quantity 207 m / Workbook logic: FS from A010; UG-11B-S05-A030 (SS, set-out one package ahead of piling)
- UG-17-S03-A030: Notes: Front F8 / Line UG-17 / Package UG-17-S03 / Quantity 142 piles / Workbook logic: gate: D_PILEDES
- UG-17-S03-A040: Notes: Front F8 / Line UG-17 / Package UG-17-S03 / Quantity 414 m wall
- UG-17-S03-A050: Notes: Front F8 / Line UG-17 / Package UG-17-S03 / Quantity 207 m / Workbook logic: UG-11B-S05-A060 (FS, negative lag = own duration: drawdown complete when the excavation crew is free)
- UG-17-S03-A060: Notes: Front F8 / Line UG-17 / Package UG-17-S03 / Quantity 3,177 m3 / Workbook logic: UG-11B-S05-A060 (SS, shared trench); UG-15-S01-A060 (SS, shared trench); UG-15A-S05-A060 (SS, shared trench); UG-15A-S06-A060 (SS, shared trench); UG-15A-S08-A060 (SS, shared trench)
- UG-17-S03-A070: Notes: Front F8 / Line UG-17 / Package UG-17-S03 / Quantity 207 m
- UG-17-S03-A080: Notes: Front F8 / Line UG-17 / Package UG-17-S03 / Quantity 207 m
- UG-17-S03-A090: Notes: Front F8 / Line UG-17 / Package UG-17-S03 / Quantity 207 m
- UG-17-S03-A100: Notes: Front F8 / Line UG-17 / Package UG-17-S03 / Quantity 2,014 m3 / Workbook logic: UG-11B-S05-A080 (FS, shared trench laid); UG-11B-S06-A080 (FS, shared trench laid); UG-15-S01-A080 (FS, shared trench laid); UG-15A-S04-A080 (FS, shared trench laid); UG-15A-S05-A080 (FS, shared trench laid); UG-15A-S06-A080 (FS, shared trench laid); UG-15A-S08-A080 (FS, shared trench laid); UG-18-S02-A080 (FS, shared trench laid)
- UG-17-S03-A110: Notes: Front F8 / Line UG-17 / Package UG-17-S03 / Quantity 414 m wall

| ID | WBS | Activity | Type | Duration | Start | Finish | Predecessors | Free float | Constraint | Text1 | Text2 | Text3 | Text4 | Number1 |
| --- | --- | --- | --- | --- | --- | --- | --- | --- | --- | --- | --- | --- | --- | --- |
|  | UG-17-S01 | **UG-17-S01 / GRP-UG17-S01-WFT-EL015-(-3.93/-3.91)-15m / Tie-in / Open cut** |  |  | 2026-12-01 | 2027-05-09 |  |  |  |  |  |  |  |  |
| UG-17-S01-A010 |  | Release: drawings, holds, access and gates | milestone | 0d | 2026-12-01 | 2026-12-01 |  | 12d | start on or after 2026-12-01 | F8 | UG-17 | UG-17-S01 | A010 |  |
| UG-17-S01-A020 |  | Set-out, crossing survey and working platform |  | 1d | 2026-12-15 | 2026-12-15 | UG-17-S01-A010, UG-17-S02-A030 SS | 0d |  | F8 | UG-17 | UG-17-S01 | A020 | 14.732556 |
| UG-17-S01-A030 |  | Pipe-support piling from platform (incl. integrity tests) |  | 2d | 2026-12-16 | 2026-12-17 | UG-17-S01-A020 SS+1d, UG-17-S01-A020 FF+2d | 0d |  | F8 | UG-17 | UG-17-S01 | A030 | 12 |
| UG-17-S01-A050 |  | Install dewatering and draw down |  | 8d | 2026-12-17 | 2026-12-26 | UG-17-S01-A030 SS+1d, UG-17-S01-A030 SF+3d, UG-17-S01-A030 FF+2d | 76d |  | F8 | UG-17 | UG-17-S01 | A050 | 14.732556 |
| UG-17-S01-A060 |  | Excavate and strut to formation |  | 1d | 2027-03-27 | 2027-03-27 | UG-17-S01-A050 SS+9d, UG-17-S01-A050 FF+2d, UG-15-S01-A100, UG-22-S01-A100, UG-18-S02-A060 SS | 0d |  | F8 | UG-17 | UG-17-S01 | A060 | 502.931781 |
| UG-17-S01-A070 |  | Trim piles, blinding and piled slab (incl. cure) |  | 4d | 2027-03-28 | 2027-03-31 | UG-17-S01-A060 SS+1d, UG-17-S01-A060 FF+2d | 0d |  | F8 | UG-17 | UG-17-S01 | A070 | 14.732556 |
| UG-17-S01-A080 |  | Lay and joint pipe (incl. fittings, tie-in) |  | 7d | 2027-03-30 | 2027-04-06 | UG-17-S01-A070 SS+2d, UG-17-S01-A070 FF+2d, UG-17-S02-A080 | 0d |  | F8 | UG-17 | UG-17-S01 | A080 | 14.732556 |
| UG-17-S01-A090 |  | Surround, joint test and line test |  | 3d | 2027-04-03 | 2027-04-05 | UG-17-S01-A080 SS+3d, UG-17-S01-A080 FF+2d | 26d |  | F8 | UG-17 | UG-17-S01 | A090 | 14.732556 |
| UG-17-S01-A100 |  | Backfill to NG and remove struts |  | 1d | 2027-05-08 | 2027-05-08 | UG-17-S01-A090 SS+2d, UG-17-S01-A090 FF+2d, UG-18-S01-A080, UG-18-S02-A080 | 0d |  | F8 | UG-17 | UG-17-S01 | A100 | 419.797615 |
| UG-17-S01-A110 |  | Dewatering off, extract sheets, reinstate |  | 1d | 2027-05-09 | 2027-05-09 | UG-17-S01-A100 SS+1d, UG-17-S01-A100 FF+2d |  |  | F8 | UG-17 | UG-17-S01 | A110 | 0 |
|  | UG-19 | **UG-19** |  |  | 2026-12-01 | 2027-05-19 |  |  |  |  |  |  |  |  |
|  | UG-19-S03 | **UG-19-S03 / GRP-UG19-S03-TEE033-TEPS-(-4.28/-4.68)-82m / Run / Sheet piles** |  |  | 2026-12-01 | 2027-05-16 |  |  |  |  |  |  |  |  |
| UG-19-S03-A010 |  | Release: drawings, holds, access and gates | milestone | 0d | 2026-12-01 | 2026-12-01 |  | 12d | start on or after 2026-12-01 | F8 | UG-19 | UG-19-S03 | A010 |  |
| UG-19-S03-A020 |  | Set-out, crossing survey and working platform |  | 2d | 2026-12-15 | 2026-12-16 | UG-19-S03-A010, UG-17-S02-A030 SS | 3d |  | F8 | UG-19 | UG-19-S03 | A020 | 82.220446 |
| UG-19-S03-A030 |  | Pipe-support piling from platform (incl. integrity tests) |  | 6d | 2026-12-20 | 2026-12-26 | UG-19-S03-A020 SS+1d, UG-19-S03-A020 FF+2d, UG-17-S02-A030 | 0d |  | F8 | UG-19 | UG-19-S03 | A030 | 58 |
| UG-19-S03-A040 |  | Install sheet piles (shored lengths) |  | 4d | 2026-12-23 | 2026-12-27 | UG-19-S03-A030 SS+3d, UG-19-S03-A030 FF+2d, UG-17-S02-A040 | 2d |  | F8 | UG-19 | UG-19-S03 | A040 | 164.440891 |
| UG-19-S03-A050 |  | Install dewatering and draw down |  | 10d | 2026-12-30 | 2027-01-10 | UG-19-S03-A040 SS+2d, UG-19-S03-A040 FF+2d, UG-17-S02-A060 FS-10d | 1d |  | F8 | UG-19 | UG-19-S03 | A050 | 82.220446 |
| UG-19-S03-A060 |  | Excavate and strut to formation |  | 3d | 2027-01-11 | 2027-01-13 | UG-19-S03-A050 SS+9d, UG-19-S03-A050 FF+2d, UG-17-S02-A060 | 0d |  | F8 | UG-19 | UG-19-S03 | A060 | 1202.990406 |
| UG-19-S03-A070 |  | Trim piles, blinding and piled slab (incl. cure) |  | 7d | 2027-01-16 | 2027-01-23 | UG-19-S03-A060 SS+2d, UG-19-S03-A060 FF+2d, UG-17-S02-A070 | 0d |  | F8 | UG-19 | UG-19-S03 | A070 | 82.220446 |
| UG-19-S03-A080 |  | Lay and joint pipe (incl. fittings, tie-in) |  | 5d | 2027-01-18 | 2027-01-23 | UG-19-S03-A070 SS+3d, UG-19-S03-A070 FF+2d, UG-17-S02-A080 | 0d |  | F8 | UG-19 | UG-19-S03 | A080 | 82.220446 |
| UG-19-S03-A090 |  | Surround, joint test and line test |  | 3d | 2027-01-20 | 2027-01-23 | UG-19-S03-A080 SS+2d, UG-19-S03-A080 FF+2d | 91d |  | F8 | UG-19 | UG-19-S03 | A090 | 82.220446 |
| UG-19-S03-A100 |  | Backfill to NG and remove struts |  | 2d | 2027-05-10 | 2027-05-11 | UG-19-S03-A090 SS+2d, UG-19-S03-A090 FF+2d, UG-20-S02-A080, UG-17-S02-A100 | 0d |  | F8 | UG-19 | UG-19-S03 | A100 | 862.524445 |
| UG-19-S03-A110 |  | Dewatering off, extract sheets, reinstate |  | 5d | 2027-05-11 | 2027-05-16 | UG-19-S03-A100 SS+1d, UG-19-S03-A100 FF+2d |  |  | F8 | UG-19 | UG-19-S03 | A110 | 164.440891 |

Notes:
- UG-17-S01-A010: Notes: Front F8 / Line UG-17 / Package UG-17-S01 / Workbook logic: gates: START, D_DLU, structure ready
- UG-17-S01-A020: Notes: Front F8 / Line UG-17 / Package UG-17-S01 / Quantity 15 m / Workbook logic: FS from A010; UG-17-S02-A030 (SS, tie-in team follows the adjacent run)
- UG-17-S01-A030: Notes: Front F8 / Line UG-17 / Package UG-17-S01 / Quantity 12 piles / Workbook logic: gate: D_PILEDES
- UG-17-S01-A050: Notes: Front F8 / Line UG-17 / Package UG-17-S01 / Quantity 15 m
- UG-17-S01-A060: Notes: Front F8 / Line UG-17 / Package UG-17-S01 / Quantity 503 m3 / Workbook logic: UG-15-S01-A100 (FS, deeper first); UG-22-S01-A100 (FS, deeper first); UG-18-S02-A060 (SS, shared trench)
- UG-17-S01-A070: Notes: Front F8 / Line UG-17 / Package UG-17-S01 / Quantity 15 m
- UG-17-S01-A080: Notes: Front F8 / Line UG-17 / Package UG-17-S01 / Quantity 15 m / Workbook logic: UG-17-S02-A080 (FS, closure)
- UG-17-S01-A090: Notes: Front F8 / Line UG-17 / Package UG-17-S01 / Quantity 15 m
- UG-17-S01-A100: Notes: Front F8 / Line UG-17 / Package UG-17-S01 / Quantity 420 m3 / Workbook logic: UG-18-S01-A080 (FS, shared trench laid); UG-18-S02-A080 (FS, shared trench laid)
- UG-17-S01-A110: Notes: Front F8 / Line UG-17 / Package UG-17-S01 / Quantity 0 m wall
- UG-19-S03-A010: Notes: Front F8 / Line UG-19 / Package UG-19-S03 / Workbook logic: gates: START, D_DLU
- UG-19-S03-A020: Notes: Front F8 / Line UG-19 / Package UG-19-S03 / Quantity 82 m / Workbook logic: FS from A010; UG-17-S02-A030 (SS, set-out one package ahead of piling)
- UG-19-S03-A030: Notes: Front F8 / Line UG-19 / Package UG-19-S03 / Quantity 58 piles / Workbook logic: gate: D_PILEDES
- UG-19-S03-A040: Notes: Front F8 / Line UG-19 / Package UG-19-S03 / Quantity 164 m wall
- UG-19-S03-A050: Notes: Front F8 / Line UG-19 / Package UG-19-S03 / Quantity 82 m / Workbook logic: UG-17-S02-A060 (FS, negative lag = own duration: drawdown complete when the excavation crew is free)
- UG-19-S03-A060: Notes: Front F8 / Line UG-19 / Package UG-19-S03 / Quantity 1,203 m3
- UG-19-S03-A070: Notes: Front F8 / Line UG-19 / Package UG-19-S03 / Quantity 82 m
- UG-19-S03-A080: Notes: Front F8 / Line UG-19 / Package UG-19-S03 / Quantity 82 m
- UG-19-S03-A090: Notes: Front F8 / Line UG-19 / Package UG-19-S03 / Quantity 82 m
- UG-19-S03-A100: Notes: Front F8 / Line UG-19 / Package UG-19-S03 / Quantity 863 m3 / Workbook logic: UG-20-S02-A080 (FS, shared trench laid)
- UG-19-S03-A110: Notes: Front F8 / Line UG-19 / Package UG-19-S03 / Quantity 164 m wall

| ID | WBS | Activity | Type | Duration | Start | Finish | Predecessors | Free float | Constraint | Text1 | Text2 | Text3 | Text4 | Number1 |
| --- | --- | --- | --- | --- | --- | --- | --- | --- | --- | --- | --- | --- | --- | --- |
|  | UG-19-S02 | **UG-19-S02 / GRP-UG19-S02-EL003-TEE033-(-4.03/-4.27)-31m / Run / Sheet piles** |  |  | 2026-12-01 | 2027-05-19 |  |  |  |  |  |  |  |  |
| UG-19-S02-A010 |  | Release: drawings, holds, access and gates | milestone | 0d | 2026-12-01 | 2026-12-01 |  | 22d | start on or after 2026-12-01 | F8 | UG-19 | UG-19-S02 | A010 |  |
| UG-19-S02-A020 |  | Set-out, crossing survey and working platform |  | 1d | 2026-12-27 | 2026-12-27 | UG-19-S02-A010, UG-20-S02-A030 SS | 8d |  | F8 | UG-19 | UG-19-S02 | A020 | 30.515604 |
| UG-19-S02-A030 |  | Pipe-support piling from platform (incl. integrity tests) |  | 3d | 2027-01-06 | 2027-01-09 | UG-19-S02-A020 SS+1d, UG-19-S02-A020 FF+2d, UG-20-S02-A030 | 0d |  | F8 | UG-19 | UG-19-S02 | A030 | 24 |
| UG-19-S02-A040 |  | Install sheet piles (shored lengths) |  | 2d | 2027-01-09 | 2027-01-10 | UG-19-S02-A030 SS+2d, UG-19-S02-A030 FF+2d, UG-20-S02-A040 | 0d |  | F8 | UG-19 | UG-19-S02 | A040 | 61.031208 |
| UG-19-S02-A050 |  | Install dewatering and draw down |  | 8d | 2027-01-10 | 2027-01-18 | UG-19-S02-A040 SS+1d, UG-19-S02-A040 FF+2d, UG-20-S02-A060 FS-8d | 0d |  | F8 | UG-19 | UG-19-S02 | A050 | 30.515604 |
| UG-19-S02-A060 |  | Excavate and strut to formation |  | 1d | 2027-01-20 | 2027-01-20 | UG-19-S02-A050 SS+9d, UG-19-S02-A050 FF+2d, UG-20-S01-A060 SS, UG-20-S02-A060 SS, UG-20-S02-A060 | 1d |  | F8 | UG-19 | UG-19-S02 | A060 | 407.695307 |
| UG-19-S02-A070 |  | Trim piles, blinding and piled slab (incl. cure) |  | 5d | 2027-02-03 | 2027-02-08 | UG-19-S02-A060 SS+1d, UG-19-S02-A060 FF+2d, UG-20-S02-A070 | 0d |  | F8 | UG-19 | UG-19-S02 | A070 | 30.515604 |
| UG-19-S02-A080 |  | Lay and joint pipe (incl. fittings, tie-in) |  | 4d | 2027-02-06 | 2027-02-09 | UG-19-S02-A070 SS+2d, UG-19-S02-A070 FF+2d, UG-20-S02-A080 | 0d |  | F8 | UG-19 | UG-19-S02 | A080 | 30.515604 |
| UG-19-S02-A090 |  | Surround, joint test and line test |  | 3d | 2027-02-07 | 2027-02-09 | UG-19-S02-A080 SS+2d, UG-19-S02-A080 FF+2d | 80d |  | F8 | UG-19 | UG-19-S02 | A090 | 30.515604 |
| UG-19-S02-A100 |  | Backfill to NG and remove struts |  | 1d | 2027-05-16 | 2027-05-16 | UG-19-S02-A090 SS+2d, UG-19-S02-A090 FF+2d, UG-20-S01-A080, UG-20-S02-A080, UG-20-S02-A100 | 0d |  | F8 | UG-19 | UG-19-S02 | A100 | 281.055501 |
| UG-19-S02-A110 |  | Dewatering off, extract sheets, reinstate |  | 3d | 2027-05-17 | 2027-05-19 | UG-19-S02-A100 SS+1d, UG-19-S02-A100 FF+2d |  |  | F8 | UG-19 | UG-19-S02 | A110 | 61.031208 |
|  | UG-19-S01 | **UG-19-S01 / GRP-UG19-S01-WFT-EL003-(-4.03/-4.03)-3m / Tie-in / Sheet piles** |  |  | 2026-12-01 | 2027-02-17 |  |  |  |  |  |  |  |  |
| UG-19-S01-A010 |  | Release: drawings, holds, access and gates | milestone | 0d | 2026-12-01 | 2026-12-01 |  | 31d | start on or after 2026-12-01 | F8 | UG-19 | UG-19-S01 | A010 |  |
| UG-19-S01-A020 |  | Set-out, crossing survey and working platform |  | 1d | 2027-01-06 | 2027-01-06 | UG-19-S01-A010, UG-19-S02-A030 SS | 0d |  | F8 | UG-19 | UG-19-S01 | A020 | 2.506093 |
| UG-19-S01-A030 |  | Pipe-support piling from platform (incl. integrity tests) |  | 1d | 2027-01-07 | 2027-01-07 | UG-19-S01-A020 SS+1d, UG-19-S01-A020 FF+2d | 0d |  | F8 | UG-19 | UG-19-S01 | A030 | 4 |
| UG-19-S01-A040 |  | Install sheet piles (shored lengths) |  | 1d | 2027-01-09 | 2027-01-09 | UG-19-S01-A030 SS+1d, UG-19-S01-A030 FF+2d | 0d |  | F8 | UG-19 | UG-19-S01 | A040 | 5.012187 |
| UG-19-S01-A050 |  | Install dewatering and draw down |  | 8d | 2027-01-09 | 2027-01-17 | UG-19-S01-A040 SS+1d, UG-19-S01-A040 FF+2d | 0d |  | F8 | UG-19 | UG-19-S01 | A050 | 2.506093 |
| UG-19-S01-A060 |  | Excavate and strut to formation |  | 1d | 2027-01-19 | 2027-01-19 | UG-19-S01-A050 SS+9d, UG-19-S01-A050 FF+2d, UG-20-S01-A060 SS, UG-20-S02-A060 SS | 0d |  | F8 | UG-19 | UG-19-S01 | A060 | 32.247096 |
| UG-19-S01-A070 |  | Trim piles, blinding and piled slab (incl. cure) |  | 4d | 2027-01-20 | 2027-01-24 | UG-19-S01-A060 SS+1d, UG-19-S01-A060 FF+2d | 17d |  | F8 | UG-19 | UG-19-S01 | A070 | 2.506093 |
| UG-19-S01-A080 |  | Lay and joint pipe (incl. fittings, tie-in) |  | 5d | 2027-02-11 | 2027-02-16 | UG-19-S01-A070 SS+2d, UG-19-S01-A070 FF+2d, UG-19-S02-A080 | 0d |  | F8 | UG-19 | UG-19-S01 | A080 | 2.506093 |
| UG-19-S01-A090 |  | Surround, joint test and line test |  | 3d | 2027-02-13 | 2027-02-15 | UG-19-S01-A080 SS+2d, UG-19-S01-A080 FF+2d | 0d |  | F8 | UG-19 | UG-19-S01 | A090 | 2.506093 |
| UG-19-S01-A100 |  | Backfill to NG and remove struts |  | 1d | 2027-02-15 | 2027-02-15 | UG-19-S01-A090 SS+2d, UG-19-S01-A090 FF+2d, UG-20-S01-A080, UG-20-S02-A080 | 0d |  | F8 | UG-19 | UG-19-S01 | A100 | 21.831614 |
| UG-19-S01-A110 |  | Dewatering off, extract sheets, reinstate |  | 2d | 2027-02-16 | 2027-02-17 | UG-19-S01-A100 SS+1d, UG-19-S01-A100 FF+2d |  |  | F8 | UG-19 | UG-19-S01 | A110 | 5.012187 |

Notes:
- UG-19-S02-A010: Notes: Front F8 / Line UG-19 / Package UG-19-S02 / Workbook logic: gates: START, D_DLU
- UG-19-S02-A020: Notes: Front F8 / Line UG-19 / Package UG-19-S02 / Quantity 31 m / Workbook logic: FS from A010; UG-20-S02-A030 (SS, set-out one package ahead of piling)
- UG-19-S02-A030: Notes: Front F8 / Line UG-19 / Package UG-19-S02 / Quantity 24 piles / Workbook logic: gate: D_PILEDES
- UG-19-S02-A040: Notes: Front F8 / Line UG-19 / Package UG-19-S02 / Quantity 61 m wall
- UG-19-S02-A050: Notes: Front F8 / Line UG-19 / Package UG-19-S02 / Quantity 31 m / Workbook logic: UG-20-S02-A060 (FS, negative lag = own duration: drawdown complete when the excavation crew is free)
- UG-19-S02-A060: Notes: Front F8 / Line UG-19 / Package UG-19-S02 / Quantity 408 m3 / Workbook logic: UG-20-S01-A060 (SS, shared trench); UG-20-S02-A060 (SS, shared trench)
- UG-19-S02-A070: Notes: Front F8 / Line UG-19 / Package UG-19-S02 / Quantity 31 m
- UG-19-S02-A080: Notes: Front F8 / Line UG-19 / Package UG-19-S02 / Quantity 31 m
- UG-19-S02-A090: Notes: Front F8 / Line UG-19 / Package UG-19-S02 / Quantity 31 m
- UG-19-S02-A100: Notes: Front F8 / Line UG-19 / Package UG-19-S02 / Quantity 281 m3 / Workbook logic: UG-20-S01-A080 (FS, shared trench laid); UG-20-S02-A080 (FS, shared trench laid)
- UG-19-S02-A110: Notes: Front F8 / Line UG-19 / Package UG-19-S02 / Quantity 61 m wall
- UG-19-S01-A010: Notes: Front F8 / Line UG-19 / Package UG-19-S01 / Workbook logic: gates: START, D_DLU, structure ready
- UG-19-S01-A020: Notes: Front F8 / Line UG-19 / Package UG-19-S01 / Quantity 3 m / Workbook logic: FS from A010; UG-19-S02-A030 (SS, tie-in team follows the adjacent run)
- UG-19-S01-A030: Notes: Front F8 / Line UG-19 / Package UG-19-S01 / Quantity 4 piles / Workbook logic: gate: D_PILEDES
- UG-19-S01-A040: Notes: Front F8 / Line UG-19 / Package UG-19-S01 / Quantity 5 m wall
- UG-19-S01-A050: Notes: Front F8 / Line UG-19 / Package UG-19-S01 / Quantity 3 m
- UG-19-S01-A060: Notes: Front F8 / Line UG-19 / Package UG-19-S01 / Quantity 32 m3 / Workbook logic: UG-20-S01-A060 (SS, shared trench); UG-20-S02-A060 (SS, shared trench)
- UG-19-S01-A070: Notes: Front F8 / Line UG-19 / Package UG-19-S01 / Quantity 3 m
- UG-19-S01-A080: Notes: Front F8 / Line UG-19 / Package UG-19-S01 / Quantity 3 m / Workbook logic: UG-19-S02-A080 (FS, closure)
- UG-19-S01-A090: Notes: Front F8 / Line UG-19 / Package UG-19-S01 / Quantity 3 m
- UG-19-S01-A100: Notes: Front F8 / Line UG-19 / Package UG-19-S01 / Quantity 22 m3 / Workbook logic: UG-20-S01-A080 (FS, shared trench laid); UG-20-S02-A080 (FS, shared trench laid)
- UG-19-S01-A110: Notes: Front F8 / Line UG-19 / Package UG-19-S01 / Quantity 5 m wall

| ID | WBS | Activity | Type | Duration | Start | Finish | Predecessors | Free float | Constraint | Text1 | Text2 | Text3 | Text4 | Number1 |
| --- | --- | --- | --- | --- | --- | --- | --- | --- | --- | --- | --- | --- | --- | --- |
|  | UG-20 | **UG-20** |  |  | 2026-12-01 | 2027-05-20 |  |  |  |  |  |  |  |  |
|  | UG-20-S02 | **UG-20-S02 / GRP-UG20-S02-EL003-TEPS-(-4.31/-4.58)-107m / Run / Sheet piles** |  |  | 2026-12-01 | 2027-05-20 |  |  |  |  |  |  |  |  |
| UG-20-S02-A010 |  | Release: drawings, holds, access and gates | milestone | 0d | 2026-12-01 | 2026-12-01 |  | 16d | start on or after 2026-12-01 | F8 | UG-20 | UG-20-S02 | A010 |  |
| UG-20-S02-A020 |  | Set-out, crossing survey and working platform |  | 2d | 2026-12-20 | 2026-12-21 | UG-20-S02-A010, UG-19-S03-A030 SS | 5d |  | F8 | UG-20 | UG-20-S02 | A020 | 107.006883 |
| UG-20-S02-A030 |  | Pipe-support piling from platform (incl. integrity tests) |  | 8d | 2026-12-27 | 2027-01-04 | UG-20-S02-A020 SS+1d, UG-20-S02-A020 FF+2d, UG-19-S03-A030 | 0d |  | F8 | UG-20 | UG-20-S02 | A030 | 74 |
| UG-20-S02-A040 |  | Install sheet piles (shored lengths) |  | 5d | 2026-12-30 | 2027-01-04 | UG-20-S02-A030 SS+3d, UG-20-S02-A030 FF+2d, UG-19-S03-A040 | 1d |  | F8 | UG-20 | UG-20-S02 | A040 | 214.013765 |
| UG-20-S02-A050 |  | Install dewatering and draw down |  | 10d | 2027-01-03 | 2027-01-13 | UG-20-S02-A040 SS+2d, UG-20-S02-A040 FF+2d, UG-19-S03-A060 FS-10d | 2d |  | F8 | UG-20 | UG-20-S02 | A050 | 107.006883 |
| UG-20-S02-A060 |  | Excavate and strut to formation |  | 4d | 2027-01-16 | 2027-01-19 | UG-20-S02-A050 SS+9d, UG-20-S02-A050 FF+2d, UG-19-S03-A060 SS, UG-19-S03-A060 | 0d |  | F8 | UG-20 | UG-20-S02 | A060 | 1532.138025 |
| UG-20-S02-A070 |  | Trim piles, blinding and piled slab (incl. cure) |  | 8d | 2027-01-24 | 2027-02-01 | UG-20-S02-A060 SS+2d, UG-20-S02-A060 FF+2d, UG-19-S03-A070 | 0d |  | F8 | UG-20 | UG-20-S02 | A070 | 107.006883 |
| UG-20-S02-A080 |  | Lay and joint pipe (incl. fittings, tie-in) |  | 6d | 2027-01-27 | 2027-02-02 | UG-20-S02-A070 SS+3d, UG-20-S02-A070 FF+2d, UG-19-S03-A080 | 0d |  | F8 | UG-20 | UG-20-S02 | A080 | 107.006883 |
| UG-20-S02-A090 |  | Surround, joint test and line test |  | 3d | 2027-01-30 | 2027-02-01 | UG-20-S02-A080 SS+3d, UG-20-S02-A080 FF+2d | 86d |  | F8 | UG-20 | UG-20-S02 | A090 | 107.006883 |
| UG-20-S02-A100 |  | Backfill to NG and remove struts |  | 2d | 2027-05-13 | 2027-05-15 | UG-20-S02-A090 SS+2d, UG-20-S02-A090 FF+2d, UG-18-S02-A080, UG-19-S01-A080, UG-19-S02-A080, UG-19-S03-A080, UG-19-S03-A100 | 0d |  | F8 | UG-20 | UG-20-S02 | A100 | 1088.842514 |
| UG-20-S02-A110 |  | Dewatering off, extract sheets, reinstate |  | 6d | 2027-05-15 | 2027-05-20 | UG-20-S02-A100 SS+1d, UG-20-S02-A100 FF+2d |  |  | F8 | UG-20 | UG-20-S02 | A110 | 214.013765 |
|  | UG-20-S01 | **UG-20-S01 / GRP-UG20-S01-WFT-EL003-(-4.31/-4.31)-3m / Tie-in / Sheet piles** |  |  | 2026-12-01 | 2027-02-20 |  |  |  |  |  |  |  |  |
| UG-20-S01-A010 |  | Release: drawings, holds, access and gates | milestone | 0d | 2026-12-01 | 2026-12-01 |  | 22d | start on or after 2026-12-01 | F8 | UG-20 | UG-20-S01 | A010 |  |
| UG-20-S01-A020 |  | Set-out, crossing survey and working platform |  | 1d | 2026-12-27 | 2026-12-27 | UG-20-S01-A010, UG-20-S02-A030 SS | 0d |  | F8 | UG-20 | UG-20-S01 | A020 | 2.718458 |
| UG-20-S01-A030 |  | Pipe-support piling from platform (incl. integrity tests) |  | 1d | 2026-12-28 | 2026-12-28 | UG-20-S01-A020 SS+1d, UG-20-S01-A020 FF+2d | 0d |  | F8 | UG-20 | UG-20-S01 | A030 | 4 |
| UG-20-S01-A040 |  | Install sheet piles (shored lengths) |  | 1d | 2026-12-29 | 2026-12-29 | UG-20-S01-A030 SS+1d, UG-20-S01-A030 FF+2d | 0d |  | F8 | UG-20 | UG-20-S01 | A040 | 5.436916 |
| UG-20-S01-A050 |  | Install dewatering and draw down |  | 8d | 2026-12-30 | 2027-01-07 | UG-20-S01-A040 SS+1d, UG-20-S01-A040 FF+2d | 0d |  | F8 | UG-20 | UG-20-S01 | A050 | 2.718458 |
| UG-20-S01-A060 |  | Excavate and strut to formation |  | 1d | 2027-01-09 | 2027-01-09 | UG-20-S01-A050 SS+9d, UG-20-S01-A050 FF+2d | 0d |  | F8 | UG-20 | UG-20-S01 | A060 | 37.919741 |
| UG-20-S01-A070 |  | Trim piles, blinding and piled slab (incl. cure) |  | 4d | 2027-01-10 | 2027-01-13 | UG-20-S01-A060 SS+1d, UG-20-S01-A060 FF+2d | 21d |  | F8 | UG-20 | UG-20-S01 | A070 | 2.718458 |
| UG-20-S01-A080 |  | Lay and joint pipe (incl. fittings, tie-in) |  | 5d | 2027-02-06 | 2027-02-10 | UG-20-S01-A070 SS+2d, UG-20-S01-A070 FF+2d, UG-20-S02-A080 | 0d |  | F8 | UG-20 | UG-20-S01 | A080 | 2.718458 |
| UG-20-S01-A090 |  | Surround, joint test and line test |  | 3d | 2027-02-07 | 2027-02-09 | UG-20-S01-A080 SS+2d, UG-20-S01-A080 FF+2d | 5d |  | F8 | UG-20 | UG-20-S01 | A090 | 2.718458 |
| UG-20-S01-A100 |  | Backfill to NG and remove struts |  | 1d | 2027-02-17 | 2027-02-17 | UG-20-S01-A090 SS+2d, UG-20-S01-A090 FF+2d, UG-19-S01-A080, UG-19-S02-A080 | 0d |  | F8 | UG-20 | UG-20-S01 | A100 | 26.621682 |
| UG-20-S01-A110 |  | Dewatering off, extract sheets, reinstate |  | 2d | 2027-02-18 | 2027-02-20 | UG-20-S01-A100 SS+1d, UG-20-S01-A100 FF+2d |  |  | F8 | UG-20 | UG-20-S01 | A110 | 5.436916 |

Notes:
- UG-20-S02-A010: Notes: Front F8 / Line UG-20 / Package UG-20-S02 / Workbook logic: gates: START, D_DLU
- UG-20-S02-A020: Notes: Front F8 / Line UG-20 / Package UG-20-S02 / Quantity 107 m / Workbook logic: FS from A010; UG-19-S03-A030 (SS, set-out one package ahead of piling)
- UG-20-S02-A030: Notes: Front F8 / Line UG-20 / Package UG-20-S02 / Quantity 74 piles / Workbook logic: gate: D_PILEDES
- UG-20-S02-A040: Notes: Front F8 / Line UG-20 / Package UG-20-S02 / Quantity 214 m wall
- UG-20-S02-A050: Notes: Front F8 / Line UG-20 / Package UG-20-S02 / Quantity 107 m / Workbook logic: UG-19-S03-A060 (FS, negative lag = own duration: drawdown complete when the excavation crew is free)
- UG-20-S02-A060: Notes: Front F8 / Line UG-20 / Package UG-20-S02 / Quantity 1,532 m3 / Workbook logic: UG-19-S03-A060 (SS, shared trench)
- UG-20-S02-A070: Notes: Front F8 / Line UG-20 / Package UG-20-S02 / Quantity 107 m
- UG-20-S02-A080: Notes: Front F8 / Line UG-20 / Package UG-20-S02 / Quantity 107 m
- UG-20-S02-A090: Notes: Front F8 / Line UG-20 / Package UG-20-S02 / Quantity 107 m
- UG-20-S02-A100: Notes: Front F8 / Line UG-20 / Package UG-20-S02 / Quantity 1,089 m3 / Workbook logic: UG-18-S02-A080 (FS, shared trench laid); UG-19-S01-A080 (FS, shared trench laid); UG-19-S02-A080 (FS, shared trench laid); UG-19-S03-A080 (FS, shared trench laid)
- UG-20-S02-A110: Notes: Front F8 / Line UG-20 / Package UG-20-S02 / Quantity 214 m wall
- UG-20-S01-A010: Notes: Front F8 / Line UG-20 / Package UG-20-S01 / Workbook logic: gates: START, D_DLU, structure ready
- UG-20-S01-A020: Notes: Front F8 / Line UG-20 / Package UG-20-S01 / Quantity 3 m / Workbook logic: FS from A010; UG-20-S02-A030 (SS, tie-in team follows the adjacent run)
- UG-20-S01-A030: Notes: Front F8 / Line UG-20 / Package UG-20-S01 / Quantity 4 piles / Workbook logic: gate: D_PILEDES
- UG-20-S01-A040: Notes: Front F8 / Line UG-20 / Package UG-20-S01 / Quantity 5 m wall
- UG-20-S01-A050: Notes: Front F8 / Line UG-20 / Package UG-20-S01 / Quantity 3 m
- UG-20-S01-A060: Notes: Front F8 / Line UG-20 / Package UG-20-S01 / Quantity 38 m3
- UG-20-S01-A070: Notes: Front F8 / Line UG-20 / Package UG-20-S01 / Quantity 3 m
- UG-20-S01-A080: Notes: Front F8 / Line UG-20 / Package UG-20-S01 / Quantity 3 m / Workbook logic: UG-20-S02-A080 (FS, closure)
- UG-20-S01-A090: Notes: Front F8 / Line UG-20 / Package UG-20-S01 / Quantity 3 m
- UG-20-S01-A100: Notes: Front F8 / Line UG-20 / Package UG-20-S01 / Quantity 27 m3 / Workbook logic: UG-19-S01-A080 (FS, shared trench laid); UG-19-S02-A080 (FS, shared trench laid)
- UG-20-S01-A110: Notes: Front F8 / Line UG-20 / Package UG-20-S01 / Quantity 5 m wall

| ID | WBS | Activity | Type | Duration | Start | Finish | Predecessors | Free float | Constraint | Text1 | Text2 | Text3 | Text4 | Number1 |
| --- | --- | --- | --- | --- | --- | --- | --- | --- | --- | --- | --- | --- | --- | --- |
|  | UG-11B | **UG-11B** |  |  | 2026-12-01 | 2027-06-21 |  |  |  |  |  |  |  |  |
|  | UG-11B-S05 | **UG-11B-S05 / HDPE-UG11B-S05-CH166-CH241-(-4.30/-4.30)-75m / Run / Sheet piles** |  |  | 2026-12-01 | 2027-06-02 |  |  |  |  |  |  |  |  |
| UG-11B-S05-A010 |  | Release: drawings, holds, access and gates | milestone | 0d | 2026-12-01 | 2026-12-01 |  | 51d | start on or after 2026-12-01 | F8 | UG-11B | UG-11B-S05 | A010 |  |
| UG-11B-S05-A020 |  | Set-out, crossing survey and working platform |  | 1d | 2027-01-30 | 2027-01-30 | UG-11B-S05-A010, UG-17-S05-A030 SS | 2d |  | F8 | UG-11B | UG-11B-S05 | A020 | 75.1 |
| UG-11B-S05-A030 |  | Pipe-support piling from platform (incl. integrity tests) |  | 6d | 2027-02-02 | 2027-02-08 | UG-11B-S05-A020 SS+1d, UG-11B-S05-A020 FF+2d, UG-17-S05-A030 | 0d |  | F8 | UG-11B | UG-11B-S05 | A030 | 54 |
| UG-11B-S05-A040 |  | Install sheet piles (shored lengths) |  | 4d | 2027-02-06 | 2027-02-09 | UG-11B-S05-A030 SS+3d, UG-11B-S05-A030 FF+2d, UG-17-S05-A040 | 0d |  | F8 | UG-11B | UG-11B-S05 | A040 | 150.2 |
| UG-11B-S05-A050 |  | Install dewatering and draw down |  | 9d | 2027-02-07 | 2027-02-16 | UG-11B-S05-A040 SS+2d, UG-11B-S05-A040 FF+2d, UG-17-S05-A060 FS-9d | 0d |  | F8 | UG-11B | UG-11B-S05 | A050 | 75.1 |
| UG-11B-S05-A060 |  | Excavate and strut to formation |  | 2d | 2027-02-17 | 2027-02-18 | UG-11B-S05-A050 SS+9d, UG-11B-S05-A050 FF+2d, UG-17-S04-A060 SS, UG-17-S05-A060 SS, UG-17-S05-A060 | 10d |  | F8 | UG-11B | UG-11B-S05 | A060 | 919.492854 |
| UG-11B-S05-A070 |  | Trim piles, blinding and piled slab (incl. cure) |  | 7d | 2027-03-13 | 2027-03-20 | UG-11B-S05-A060 SS+1d, UG-11B-S05-A060 FF+2d, UG-17-S05-A070 | 0d |  | F8 | UG-11B | UG-11B-S05 | A070 | 75.1 |
| UG-11B-S05-A080 |  | Lay and joint pipe (incl. fittings, tie-in) |  | 4d | 2027-03-15 | 2027-03-18 | UG-11B-S05-A070 SS+3d, UG-11B-S05-A070 FF+2d, UG-17-S05-A080 | 0d |  | F8 | UG-11B | UG-11B-S05 | A080 | 75.1 |
| UG-11B-S05-A090 |  | Surround, joint test and line test |  | 3d | 2027-03-17 | 2027-03-20 | UG-11B-S05-A080 SS+2d, UG-11B-S05-A080 FF+2d | 59d |  | F8 | UG-11B | UG-11B-S05 | A090 | 75.1 |
| UG-11B-S05-A100 |  | Backfill to NG and remove struts |  | 2d | 2027-05-29 | 2027-05-30 | UG-11B-S05-A090 SS+2d, UG-11B-S05-A090 FF+2d, UG-17-S03-A080, UG-17-S04-A080, UG-17-S05-A080, UG-17-S05-A100 | 0d |  | F8 | UG-11B | UG-11B-S05 | A100 | 713.627801 |
| UG-11B-S05-A110 |  | Dewatering off, extract sheets, reinstate |  | 5d | 2027-05-29 | 2027-06-02 | UG-11B-S05-A100 SS+1d, UG-11B-S05-A100 FF+2d |  |  | F8 | UG-11B | UG-11B-S05 | A110 | 150.2 |
|  | UG-11B-S06 | **UG-11B-S06 / HDPE-UG11B-S06-CH241-TEE259-(-4.30/-4.30)-18m / Run / Sheet piles** |  |  | 2026-12-01 | 2027-06-21 |  |  |  |  |  |  |  |  |
| UG-11B-S06-A010 |  | Release: drawings, holds, access and gates | milestone | 0d | 2026-12-01 | 2026-12-01 |  | 75d | start on or after 2026-12-01 | F8 | UG-11B | UG-11B-S06 | A010 |  |
| UG-11B-S06-A020 |  | Set-out, crossing survey and working platform |  | 1d | 2027-02-27 | 2027-02-27 | UG-11B-S06-A010, UG-18-S02-A030 SS | 25d |  | F8 | UG-11B | UG-11B-S06 | A020 | 17.686736 |
| UG-11B-S06-A030 |  | Pipe-support piling from platform (incl. integrity tests) |  | 2d | 2027-03-29 | 2027-03-30 | UG-11B-S06-A020 SS+1d, UG-11B-S06-A020 FF+2d, UG-18-S02-A030 | 0d |  | F8 | UG-11B | UG-11B-S06 | A030 | 14 |
| UG-11B-S06-A040 |  | Install sheet piles (shored lengths) |  | 1d | 2027-03-31 | 2027-03-31 | UG-11B-S06-A030 SS+1d, UG-11B-S06-A030 FF+2d, UG-18-S02-A040 | 0d |  | F8 | UG-11B | UG-11B-S06 | A040 | 35.373472 |
| UG-11B-S06-A050 |  | Install dewatering and draw down |  | 8d | 2027-04-01 | 2027-04-10 | UG-11B-S06-A040 SS+1d, UG-11B-S06-A040 FF+2d, UG-18-S02-A060 FS-8d | 0d |  | F8 | UG-11B | UG-11B-S06 | A050 | 17.686736 |
| UG-11B-S06-A060 |  | Excavate and strut to formation |  | 1d | 2027-04-11 | 2027-04-11 | UG-11B-S06-A050 SS+9d, UG-11B-S06-A050 FF+2d, UG-15A-S05-A060 SS, UG-17-S03-A060 SS, UG-17-S04-A060 SS, UG-18-S02-A060 | 1d |  | F8 | UG-11B | UG-11B-S06 | A060 | 216.752388 |
| UG-11B-S06-A070 |  | Trim piles, blinding and piled slab (incl. cure) |  | 4d | 2027-04-27 | 2027-05-01 | UG-11B-S06-A060 SS+1d, UG-11B-S06-A060 FF+2d, UG-18-S02-A070 | 0d |  | F8 | UG-11B | UG-11B-S06 | A070 | 17.686736 |
| UG-11B-S06-A080 |  | Lay and joint pipe (incl. fittings, tie-in) |  | 2d | 2027-04-29 | 2027-05-01 | UG-11B-S06-A070 SS+2d, UG-11B-S06-A070 FF+2d, UG-18-S02-A080 | 0d |  | F8 | UG-11B | UG-11B-S06 | A080 | 17.686736 |
| UG-11B-S06-A090 |  | Surround, joint test and line test |  | 3d | 2027-05-01 | 2027-05-03 | UG-11B-S06-A080 SS+1d, UG-11B-S06-A080 FF+2d | 38d |  | F8 | UG-11B | UG-11B-S06 | A090 | 17.686736 |
| UG-11B-S06-A100 |  | Backfill to NG and remove struts |  | 1d | 2027-06-19 | 2027-06-19 | UG-11B-S06-A090 SS+2d, UG-11B-S06-A090 FF+2d, UG-15A-S04-A080, UG-15A-S05-A080, UG-17-S03-A080, UG-17-S04-A080, UG-18-S02-A100 | 0d |  | F8 | UG-11B | UG-11B-S06 | A100 | 168.165182 |
| UG-11B-S06-A110 |  | Dewatering off, extract sheets, reinstate |  | 2d | 2027-06-20 | 2027-06-21 | UG-11B-S06-A100 SS+1d, UG-11B-S06-A100 FF+2d |  |  | F8 | UG-11B | UG-11B-S06 | A110 | 35.373472 |

Notes:
- UG-11B-S05-A010: Notes: Front F8 / Line UG-11B / Package UG-11B-S05 / Workbook logic: gates: START, D_DLU
- UG-11B-S05-A020: Notes: Front F8 / Line UG-11B / Package UG-11B-S05 / Quantity 75 m / Workbook logic: FS from A010; UG-17-S05-A030 (SS, set-out one package ahead of piling)
- UG-11B-S05-A030: Notes: Front F8 / Line UG-11B / Package UG-11B-S05 / Quantity 54 piles / Workbook logic: gate: D_PILEDES
- UG-11B-S05-A040: Notes: Front F8 / Line UG-11B / Package UG-11B-S05 / Quantity 150 m wall
- UG-11B-S05-A050: Notes: Front F8 / Line UG-11B / Package UG-11B-S05 / Quantity 75 m / Workbook logic: UG-17-S05-A060 (FS, negative lag = own duration: drawdown complete when the excavation crew is free)
- UG-11B-S05-A060: Notes: Front F8 / Line UG-11B / Package UG-11B-S05 / Quantity 919 m3 / Workbook logic: UG-17-S04-A060 (SS, shared trench); UG-17-S05-A060 (SS, shared trench)
- UG-11B-S05-A070: Notes: Front F8 / Line UG-11B / Package UG-11B-S05 / Quantity 75 m
- UG-11B-S05-A080: Notes: Front F8 / Line UG-11B / Package UG-11B-S05 / Quantity 75 m
- UG-11B-S05-A090: Notes: Front F8 / Line UG-11B / Package UG-11B-S05 / Quantity 75 m
- UG-11B-S05-A100: Notes: Front F8 / Line UG-11B / Package UG-11B-S05 / Quantity 714 m3 / Workbook logic: UG-17-S03-A080 (FS, shared trench laid); UG-17-S04-A080 (FS, shared trench laid); UG-17-S05-A080 (FS, shared trench laid)
- UG-11B-S05-A110: Notes: Front F8 / Line UG-11B / Package UG-11B-S05 / Quantity 150 m wall
- UG-11B-S06-A010: Notes: Front F8 / Line UG-11B / Package UG-11B-S06 / Workbook logic: gates: START, D_DLU
- UG-11B-S06-A020: Notes: Front F8 / Line UG-11B / Package UG-11B-S06 / Quantity 18 m / Workbook logic: FS from A010; UG-18-S02-A030 (SS, set-out one package ahead of piling)
- UG-11B-S06-A030: Notes: Front F8 / Line UG-11B / Package UG-11B-S06 / Quantity 14 piles / Workbook logic: gate: D_PILEDES
- UG-11B-S06-A040: Notes: Front F8 / Line UG-11B / Package UG-11B-S06 / Quantity 35 m wall
- UG-11B-S06-A050: Notes: Front F8 / Line UG-11B / Package UG-11B-S06 / Quantity 18 m / Workbook logic: UG-18-S02-A060 (FS, negative lag = own duration: drawdown complete when the excavation crew is free)
- UG-11B-S06-A060: Notes: Front F8 / Line UG-11B / Package UG-11B-S06 / Quantity 217 m3 / Workbook logic: UG-15A-S05-A060 (SS, shared trench); UG-17-S03-A060 (SS, shared trench); UG-17-S04-A060 (SS, shared trench)
- UG-11B-S06-A070: Notes: Front F8 / Line UG-11B / Package UG-11B-S06 / Quantity 18 m
- UG-11B-S06-A080: Notes: Front F8 / Line UG-11B / Package UG-11B-S06 / Quantity 18 m
- UG-11B-S06-A090: Notes: Front F8 / Line UG-11B / Package UG-11B-S06 / Quantity 18 m
- UG-11B-S06-A100: Notes: Front F8 / Line UG-11B / Package UG-11B-S06 / Quantity 168 m3 / Workbook logic: UG-15A-S04-A080 (FS, shared trench laid); UG-15A-S05-A080 (FS, shared trench laid); UG-17-S03-A080 (FS, shared trench laid); UG-17-S04-A080 (FS, shared trench laid)
- UG-11B-S06-A110: Notes: Front F8 / Line UG-11B / Package UG-11B-S06 / Quantity 35 m wall

| ID | WBS | Activity | Type | Duration | Start | Finish | Predecessors | Free float | Constraint | Text1 | Text2 | Text3 | Text4 | Number1 |
| --- | --- | --- | --- | --- | --- | --- | --- | --- | --- | --- | --- | --- | --- | --- |
|  | UG-18 | **UG-18** |  |  | 2026-12-01 | 2027-07-03 |  |  |  |  |  |  |  |  |
|  | UG-18-S02 | **UG-18-S02 / GRP-UG18-S02-EL011-OUTF-(-3.93/-4.30)-365m / Run / Sheet piles** |  |  | 2026-12-01 | 2027-07-03 |  |  |  |  |  |  |  |  |
| UG-18-S02-A010 |  | Release: drawings, holds, access and gates | milestone | 0d | 2026-12-01 | 2026-12-01 |  | 60d | start on or after 2026-12-01 | F8 | UG-18 | UG-18-S02 | A010 |  |
| UG-18-S02-A020 |  | Set-out, crossing survey and working platform |  | 5d | 2027-02-09 | 2027-02-14 | UG-18-S02-A010, UG-17-S03-A030 SS | 13d |  | F8 | UG-18 | UG-18-S02 | A020 | 364.5418 |
| UG-18-S02-A030 |  | Pipe-support piling from platform (incl. integrity tests) |  | 25d | 2027-02-27 | 2027-03-27 | UG-18-S02-A020 SS+2d, UG-18-S02-A020 FF+2d, UG-17-S03-A030 | 0d |  | F8 | UG-18 | UG-18-S02 | A030 | 246 |
| UG-18-S02-A040 |  | Install sheet piles (shored lengths) |  | 15d | 2027-03-08 | 2027-03-24 | UG-18-S02-A030 SS+8d, UG-18-S02-A030 FF+2d, UG-17-S03-A040 | 0d |  | F8 | UG-18 | UG-18-S02 | A040 | 729.0836 |
| UG-18-S02-A050 |  | Install dewatering and draw down |  | 17d | 2027-03-14 | 2027-04-01 | UG-18-S02-A040 SS+5d, UG-18-S02-A040 FF+2d, UG-17-S03-A060 FS-17d | 0d |  | F8 | UG-18 | UG-18-S02 | A050 | 364.5418 |
| UG-18-S02-A060 |  | Excavate and strut to formation |  | 12d | 2027-03-27 | 2027-04-08 | UG-18-S02-A050 SS+11d, UG-18-S02-A050 FF+2d, UG-15A-S05-A060 SS, UG-17-S02-A060 SS, UG-17-S03-A060 SS, UG-17-S04-A060 SS, UG-17-S05-A060 SS, UG-20-S02-A060 SS, UG-17-S03-A060 | 0d |  | F8 | UG-18 | UG-18-S02 | A060 | 5579.244801 |
| UG-18-S02-A070 |  | Trim piles, blinding and piled slab (incl. cure) |  | 19d | 2027-04-04 | 2027-04-25 | UG-18-S02-A060 SS+4d, UG-18-S02-A060 FF+2d, UG-17-S03-A070 | 0d |  | F8 | UG-18 | UG-18-S02 | A070 | 364.5418 |
| UG-18-S02-A080 |  | Lay and joint pipe (incl. fittings, tie-in) |  | 14d | 2027-04-11 | 2027-04-26 | UG-18-S02-A070 SS+6d, UG-18-S02-A070 FF+2d, UG-17-S03-A080 | 0d |  | F8 | UG-18 | UG-18-S02 | A080 | 364.5418 |
| UG-18-S02-A090 |  | Surround, joint test and line test |  | 5d | 2027-04-17 | 2027-04-21 | UG-18-S02-A080 SS+5d, UG-18-S02-A080 FF+2d | 46d |  | F8 | UG-18 | UG-18-S02 | A090 | 364.5418 |
| UG-18-S02-A100 |  | Backfill to NG and remove struts |  | 6d | 2027-06-12 | 2027-06-17 | UG-18-S02-A090 SS+2d, UG-18-S02-A090 FF+2d, UG-15A-S05-A080, UG-17-S01-A080, UG-17-S02-A080, UG-17-S03-A080, UG-17-S04-A080, UG-17-S05-A080, UG-20-S02-A080, UG-17-S03-A100 | 0d |  | F8 | UG-18 | UG-18-S02 | A100 | 3518.120697 |
| UG-18-S02-A110 |  | Dewatering off, extract sheets, reinstate |  | 16d | 2027-06-15 | 2027-07-03 | UG-18-S02-A100 SS+3d, UG-18-S02-A100 FF+2d |  |  | F8 | UG-18 | UG-18-S02 | A110 | 729.0836 |
|  | UG-18-S01 | **UG-18-S01 / GRP-UG18-S01-WFT-EL011-(-3.93/-3.91)-11m / Tie-in / Open cut** |  |  | 2026-12-01 | 2027-05-06 |  |  |  |  |  |  |  |  |
| UG-18-S01-A010 |  | Release: drawings, holds, access and gates | milestone | 0d | 2026-12-01 | 2026-12-01 |  | 75d | start on or after 2026-12-01 | F8 | UG-18 | UG-18-S01 | A010 |  |
| UG-18-S01-A020 |  | Set-out, crossing survey and working platform |  | 1d | 2027-02-27 | 2027-02-27 | UG-18-S01-A010, UG-18-S02-A030 SS | 0d |  | F8 | UG-18 | UG-18-S01 | A020 | 10.51914 |
| UG-18-S01-A030 |  | Pipe-support piling from platform (incl. integrity tests) |  | 1d | 2027-02-28 | 2027-02-28 | UG-18-S01-A020 SS+1d, UG-18-S01-A020 FF+2d | 0d |  | F8 | UG-18 | UG-18-S01 | A030 | 10 |
| UG-18-S01-A050 |  | Install dewatering and draw down |  | 8d | 2027-03-01 | 2027-03-09 | UG-18-S01-A030 SS+1d, UG-18-S01-A030 SF+3d, UG-18-S01-A030 FF+2d | 13d |  | F8 | UG-18 | UG-18-S01 | A050 | 10.51914 |
| UG-18-S01-A060 |  | Excavate and strut to formation |  | 1d | 2027-03-27 | 2027-03-27 | UG-18-S01-A050 SS+9d, UG-18-S01-A050 FF+2d, UG-17-S01-A060 SS, UG-17-S02-A060 SS | 0d |  | F8 | UG-18 | UG-18-S01 | A060 | 358.295205 |
| UG-18-S01-A070 |  | Trim piles, blinding and piled slab (incl. cure) |  | 4d | 2027-03-28 | 2027-03-31 | UG-18-S01-A060 SS+1d, UG-18-S01-A060 FF+2d | 26d |  | F8 | UG-18 | UG-18-S01 | A070 | 10.51914 |
| UG-18-S01-A080 |  | Lay and joint pipe (incl. fittings, tie-in) |  | 7d | 2027-04-29 | 2027-05-06 | UG-18-S01-A070 SS+2d, UG-18-S01-A070 FF+2d, UG-18-S02-A080 | 0d |  | F8 | UG-18 | UG-18-S01 | A080 | 10.51914 |
| UG-18-S01-A090 |  | Surround, joint test and line test |  | 3d | 2027-05-02 | 2027-05-04 | UG-18-S01-A080 SS+3d, UG-18-S01-A080 FF+2d | 0d |  | F8 | UG-18 | UG-18-S01 | A090 | 10.51914 |
| UG-18-S01-A100 |  | Backfill to NG and remove struts |  | 1d | 2027-05-04 | 2027-05-04 | UG-18-S01-A090 SS+2d, UG-18-S01-A090 FF+2d, UG-17-S01-A080, UG-17-S02-A080 | 0d |  | F8 | UG-18 | UG-18-S01 | A100 | 299.211771 |
| UG-18-S01-A110 |  | Dewatering off, extract sheets, reinstate |  | 1d | 2027-05-05 | 2027-05-05 | UG-18-S01-A100 SS+1d, UG-18-S01-A100 FF+2d |  |  | F8 | UG-18 | UG-18-S01 | A110 | 0 |

Notes:
- UG-18-S02-A010: Notes: Front F8 / Line UG-18 / Package UG-18-S02 / Workbook logic: gates: START, D_DLU
- UG-18-S02-A020: Notes: Front F8 / Line UG-18 / Package UG-18-S02 / Quantity 365 m / Workbook logic: FS from A010; UG-17-S03-A030 (SS, set-out one package ahead of piling)
- UG-18-S02-A030: Notes: Front F8 / Line UG-18 / Package UG-18-S02 / Quantity 246 piles / Workbook logic: gate: D_PILEDES
- UG-18-S02-A040: Notes: Front F8 / Line UG-18 / Package UG-18-S02 / Quantity 729 m wall
- UG-18-S02-A050: Notes: Front F8 / Line UG-18 / Package UG-18-S02 / Quantity 365 m / Workbook logic: UG-17-S03-A060 (FS, negative lag = own duration: drawdown complete when the excavation crew is free)
- UG-18-S02-A060: Notes: Front F8 / Line UG-18 / Package UG-18-S02 / Quantity 5,579 m3 / Workbook logic: UG-15A-S05-A060 (SS, shared trench); UG-17-S02-A060 (SS, shared trench); UG-17-S03-A060 (SS, shared trench); UG-17-S04-A060 (SS, shared trench); UG-17-S05-A060 (SS, shared trench); UG-20-S02-A060 (SS, shared trench)
- UG-18-S02-A070: Notes: Front F8 / Line UG-18 / Package UG-18-S02 / Quantity 365 m
- UG-18-S02-A080: Notes: Front F8 / Line UG-18 / Package UG-18-S02 / Quantity 365 m
- UG-18-S02-A090: Notes: Front F8 / Line UG-18 / Package UG-18-S02 / Quantity 365 m
- UG-18-S02-A100: Notes: Front F8 / Line UG-18 / Package UG-18-S02 / Quantity 3,518 m3 / Workbook logic: UG-15A-S05-A080 (FS, shared trench laid); UG-17-S01-A080 (FS, shared trench laid); UG-17-S02-A080 (FS, shared trench laid); UG-17-S03-A080 (FS, shared trench laid); UG-17-S04-A080 (FS, shared trench laid); UG-17-S05-A080 (FS, shared trench laid); UG-20-S02-A080 (FS, shared trench laid)
- UG-18-S02-A110: Notes: Front F8 / Line UG-18 / Package UG-18-S02 / Quantity 729 m wall
- UG-18-S01-A010: Notes: Front F8 / Line UG-18 / Package UG-18-S01 / Workbook logic: gates: START, D_DLU, structure ready
- UG-18-S01-A020: Notes: Front F8 / Line UG-18 / Package UG-18-S01 / Quantity 11 m / Workbook logic: FS from A010; UG-18-S02-A030 (SS, tie-in team follows the adjacent run)
- UG-18-S01-A030: Notes: Front F8 / Line UG-18 / Package UG-18-S01 / Quantity 10 piles / Workbook logic: gate: D_PILEDES
- UG-18-S01-A050: Notes: Front F8 / Line UG-18 / Package UG-18-S01 / Quantity 11 m
- UG-18-S01-A060: Notes: Front F8 / Line UG-18 / Package UG-18-S01 / Quantity 358 m3 / Workbook logic: UG-17-S01-A060 (SS, shared trench); UG-17-S02-A060 (SS, shared trench)
- UG-18-S01-A070: Notes: Front F8 / Line UG-18 / Package UG-18-S01 / Quantity 11 m
- UG-18-S01-A080: Notes: Front F8 / Line UG-18 / Package UG-18-S01 / Quantity 11 m / Workbook logic: UG-18-S02-A080 (FS, closure)
- UG-18-S01-A090: Notes: Front F8 / Line UG-18 / Package UG-18-S01 / Quantity 11 m
- UG-18-S01-A100: Notes: Front F8 / Line UG-18 / Package UG-18-S01 / Quantity 299 m3 / Workbook logic: UG-17-S01-A080 (FS, shared trench laid); UG-17-S02-A080 (FS, shared trench laid)
- UG-18-S01-A110: Notes: Front F8 / Line UG-18 / Package UG-18-S01 / Quantity 0 m wall

| ID | WBS | Activity | Type | Duration | Start | Finish | Predecessors | Free float | Constraint | Text1 | Text2 | Text3 | Text4 | Number1 |
| --- | --- | --- | --- | --- | --- | --- | --- | --- | --- | --- | --- | --- | --- | --- |
|  | UG-28A | **UG-28A** |  |  | 2026-12-01 | 2027-03-15 |  |  |  |  |  |  |  |  |
|  | UG-28A-S01 | **UG-28A-S01 / HDPE-UG28A-S01-CCT-CCT-(-0.55/-0.54)-18m / Short connection / Open cut** |  |  | 2026-12-01 | 2027-03-15 |  |  |  |  |  |  |  |  |
| UG-28A-S01-A010 |  | Release: drawings, holds, access and gates | milestone | 0d | 2026-12-01 | 2026-12-01 |  | 0d | start on or after 2026-12-01 | F8 | UG-28A | UG-28A-S01 | A010 |  |
| UG-28A-S01-A020 |  | Set-out, crossing survey and working platform |  | 1d | 2026-12-01 | 2026-12-01 | UG-28A-S01-A010 | 0d |  | F8 | UG-28A | UG-28A-S01 | A020 | 17.837375 |
| UG-28A-S01-A030 |  | Pipe-support piling from platform (incl. integrity tests) |  | 1d | 2026-12-02 | 2026-12-02 | UG-28A-S01-A020 SS+1d, UG-28A-S01-A020 FF+2d | 78d |  | F8 | UG-28A | UG-28A-S01 | A030 | 7 |
| UG-28A-S01-A060 |  | Excavate and strut to formation |  | 1d | 2027-03-06 | 2027-03-06 | UG-10-S02-A100, UG-10-S03-A100, UG-21-S01-A100, UG-22-S01-A100, UG-28-S02-A100, UG-28-S01-A060 SS, UG-28A-S01-A030 SS+1d, UG-28A-S01-A030 SF+3d, UG-28A-S01-A030 FF+2d | 0d |  | F8 | UG-28A | UG-28A-S01 | A060 | 0 |
| UG-28A-S01-A070 |  | Trim piles, blinding and piled slab (incl. cure) |  | 4d | 2027-03-06 | 2027-03-09 | UG-28A-S01-A060 SS+1d, UG-28A-S01-A060 FF+2d | 0d |  | F8 | UG-28A | UG-28A-S01 | A070 | 17.837375 |
| UG-28A-S01-A080 |  | Lay and joint pipe (incl. fittings, tie-in) |  | 7d | 2027-03-08 | 2027-03-15 | UG-28A-S01-A070 SS+2d, UG-28A-S01-A070 FF+2d | 0d |  | F8 | UG-28A | UG-28A-S01 | A080 | 17.837375 |
| UG-28A-S01-A090 |  | Surround, joint test and line test |  | 3d | 2027-03-11 | 2027-03-14 | UG-28A-S01-A080 SS+3d, UG-28A-S01-A080 FF+2d | 0d |  | F8 | UG-28A | UG-28A-S01 | A090 | 17.837375 |
| UG-28A-S01-A100 |  | Backfill to NG and remove struts |  | 1d | 2027-03-13 | 2027-03-13 | UG-28A-S01-A090 SS+2d, UG-28A-S01-A090 FF+2d, UG-28-S01-A080 |  |  | F8 | UG-28A | UG-28A-S01 | A100 | 0 |

Notes:
- UG-28A-S01-A010: Notes: Front F8 / Line UG-28A / Package UG-28A-S01 / Workbook logic: gates: START, D_DLU, structure ready
- UG-28A-S01-A020: Notes: Front F8 / Line UG-28A / Package UG-28A-S01 / Quantity 18 m / Workbook logic: FS from A010
- UG-28A-S01-A030: Notes: Front F8 / Line UG-28A / Package UG-28A-S01 / Quantity 7 piles / Workbook logic: gate: D_PILEDES
- UG-28A-S01-A060: Notes: Front F8 / Line UG-28A / Package UG-28A-S01 / Quantity 0 m3 / Workbook logic: UG-10-S02-A100 (FS, deeper first); UG-10-S03-A100 (FS, deeper first); UG-21-S01-A100 (FS, deeper first); UG-22-S01-A100 (FS, deeper first); UG-28-S02-A100 (FS, deeper first); UG-28-S01-A060 (SS, shared trench)
- UG-28A-S01-A070: Notes: Front F8 / Line UG-28A / Package UG-28A-S01 / Quantity 18 m
- UG-28A-S01-A080: Notes: Front F8 / Line UG-28A / Package UG-28A-S01 / Quantity 18 m
- UG-28A-S01-A090: Notes: Front F8 / Line UG-28A / Package UG-28A-S01 / Quantity 18 m
- UG-28A-S01-A100: Notes: Front F8 / Line UG-28A / Package UG-28A-S01 / Quantity 0 m3 / Workbook logic: UG-28-S01-A080 (FS, shared trench laid)
